| activity_code | activity_id | activity_name | activity_status | total_float |
| --- | --- | --- | --- | --- |
| CHI05-PH2-FIT-BL-D5,2,2,1 | CHI05-05-FC-F | Site Secured Finish (August 04, 2025) | Not Started | 0 |
| CHI05-PH2-FIT-BL-D5,2,2,1 | CHI05-05-NTP-S | Notice To Proceed | Not Started | 0 |
| CHI05-PH2-FIT-BL-D5,2,2,2 | CHI05-03-L1CX-S | Start L1 CX (Red Tag) for Colo 3 | Not Started | 95 |
| CHI05-PH2-FIT-BL-D5,2,2,2 | CHI05-03-ROJ-F | Complete Last ROJ Arrival for Colo 3 | Not Started | 119 |
| CHI05-PH2-FIT-BL-D5,2,2,2 | CHI05-03-L2CX-S | Start L2 CX (Yellow Tag) for Colo 3 | Not Started | 77 |
| CHI05-PH2-FIT-BL-D5,2,2,2 | CHI05-03-L1CX-F | Complete L1 Cx (All Red Tags/ROJ) for Colo 3 | Not Started | 63 |
| CHI05-PH2-FIT-BL-D5,2,2,2 | CHI05-03-L2CX-F | Complete L2 CX (Yellow Tag) for Colo 3 | Not Started | 52 |
| CHI05-PH2-FIT-BL-D5,2,2,2 | CHI05-03-POW-F | Power-ON Utility for Colo 3 | Not Started | 51 |
| CHI05-PH2-FIT-BL-D5,2,2,2 | CHI05-03-L3CX-S | Start L3 Cx (Green tag) for Colo 3 | Not Started | 56 |
| CHI05-PH2-FIT-BL-D5,2,2,2 | CHI05-03-SSC-F | Complete Phase 3 Security System Test for Colo 3 | Not Started | 17 |
| CHI05-PH2-FIT-BL-D5,2,2,2 | CHI05-03-MEQ-S | Start-up Mechanical Equipment for Colo 3 | Not Started | 72 |
| CHI05-PH2-FIT-BL-D5,2,2,2 | CHI05-03-CSA-F | Interior Finishes/CSA Complete for Colo 3 | Not Started | 56 |
| CHI05-PH2-FIT-BL-D5,2,2,2 | CHI05-03-GEN-F | Generators Ready Fuel for Colo 3 | Not Started | 109 |
| CHI05-PH2-FIT-BL-D5,2,2,2 | CHI05-03-MEP-F | MEP Rough-in Complete for Colo 3 | Not Started | 76 |
| CHI05-PH2-FIT-BL-D5,2,2,2 | CHI05-03-L3CX-F | Complete L3 CX (Green Tag) for Colo 3 | Not Started | 38 |
| CHI05-PH2-FIT-BL-D5,2,2,2 | CHI05-03-BAS-F | Complete BAS SAT for Colo 3 | Not Started | 56 |
| CHI05-PH2-FIT-BL-D5,2,2,2 | CHI05-03-EPMS-F | Complete EPMS SAT for Colo 3 | Not Started | 56 |
| CHI05-PH2-FIT-BL-D5,2,2,2 | CHI05-03-FIRE-F | Complete Fire Alarm for Colo 3 | Not Started | 56 |
| CHI05-PH2-FIT-BL-D5,2,2,2 | CHI05-03-L4CX-F | Complete L4 Cx (Blue Tag) for Colo 3 | Not Started | 17 |
| CHI05-PH2-FIT-BL-D5,2,2,2 | CHI05-03-L5CX-F | Complete L5/IST (White Tag) for Colo 3 | Not Started | 17 |
| CHI05-PH2-FIT-BL-D5,2,2,2 | CHI05-03-RNI-F | Complete Ready for Network Install (RNI) For Colo 3 | Not Started | 38 |
| CHI05-PH2-FIT-BL-D5,2,2,2 | CHI05-03-CO-F | Complete CorpNet For Colo 3 | Not Started | 48 |
| CHI05-PH2-FIT-BL-D5,2,2,3 | CHI05-05-ROJ-F | Complete Last ROJ Arrival for Colo 5 | Not Started | 119 |
| CHI05-PH2-FIT-BL-D5,2,2,3 | CHI05-05-L2CX-S | Start L2 CX (Yellow Tag) for Colo 5 | Not Started | 77 |
| CHI05-PH2-FIT-BL-D5,2,2,3 | CHI05-05-L1CX-F | Complete L1 Cx (All Red Tags/ROJ) for Colo 5 | Not Started | 49 |
| CHI05-PH2-FIT-BL-D5,2,2,3 | CHI05-05-L2CX-F | Complete L2 CX (Yellow Tag) for Colo 5 | Not Started | 39 |
| CHI05-PH2-FIT-BL-D5,2,2,3 | CHI05-05-POW-F | Power-ON Utility for Colo 5 | Not Started | 73 |
| CHI05-PH2-FIT-BL-D5,2,2,3 | CHI05-05-L3CX-S | Start L3 Cx (Green tag) for Colo 5 | Not Started | 73 |
| CHI05-PH2-FIT-BL-D5,2,2,3 | CHI05-05-MEQ-S | Start-up Mechanical Equipment for Colo 5 | Not Started | 97 |
| CHI05-PH2-FIT-BL-D5,2,2,3 | CHI05-05-CSA-F | Interior Finishes/CSA Complete for Colo 5 | Not Started | 64 |
| CHI05-PH2-FIT-BL-D5,2,2,3 | CHI05-05-GEN-F | Generators Ready Fuel for Colo 5 | Not Started | 112 |
| CHI05-PH2-FIT-BL-D5,2,2,3 | CHI05-05-MEP-F | MEP Rough-in Complete for Colo 5 | Not Started | 100 |
| CHI05-PH2-FIT-BL-D5,2,2,3 | CHI05-05-L3CX-F | Complete L3 CX (Green Tag) for Colo 5 | Not Started | 35 |
| CHI05-PH2-FIT-BL-D5,2,2,3 | CHI05-05-BAS-F | Complete BAS SAT for Colo 5 | Not Started | 57 |
| CHI05-PH2-FIT-BL-D5,2,2,3 | CHI05-05-EPMS-F | Complete EPMS SAT for Colo 5 | Not Started | 57 |
| CHI05-PH2-FIT-BL-D5,2,2,3 | CHI05-05-FIR-F | Complete Fire Alarm for Colo 5 | Not Started | 57 |
| CHI05-PH2-FIT-BL-D5,2,2,3 | CHI05-05-SSC-F | Complete Phase 3 Security System Test for Colo 5 | Not Started | 35 |
| CHI05-PH2-FIT-BL-D5,2,2,3 | CHI05-05-L4CX-F | Complete L4 Cx (Blue Tag) for Colo 5 | Not Started | 35 |
| CHI05-PH2-FIT-BL-D5,2,2,3 | CHI05-05-L5CX-F | Complete L5/IST (White Tag) for Colo 5 | Not Started | 35 |
| CHI05-PH2-FIT-BL-D5,2,2,3 | CHI05-05-L1CX-S | Start L1 CX (Red Tag) for Colo 5 | Not Started | 74 |
| CHI05-PH2-FIT-BL-D5,2,2,3 | CHI05-05-RNI-F | Complete Ready for Network Install (RNI) For Colo 5 | Not Started | 56 |
| CHI05-PH2-FIT-BL-D5,2,2,3 | CHI05-05-CO-F | Complete CorpNet For Colo 5 | Not Started | 66 |
| CHI05-PH2-FIT-BL-D5,2,2,4 | CHI05-04-ROJ-F | Complete Last ROJ Arrival for Colo 4 | Not Started | 122 |
| CHI05-PH2-FIT-BL-D5,2,2,4 | CHI05-04-L2CX-S | Start L2 CX (Yellow Tag) for Colo 4 | Not Started | 82 |
| CHI05-PH2-FIT-BL-D5,2,2,4 | CHI05-04-L1CX-F | Complete L1 Cx (All Red Tags/ROJ) for Colo 4 | Not Started | 14 |
| CHI05-PH2-FIT-BL-D5,2,2,4 | CHI05-04-L2CX-F | Complete L2 CX (Yellow Tag) for Colo 4 | Not Started | 15 |
| CHI05-PH2-FIT-BL-D5,2,2,4 | CHI05-04-POW-F | Power-ON Utility for Colo 4 | Not Started | 58 |
| CHI05-PH2-FIT-BL-D5,2,2,4 | CHI05-04-L3CX-S | Start L3 Cx (Green tag) for Colo 4 | Not Started | 28 |
| CHI05-PH2-FIT-BL-D5,2,2,4 | CHI05-04-SSC-F | Complete Phase 3 Security System Test for Colo 4 | Not Started | 0 |
| CHI05-PH2-FIT-BL-D5,2,2,4 | CHI05-04-MEQ-S | Start-up Mechanical Equipment for Colo 4 | Not Started | 22 |
| CHI05-PH2-FIT-BL-D5,2,2,4 | CHI05-04-CSA-F | Interior Finishes/CSA Complete for Colo 4 | Not Started | 35 |
| CHI05-PH2-FIT-BL-D5,2,2,4 | CHI05-04-GEN-F | Generators Ready Fuel for Colo 4 | Not Started | 113 |
| CHI05-PH2-FIT-BL-D5,2,2,4 | CHI05-04-MEP-F | MEP Rough-in Complete for Colo 4 | Not Started | 43 |
| CHI05-PH2-FIT-BL-D5,2,2,4 | CHI05-04-L3CX-F | Complete L3 CX (Green Tag) for Colo 4 | Not Started | 0 |
| CHI05-PH2-FIT-BL-D5,2,2,4 | CHI05-04-BAS-F | Complete BAS SAT for Colo 4 | Not Started | 28 |
| CHI05-PH2-FIT-BL-D5,2,2,4 | CHI05-04-EPMS-F | Complete EPMS SAT for Colo 4 | Not Started | 28 |
| CHI05-PH2-FIT-BL-D5,2,2,4 | CHI05-04-FIRE-F | Complete Fire Alarm for Colo 4 | Not Started | 28 |
| CHI05-PH2-FIT-BL-D5,2,2,4 | CHI05-04-L4CX-F | Complete L4 Cx (Blue Tag) for Colo 4 | Not Started | 0 |
| CHI05-PH2-FIT-BL-D5,2,2,4 | CHI05-04-L5CX-F | Complete L5/IST (White Tag) for Colo 4 | Not Started | 0 |
| CHI05-PH2-FIT-BL-D5,2,2,4 | CHI05-04-L1CX-S | Start L1 CX (Red Tag) for Colo 4 | Not Started | 72 |
| CHI05-PH2-FIT-BL-D5,2,2,4 | CHI05-04-RNI-F | Complete Ready for Network Install (RNI) For Colo 4 | Not Started | 21 |
| CHI05-PH2-FIT-BL-D5,2,2,4 | CHI05-04-CO-F | Complete CorpNet For Colo 4 | Not Started | 26 |
| CHI05-PH2-FIT-BL-D5,2,2,5 | CHI05-02-L1CX-S | Start L1 CX (Red Tag) for Colo 2 | Not Started | 95 |
| CHI05-PH2-FIT-BL-D5,2,2,5 | CHI05-02-ROJ-F | Complete Last ROJ Arrival for Colo 2 | Not Started | 92 |
| CHI05-PH2-FIT-BL-D5,2,2,5 | CHI05-02-L2CX-S | Start L2 CX (Yellow Tag) for Colo 2 | Not Started | 77 |
| CHI05-PH2-FIT-BL-D5,2,2,5 | CHI05-02-L1CX-F | Complete L1 Cx (All Red Tags/ROJ) for Colo 2 | Not Started | 90 |
| CHI05-PH2-FIT-BL-D5,2,2,5 | CHI05-02-L2CX-F | Complete L2 CX (Yellow Tag) for Colo 2 | Not Started | 47 |
| CHI05-PH2-FIT-BL-D5,2,2,5 | CHI05-02-POW-F | Power-ON Utility for Colo 2 | Not Started | 29 |
| CHI05-PH2-FIT-BL-D5,2,2,5 | CHI05-02-L3CX-S | Start L3 Cx (Green tag) for Colo 2 | Not Started | 73 |
| CHI05-PH2-FIT-BL-D5,2,2,5 | CHI05-02-MEQ-S | Start-up Mechanical Equipment for Colo 2 | Not Started | 96 |

| activity_code | activity_id | activity_name | activity_status | total_float |
| --- | --- | --- | --- | --- |
| CHI05-PH2-FIT-BL-D5,2,2,5 | CHI05-02-CSA-F | Interior Finishes/CSA Complete for Colo 2 | Not Started | 78 |
| CHI05-PH2-FIT-BL-D5,2,2,5 | CHI05-02-GEN-F | Generators Ready Fuel for Colo 2 | Not Started | 122 |
| CHI05-PH2-FIT-BL-D5,2,2,5 | CHI05-02-MEP-F | MEP Rough-in Complete for Colo 2 | Not Started | 94 |
| CHI05-PH2-FIT-BL-D5,2,2,5 | CHI05-02-L3CX-F | Complete L3 CX (Green Tag) for Colo 2 | Not Started | 35 |
| CHI05-PH2-FIT-BL-D5,2,2,5 | CHI05-02-BAS-F | Complete BAS SAT for Colo 2 | Not Started | 57 |
| CHI05-PH2-FIT-BL-D5,2,2,5 | CHI05-02-EPMS-F | Complete EPMS SAT for Colo 2 | Not Started | 57 |
| CHI05-PH2-FIT-BL-D5,2,2,5 | CHI05-02-FIRE-F | Complete Fire Alarm for Colo 2 | Not Started | 57 |
| CHI05-PH2-FIT-BL-D5,2,2,5 | CHI05-02-SSC-F | Complete Phase 3 Security System Test for Colo 2 | Not Started | 35 |
| CHI05-PH2-FIT-BL-D5,2,2,5 | CHI05-02-L4CX-F | Complete L4 Cx (Blue Tag) for Colo 2 | Not Started | 35 |
| CHI05-PH2-FIT-BL-D5,2,2,5 | CHI05-02-L5CX-F | Complete L5/IST (White Tag) for Colo 2 | Not Started | 35 |
| CHI05-PH2-FIT-BL-D5,2,2,5 | CHI05-02-RNI-F | Complete Ready for Network Install (RNI) For Colo 2 | Not Started | 56 |
| CHI05-PH2-FIT-BL-D5,2,2,5 | CHI05-02-CO-F | Complete CorpNet For Colo 2 | Not Started | 66 |
| CHI05-PH2-FIT-BL-D5,3,3,5,6,2 | CHI05-02-01-MG-1000 | Install Dampers and actuators at Louvers - Upper level (RED) - COLO2 Cell 1 - MG | Not Started | 0 |
| CHI05-PH2-FIT-BL-D5,3,3,5,6,2 | CHI05-02-01-MG-1010 | Install Dampers and actuators at Louvers - Lower level (OA) - COLO2 Cell 1 - MG | Not Started | 0 |
| CHI05-PH2-FIT-BL-D5,3,3,5,6,2 | CHI05-02-01-MG-1020 | Overhead MEP Installation - COLO2 Cell 1 - MG | Not Started | 48 |
| CHI05-PH2-FIT-BL-D5,3,3,5,6,2 | CHI05-02-01-MG-1030 | Deliver AHU into Mech. Gallery - COLO2 Cell 1 - MG | Not Started | 48 |
| CHI05-PH2-FIT-BL-D5,3,3,5,6,2 | CHI05-02-01-MG-1040 | Install Walls and Primer Paint - COLO2 Cell 1 - MG | Not Started | 48 |
| CHI05-PH2-FIT-BL-D5,3,3,5,6,2 | CHI05-02-01-MG-1060 | Placing the AHU - COLO2 Cell 1 - MG | Not Started | 94 |
| CHI05-PH2-FIT-BL-D5,3,3,5,6,2 | CHI05-02-01-MG-1050 | Layout Ceiling and install Pencile Rod - COLO2 Cell 1 - MG | Not Started | 98 |
| CHI05-PH2-FIT-BL-D5,3,3,5,6,2 | CHI05-02-01-MG-1070 | Piping and Electrical Termination to AHUs - COLO2 Cell 1 - MG | Not Started | 94 |
| CHI05-PH2-FIT-BL-D5,3,3,5,6,2 | CHI05-02-01-MG-1080 | Pipe Testing - COLO2 Cell 1 - MG | Not Started | 100 |
| CHI05-PH2-FIT-BL-D5,3,3,5,6,2 | CHI05-02-01-MG-1090 | Install ceiling and Light Fittings - COLO2 Cell 1 - MG | Not Started | 100 |
| CHI05-PH2-FIT-BL-D5,3,3,5,6,2 | CHI05-02-01-MG-1100 | Trim out MEP - COLO2 Cell 1 - MG | Not Started | 109 |
| CHI05-PH2-FIT-BL-D5,3,3,5,6,2 | CHI05-02-01-MG-1045 | Post Wall Overhead MEP - COLO2 Cell 1 - MG | Not Started | 94 |
| CHI05-PH2-FIT-BL-D5,3,3,5,6,1 | CHI05-02-01-DH-1050 | Cable Pulling at PDU & Busway - COLO2 Cell 1 - DH | Not Started | 42 |
| CHI05-PH2-FIT-BL-D5,3,3,5,6,1 | CHI05-02-01-DH-1000 | Overhead MEP and Hangers (Above Ceiling) - COLO2 Cell 1 - DH | Not Started | 68 |
| CHI05-PH2-FIT-BL-D5,3,3,5,6,1 | CHI05-02-01-DH-1060 | HAC install and Rise - COLO2 Cell 1 - DH | Not Started | 78 |
| CHI05-PH2-FIT-BL-D5,3,3,5,6,1 | CHI05-02-01-DH-1070 | Termination at PDU & Busway- COLO2 Cell 1 - DH | Not Started | 53 |
| CHI05-PH2-FIT-BL-D5,3,3,5,6,1 | CHI05-02-01-DH-1010 | Security Screen Installation - COLO2 Cell 1 - DH | Not Started | 48 |
| CHI05-PH2-FIT-BL-D5,3,3,5,6,1 | CHI05-02-01-DH-1020 | Ceiling Grid and Tile - COLO2 Cell 1 - DH | Not Started | 48 |
| CHI05-PH2-FIT-BL-D5,3,3,5,6,1 | CHI05-02-01-DH-1040 | Install PDU's - COLO2 Cell 1 - DH | Not Started | 48 |
| CHI05-PH2-FIT-BL-D5,3,3,5,6,1 | CHI05-02-01-DH-1030 | Overhead MEP Installation (Below Ceiling) - COLO2 Cell 1 - DH | Not Started | 48 |
| CHI05-PH2-FIT-BL-D5,3,3,5,6,1 | CHI05-02-01-DH-1080 | Install Low Voltage Wiring and Fiber Optic - COLO2 Cell 1 - DH | Not Started | 78 |
| CHI05-PH2-FIT-BL-D5,3,3,5,6,1 | CHI05-02-01-DH-1035 | HAC Placing - COLO2 Cell 1 - DH | Not Started | 78 |
| CHI05-PH2-FIT-BL-D5,3,3,5,6,1 | CHI05-02-01-DH-1090 | Finishes and Signage - COLO2 Cell 1 - DH | Not Started | 123 |
| CHI05-PH2-FIT-BL-D5,3,3,5,6,4,1 | CHI05-02-01-L1-1140 | Interior - L1 UPS - COLO2 Cell 1 | Not Started | 87 |
| CHI05-PH2-FIT-BL-D5,3,3,5,6,4,1 | CHI05-02-01-L1-1150 | Interior - L1 MSB - COLO2 Cell 1 | Not Started | 93 |
| CHI05-PH2-FIT-BL-D5,3,3,5,6,4,1 | CHI05-02-01-L1-1160 | Interior - L1 PDUs - COLO2 Cell 1 | Not Started | 97 |
| CHI05-PH2-FIT-BL-D5,3,3,5,6,4,1 | CHI05-02-01-L1-1170 | Interior - L1 AHUs - COLO2 Cell 1 | Not Started | 105 |
| CHI05-PH2-FIT-BL-D5,3,3,5,6,4,1 | CHI05-02-01-L1-1180 | Interior - L1 ATSs - COLO2 Cell 1 | Not Started | 101 |
| CHI05-PH2-FIT-BL-D5,3,3,5,6,4,1 | CHI05-02-01-L1-1190 | Interior - L1 Busway - COLO2 Cell 1 | Not Started | 101 |
| CHI05-PH2-FIT-BL-D5,3,3,5,6,4,1 | CHI05-02-01-L1-1250 | Interior - L1 ADP - COLO2 Cell 1 | Not Started | 97 |
| CHI05-PH2-FIT-BL-D5,3,3,5,6,4,2 | CHI05-02-01-L2-1260 | Interior - L2 UPS - COLO2 Cell 1 | Not Started | 52 |
| CHI05-PH2-FIT-BL-D5,3,3,5,6,4,2 | CHI05-02-01-L2-1270 | Interior - L2 MSB - COLO2 Cell 1 | Not Started | 52 |
| CHI05-PH2-FIT-BL-D5,3,3,5,6,4,2 | CHI05-02-01-L2-1280 | Interior - L2 PDUs - COLO2 Cell 1 | Not Started | 52 |
| CHI05-PH2-FIT-BL-D5,3,3,5,6,4,2 | CHI05-02-01-L2-1290 | Interior - L2 AHUs - COLO2 Cell 1 | Not Started | 52 |
| CHI05-PH2-FIT-BL-D5,3,3,5,6,4,2 | CHI05-02-01-L2-1300 | Interior - L2 ATSs - COLO2 Cell 1 | Not Started | 52 |
| CHI05-PH2-FIT-BL-D5,3,3,5,6,4,2 | CHI05-02-01-L2-1310 | Interior - L2 Busway - COLO2 Cell 1 | Not Started | 52 |
| CHI05-PH2-FIT-BL-D5,3,3,5,6,4,2 | CHI05-02-01-L2-1370 | Interior - L2 ADP - COLO2 Cell 1 | Not Started | 52 |
| CHI05-PH2-FIT-BL-D5,3,3,5,6,4,3 | CHI05-02-01-L3-1380 | Interior - L3 UPS - COLO2 Cell 1 | Not Started | 37 |
| CHI05-PH2-FIT-BL-D5,3,3,5,6,4,3 | CHI05-02-01-L3-1390 | Interior - L3 MSB - COLO2 Cell 1 | Not Started | 37 |
| CHI05-PH2-FIT-BL-D5,3,3,5,6,4,3 | CHI05-02-01-L3-1400 | Interior - L3 PDUs - COLO2 Cell 1 | Not Started | 42 |
| CHI05-PH2-FIT-BL-D5,3,3,5,6,4,3 | CHI05-02-01-L3-1410 | Interior - L3 AHUs - COLO2 Cell 1 | Not Started | 37 |
| CHI05-PH2-FIT-BL-D5,3,3,5,6,4,3 | CHI05-02-01-L3-1420 | Interior - L3 ATSs - COLO2 Cell 1 | Not Started | 37 |
| CHI05-PH2-FIT-BL-D5,3,3,5,6,4,3 | CHI05-02-01-L3-1430 | Interior - L3 Busway - COLO2 Cell 1 | Not Started | 42 |
| CHI05-PH2-FIT-BL-D5,3,3,5,6,4,3 | CHI05-02-01-L3-1490 | Interior - L3 ADP - COLO2 Cell 1 | Not Started | 37 |
| CHI05-PH2-FIT-BL-D5,3,3,5,6,5 | CHI05-02-01-ER-1000 | Install Walls and Primer Paint - COLO2 Cell 1 - ER | Not Started | 46 |
| CHI05-PH2-FIT-BL-D5,3,3,5,6,5 | CHI05-02-01-ER-1020 | Sprinklers and Overhead MEP (Above Ceiling) - COLO2 Cell 1 - ER | Not Started | 46 |
| CHI05-PH2-FIT-BL-D5,3,3,5,6,5 | CHI05-02-01-ER-1010 | Install Upper Screens - COLO2 Cell 1 - ER | Not Started | 46 |
| CHI05-PH2-FIT-BL-D5,3,3,5,6,5 | CHI05-02-01-ER-1030 | Install Ceiling - COLO2 Cell 1 - ER | Not Started | 46 |
| CHI05-PH2-FIT-BL-D5,3,3,5,6,5 | CHI05-02-01-ER-1040 | Below Ceiling MEP Rough In - COLO2 Cell 1 - ER | Not Started | 40 |
| CHI05-PH2-FIT-BL-D5,3,3,5,6,5 | CHI05-02-01-ER-1050 | Installation of ADP & ATS - COLO2 Cell 1 - ER | Not Started | 94 |
| CHI05-PH2-FIT-BL-D5,3,3,5,6,5 | CHI05-02-01-ER-1070 | Installation of UPS Equipment - COLO2 Cell 1 - ER | Not Started | 55 |
| CHI05-PH2-FIT-BL-D5,3,3,5,6,5 | CHI05-02-01-ER-1060 | Connet to Cable tray and conduit equipment - COLO2 Cell 1 - ER | Not Started | 104 |
| CHI05-PH2-FIT-BL-D5,3,3,5,6,5 | CHI05-02-01-ER-1080 | Cable Pulling at Elec. Equipment - COLO2 Cell 1 - ER | Not Started | 98 |
| CHI05-PH2-FIT-BL-D5,3,3,5,6,5 | CHI05-02-01-ER-1090 | Door Frame Installation - COLO2 Cell 1 - ER | Not Started | 67 |
| CHI05-PH2-FIT-BL-D5,3,3,5,6,5 | CHI05-02-01-ER-1100 | Finishes and Signage - COLO2 Cell 1 - ER | Not Started | 125 |
| CHI05-PH2-FIT-BL-D5,3,3,5,6,5 | CHI05-02-01-ER-1055 | Installation of MSB - COLO2 Cell 1 - ER | Not Started | 94 |
| CHI05-PH2-FIT-BL-D5,3,3,5,5,1 | CHI05-02-04-L4-1000 | COLO2 Cx LEV4 - COLO2 | Not Started | 35 |
| CHI05-PH2-FIT-BL-D5,3,3,5,5,2 | CHI05-02-04-L5-1000 | COLO2 Cx LEV5 / IST - COLO2 | Not Started | 35 |

| activity_code | activity_id | activity_name | activity_status | total_float |
| --- | --- | --- | --- | --- |
| CHI05-PH2-FIT-BL-D5,3,3,5,1,2 | CHI05-02-02-MG-1110 | Install Dampers and actuators at Louvers - Upper level (RED) - COLO2 Cell 2 - MG | Not Started | 0 |
| CHI05-PH2-FIT-BL-D5,3,3,5,1,2 | CHI05-02-02-MG-1120 | Install Dampers and actuators at Louvers - Lower level (OA) - COLO2 Cell 2 - MG | Not Started | 0 |
| CHI05-PH2-FIT-BL-D5,3,3,5,1,2 | CHI05-02-02-MG-1130 | Overhead MEP Installation - COLO2 Cell 2 - MG | Not Started | 53 |
| CHI05-PH2-FIT-BL-D5,3,3,5,1,2 | CHI05-02-02-MG-1140 | Deliver AHU into Mech. Gallery - COLO2 Cell 2 - MG | Not Started | 53 |
| CHI05-PH2-FIT-BL-D5,3,3,5,1,2 | CHI05-02-02-MG-1150 | Install Walls and Primer Paint - COLO2 Cell 2 - MG | Not Started | 53 |
| CHI05-PH2-FIT-BL-D5,3,3,5,1,2 | CHI05-02-02-MG-1160 | Placing the AHU - COLO2 Cell 2 - MG | Not Started | 94 |
| CHI05-PH2-FIT-BL-D5,3,3,5,1,2 | CHI05-02-02-MG-1170 | Layout Ceiling and install Pencile Rod - COLO2 Cell 2 - MG | Not Started | 98 |
| CHI05-PH2-FIT-BL-D5,3,3,5,1,2 | CHI05-02-02-MG-1180 | Piping and Electrical Termination to AHUs - COLO2 Cell 2 - MG | Not Started | 94 |
| CHI05-PH2-FIT-BL-D5,3,3,5,1,2 | CHI05-02-02-MG-1190 | Pipe Testing - COLO2 Cell 2 - MG | Not Started | 98 |
| CHI05-PH2-FIT-BL-D5,3,3,5,1,2 | CHI05-02-02-MG-1200 | Install ceiling and Light Fittings - COLO2 Cell 2 - MG | Not Started | 98 |
| CHI05-PH2-FIT-BL-D5,3,3,5,1,2 | CHI05-02-02-MG-1210 | Trim out MEP - COLO2 Cell 2 - MG | Not Started | 104 |
| CHI05-PH2-FIT-BL-D5,3,3,5,1,2 | CHI05-02-02-MG-1155 | Post Wall Overhead MEP - COLO2 Cell 2 - MG | Not Started | 94 |
| CHI05-PH2-FIT-BL-D5,3,3,5,1,5 | CHI05-02-02-ER-1110 | Install Walls and Primer Paint - COLO2 Cell 2 - ER | Not Started | 46 |
| CHI05-PH2-FIT-BL-D5,3,3,5,1,5 | CHI05-02-02-ER-1120 | Sprinklers and Overhead MEP (Above Ceiling) - COLO2 Cell 2 - ER | Not Started | 46 |
| CHI05-PH2-FIT-BL-D5,3,3,5,1,5 | CHI05-02-02-ER-1130 | Install Upper Screens - COLO2 Cell 2 - ER | Not Started | 46 |
| CHI05-PH2-FIT-BL-D5,3,3,5,1,5 | CHI05-02-02-ER-1140 | Install Ceiling - COLO2 Cell 2 - ER | Not Started | 46 |
| CHI05-PH2-FIT-BL-D5,3,3,5,1,5 | CHI05-02-02-ER-1150 | Below Ceiling MEP Rough In - COLO2 Cell 2 - ER | Not Started | 40 |
| CHI05-PH2-FIT-BL-D5,3,3,5,1,5 | CHI05-02-02-ER-1160 | Installation of ADP & ATS - COLO2 Cell 2 - ER | Not Started | 99 |
| CHI05-PH2-FIT-BL-D5,3,3,5,1,5 | CHI05-02-02-ER-1170 | Installation of UPS Equipment - COLO2 Cell 2 - ER | Not Started | 55 |
| CHI05-PH2-FIT-BL-D5,3,3,5,1,5 | CHI05-02-02-ER-1180 | Connet to Cable tray and conduit equipment - COLO2 Cell 2 - ER | Not Started | 114 |
| CHI05-PH2-FIT-BL-D5,3,3,5,1,5 | CHI05-02-02-ER-1190 | Cable Pulling at Elec. Equipment - COLO2 Cell 2 - ER | Not Started | 98 |
| CHI05-PH2-FIT-BL-D5,3,3,5,1,5 | CHI05-02-02-ER-1200 | Door Frame Installation - COLO2 Cell 2 - ER | Not Started | 67 |
| CHI05-PH2-FIT-BL-D5,3,3,5,1,5 | CHI05-02-02-ER-1210 | Finishes and Signage - COLO2 Cell 2 - ER | Not Started | 118 |
| CHI05-PH2-FIT-BL-D5,3,3,5,1,5 | CHI05-02-02-ER-1165 | Installation of MSB - COLO2 Cell 2 - ER | Not Started | 94 |
| CHI05-PH2-FIT-BL-D5,3,3,5,1,1 | CHI05-02-02-DH-1100 | Termination at PDU & Busway - COLO2 Cell 2 - DH | Not Started | 42 |
| CHI05-PH2-FIT-BL-D5,3,3,5,1,1 | CHI05-02-02-DH-1110 | Overhead MEP and Hangers (Above Ceiling) - COLO2 Cell 2 - DH | Not Started | 71 |
| CHI05-PH2-FIT-BL-D5,3,3,5,1,1 | CHI05-02-02-DH-1120 | HAC install and Rise - COLO2 Cell 2 - DH | Not Started | 78 |
| CHI05-PH2-FIT-BL-D5,3,3,5,1,1 | CHI05-02-02-DH-1130 | Cable Pulling at PDU & Busway- COLO2 Cell 2 - DH | Not Started | 58 |
| CHI05-PH2-FIT-BL-D5,3,3,5,1,1 | CHI05-02-02-DH-1140 | Security Screen Installation - COLO2 Cell 2 - DH | Not Started | 53 |
| CHI05-PH2-FIT-BL-D5,3,3,5,1,1 | CHI05-02-02-DH-1150 | Ceiling Grid and Tile - COLO2 Cell 2 - DH | Not Started | 53 |
| CHI05-PH2-FIT-BL-D5,3,3,5,1,1 | CHI05-02-02-DH-1160 | Install PDU's - COLO2 Cell 2 - DH | Not Started | 53 |
| CHI05-PH2-FIT-BL-D5,3,3,5,1,1 | CHI05-02-02-DH-1170 | Overhead MEP Installation (Below Ceiling) - COLO2 Cell 2 - DH | Not Started | 53 |
| CHI05-PH2-FIT-BL-D5,3,3,5,1,1 | CHI05-02-02-DH-1180 | Install Low Voltage Wiring and Fiber Optic - COLO2 Cell 2 - DH | Not Started | 78 |
| CHI05-PH2-FIT-BL-D5,3,3,5,1,1 | CHI05-02-02-DH-1190 | HAC Placing - COLO2 Cell 2 - DH | Not Started | 78 |
| CHI05-PH2-FIT-BL-D5,3,3,5,1,1 | CHI05-02-02-DH-1200 | Finishes and Signage - COLO2 Cell 2 - DH | Not Started | 113 |
| CHI05-PH2-FIT-BL-D5,3,3,5,1,4,1 | CHI05-02-02-L1-1260 | Interior - L1 UPS - COLO2 Cell 2 | Not Started | 87 |
| CHI05-PH2-FIT-BL-D5,3,3,5,1,4,1 | CHI05-02-02-L1-1270 | Interior - L1 MSB - COLO2 Cell 2 | Not Started | 93 |
| CHI05-PH2-FIT-BL-D5,3,3,5,1,4,1 | CHI05-02-02-L1-1280 | Interior - L1 PDUs - COLO2 Cell 2 | Not Started | 97 |
| CHI05-PH2-FIT-BL-D5,3,3,5,1,4,1 | CHI05-02-02-L1-1290 | Interior - L1 AHUs - COLO2 Cell 2 | Not Started | 105 |
| CHI05-PH2-FIT-BL-D5,3,3,5,1,4,1 | CHI05-02-02-L1-1300 | Interior - L1 ATSs - COLO2 Cell 2 | Not Started | 101 |
| CHI05-PH2-FIT-BL-D5,3,3,5,1,4,1 | CHI05-02-02-L1-1310 | Interior - L1 Busway - COLO2 Cell 2 | Not Started | 101 |
| CHI05-PH2-FIT-BL-D5,3,3,5,1,4,1 | CHI05-02-02-L1-1370 | Interior - L1 ADP - COLO2 Cell 2 | Not Started | 97 |
| CHI05-PH2-FIT-BL-D5,3,3,5,1,4,2 | CHI05-02-02-L2-1380 | Interior - L2 UPS - COLO2 Cell 2 | Not Started | 52 |
| CHI05-PH2-FIT-BL-D5,3,3,5,1,4,2 | CHI05-02-02-L2-1390 | Interior - L2 MSB - COLO2 Cell 2 | Not Started | 52 |
| CHI05-PH2-FIT-BL-D5,3,3,5,1,4,2 | CHI05-02-02-L2-1400 | Interior - L2 PDUs - COLO2 Cell 2 | Not Started | 52 |
| CHI05-PH2-FIT-BL-D5,3,3,5,1,4,2 | CHI05-02-02-L2-1410 | Interior - L2 AHUs - COLO2 Cell 2 | Not Started | 52 |
| CHI05-PH2-FIT-BL-D5,3,3,5,1,4,2 | CHI05-02-02-L2-1420 | Interior - L2 ATSs - COLO2 Cell 2 | Not Started | 52 |
| CHI05-PH2-FIT-BL-D5,3,3,5,1,4,2 | CHI05-02-02-L2-1430 | Interior - L2 Busway - COLO2 Cell 2 | Not Started | 52 |
| CHI05-PH2-FIT-BL-D5,3,3,5,1,4,2 | CHI05-02-02-L2-1490 | Interior - L2 ADP - COLO2 Cell 2 | Not Started | 52 |
| CHI05-PH2-FIT-BL-D5,3,3,5,1,4,3 | CHI05-02-02-L3-1500 | Interior - L3 UPS - COLO2 Cell 2 | Not Started | 37 |
| CHI05-PH2-FIT-BL-D5,3,3,5,1,4,3 | CHI05-02-02-L3-1510 | Interior - L3 MSB - COLO2 Cell 2 | Not Started | 37 |
| CHI05-PH2-FIT-BL-D5,3,3,5,1,4,3 | CHI05-02-02-L3-1520 | Interior - L3 PDUs - COLO2 Cell 2 | Not Started | 37 |
| CHI05-PH2-FIT-BL-D5,3,3,5,1,4,3 | CHI05-02-02-L3-1530 | Interior - L3 AHUs - COLO2 Cell 2 | Not Started | 37 |
| CHI05-PH2-FIT-BL-D5,3,3,5,1,4,3 | CHI05-02-02-L3-1540 | Interior - L3 ATSs - COLO2 Cell 2 | Not Started | 42 |
| CHI05-PH2-FIT-BL-D5,3,3,5,1,4,3 | CHI05-02-02-L3-1550 | Interior - L3 Busway - COLO2 Cell 2 | Not Started | 37 |
| CHI05-PH2-FIT-BL-D5,3,3,5,1,4,3 | CHI05-02-02-L3-1610 | Interior - L3 ADP - COLO2 Cell 2 | Not Started | 42 |
| CHI05-PH2-FIT-BL-D5,3,3,5,3,2 | CHI05-02-03-MG-1220 | Install Dampers and actuators at Louvers - Upper level (RED) - COLO2 Cell 3 - MG | Not Started | 0 |
| CHI05-PH2-FIT-BL-D5,3,3,5,3,2 | CHI05-02-03-MG-1230 | Install Dampers and actuators at Louvers - Lower level (OA) - COLO2 Cell 3 - MG | Not Started | 0 |
| CHI05-PH2-FIT-BL-D5,3,3,5,3,2 | CHI05-02-03-MG-1240 | Overhead MEP Installation - COLO2 Cell 3 - MG | Not Started | 58 |
| CHI05-PH2-FIT-BL-D5,3,3,5,3,2 | CHI05-02-03-MG-1250 | Deliver AHU into Mech. Gallery - COLO2 Cell 3 - MG | Not Started | 58 |
| CHI05-PH2-FIT-BL-D5,3,3,5,3,2 | CHI05-02-03-MG-1260 | Install Walls and Primer Paint - COLO2 Cell 3 - MG | Not Started | 58 |
| CHI05-PH2-FIT-BL-D5,3,3,5,3,2 | CHI05-02-03-MG-1270 | Placing the AHU - COLO2 Cell 3 - MG | Not Started | 94 |
| CHI05-PH2-FIT-BL-D5,3,3,5,3,2 | CHI05-02-03-MG-1280 | Layout Ceiling and install Pencile Rod - COLO2 Cell 3 - MG | Not Started | 98 |
| CHI05-PH2-FIT-BL-D5,3,3,5,3,2 | CHI05-02-03-MG-1290 | Piping and Electrical Termination to AHUs - COLO2 Cell 3 - MG | Not Started | 94 |
| CHI05-PH2-FIT-BL-D5,3,3,5,3,2 | CHI05-02-03-MG-1300 | Pipe Testing - COLO2 Cell 3 - MG | Not Started | 96 |
| CHI05-PH2-FIT-BL-D5,3,3,5,3,2 | CHI05-02-03-MG-1310 | Install ceiling and Light Fittings - COLO2 Cell 3 - MG | Not Started | 96 |
| CHI05-PH2-FIT-BL-D5,3,3,5,3,2 | CHI05-02-03-MG-1320 | Trim out MEP - COLO2 Cell 3 - MG | Not Started | 99 |
| CHI05-PH2-FIT-BL-D5,3,3,5,3,2 | CHI05-02-03-MG-1265 | Post Wall Overhead MEP - COLO2 Cell 3 - MG | Not Started | 94 |
| CHI05-PH2-FIT-BL-D5,3,3,5,3,5 | CHI05-02-03-ER-1220 | Install Walls and Primer Paint - COLO2 Cell 3 - ER | Not Started | 46 |
| CHI05-PH2-FIT-BL-D5,3,3,5,3,5 | CHI05-02-03-ER-1230 | Sprinklers and Overhead MEP (Above Ceiling) - COLO2 Cell 3 - ER | Not Started | 46 |

| activity_code | activity_id | activity_name | activity_status | total_float |
| --- | --- | --- | --- | --- |
| CHI05-PH2-FIT-BL-D5,3,3,5,3,5 | CHI05-02-03-ER-1240 | Install Upper Screens - COLO2 Cell 3 - ER | Not Started | 46 |
| CHI05-PH2-FIT-BL-D5,3,3,5,3,5 | CHI05-02-03-ER-1250 | Install Ceiling - COLO2 Cell 3 - ER | Not Started | 46 |
| CHI05-PH2-FIT-BL-D5,3,3,5,3,5 | CHI05-02-03-ER-1260 | Below Ceiling MEP Rough In - COLO2 Cell 3 - ER | Not Started | 40 |
| CHI05-PH2-FIT-BL-D5,3,3,5,3,5 | CHI05-02-03-ER-1270 | Installation of ADP & ATS - COLO2 Cell 3 - ER | Not Started | 94 |
| CHI05-PH2-FIT-BL-D5,3,3,5,3,5 | CHI05-02-03-ER-1280 | Installation of UPS Equipment - COLO2 Cell 3 - ER | Not Started | 45 |
| CHI05-PH2-FIT-BL-D5,3,3,5,3,5 | CHI05-02-03-ER-1290 | Connet to Cable tray and conduit equipment - COLO2 Cell 3 - ER | Not Started | 119 |
| CHI05-PH2-FIT-BL-D5,3,3,5,3,5 | CHI05-02-03-ER-1300 | Cable Pulling at Elec. Equipment - COLO2 Cell 3 - ER | Not Started | 98 |
| CHI05-PH2-FIT-BL-D5,3,3,5,3,5 | CHI05-02-03-ER-1310 | Door Frame Installation - COLO2 Cell 3 - ER | Not Started | 62 |
| CHI05-PH2-FIT-BL-D5,3,3,5,3,5 | CHI05-02-03-ER-1320 | Finishes and Signage - COLO2 Cell 3 - ER | Not Started | 108 |
| CHI05-PH2-FIT-BL-D5,3,3,5,3,5 | CHI05-02-03-ER-1275 | Installation of MSB - COLO2 Cell 3 - ER | Not Started | 89 |
| CHI05-PH2-FIT-BL-D5,3,3,5,3,1 | CHI05-02-03-DH-1210 | Termination at PDU & Busway - COLO2 Cell 3 - DH | Not Started | 42 |
| CHI05-PH2-FIT-BL-D5,3,3,5,3,1 | CHI05-02-03-DH-1220 | Overhead MEP and Hangers (Above Ceiling) - COLO2 Cell 3 - DH | Not Started | 74 |
| CHI05-PH2-FIT-BL-D5,3,3,5,3,1 | CHI05-02-03-DH-1230 | HAC install and Rise - COLO2 Cell 3 - DH | Not Started | 78 |
| CHI05-PH2-FIT-BL-D5,3,3,5,3,1 | CHI05-02-03-DH-1240 | Cable Pulling at PDU & Busway- COLO2 Cell 3 - DH | Not Started | 63 |
| CHI05-PH2-FIT-BL-D5,3,3,5,3,1 | CHI05-02-03-DH-1250 | Security Screen Installation - COLO2 Cell 3 - DH | Not Started | 58 |
| CHI05-PH2-FIT-BL-D5,3,3,5,3,1 | CHI05-02-03-DH-1260 | Ceiling Grid and Tile - COLO2 Cell 3 - DH | Not Started | 58 |
| CHI05-PH2-FIT-BL-D5,3,3,5,3,1 | CHI05-02-03-DH-1270 | Install PDU's - COLO2 Cell 3 - DH | Not Started | 58 |
| CHI05-PH2-FIT-BL-D5,3,3,5,3,1 | CHI05-02-03-DH-1280 | Overhead MEP Installation (Below Ceiling) - COLO2 Cell 3 - DH | Not Started | 58 |
| CHI05-PH2-FIT-BL-D5,3,3,5,3,1 | CHI05-02-03-DH-1290 | Install Low Voltage Wiring and Fiber Optic - COLO2 Cell 3 - DH | Not Started | 78 |
| CHI05-PH2-FIT-BL-D5,3,3,5,3,1 | CHI05-02-03-DH-1300 | HAC Placing - COLO2 Cell 3 - DH | Not Started | 78 |
| CHI05-PH2-FIT-BL-D5,3,3,5,3,1 | CHI05-02-03-DH-1310 | Finishes and Signage - COLO2 Cell 3 - DH | Not Started | 103 |
| CHI05-PH2-FIT-BL-D5,3,3,5,3,4,1 | CHI05-02-03-L1-1380 | Interior - L1 UPS - COLO2 Cell 3 | Not Started | 87 |
| CHI05-PH2-FIT-BL-D5,3,3,5,3,4,1 | CHI05-02-03-L1-1390 | Interior - L1 MSB - COLO2 Cell 3 | Not Started | 93 |
| CHI05-PH2-FIT-BL-D5,3,3,5,3,4,1 | CHI05-02-03-L1-1400 | Interior - L1 PDUs - COLO2 Cell 3 | Not Started | 87 |
| CHI05-PH2-FIT-BL-D5,3,3,5,3,4,1 | CHI05-02-03-L1-1410 | Interior - L1 AHUs - COLO2 Cell 3 | Not Started | 95 |
| CHI05-PH2-FIT-BL-D5,3,3,5,3,4,1 | CHI05-02-03-L1-1420 | Interior - L1 ATSs - COLO2 Cell 3 | Not Started | 101 |
| CHI05-PH2-FIT-BL-D5,3,3,5,3,4,1 | CHI05-02-03-L1-1430 | Interior - L1 Busway - COLO2 Cell 3 | Not Started | 91 |
| CHI05-PH2-FIT-BL-D5,3,3,5,3,4,1 | CHI05-02-03-L1-1490 | Interior - L1 ADP - COLO2 Cell 3 | Not Started | 97 |
| CHI05-PH2-FIT-BL-D5,3,3,5,3,4,2 | CHI05-02-03-L2-1500 | Interior - L2 UPS - COLO2 Cell 3 | Not Started | 52 |
| CHI05-PH2-FIT-BL-D5,3,3,5,3,4,2 | CHI05-02-03-L2-1510 | Interior - L2 MSB - COLO2 Cell 3 | Not Started | 52 |
| CHI05-PH2-FIT-BL-D5,3,3,5,3,4,2 | CHI05-02-03-L2-1520 | Interior - L2 PDUs - COLO2 Cell 3 | Not Started | 52 |
| CHI05-PH2-FIT-BL-D5,3,3,5,3,4,2 | CHI05-02-03-L2-1530 | Interior - L2 AHUs - COLO2 Cell 3 | Not Started | 52 |
| CHI05-PH2-FIT-BL-D5,3,3,5,3,4,2 | CHI05-02-03-L2-1540 | Interior - L2 ATSs - COLO2 Cell 3 | Not Started | 52 |
| CHI05-PH2-FIT-BL-D5,3,3,5,3,4,2 | CHI05-02-03-L2-1550 | Interior - L2 Busway - COLO2 Cell 3 | Not Started | 52 |
| CHI05-PH2-FIT-BL-D5,3,3,5,3,4,2 | CHI05-02-03-L2-1610 | Interior - L2 ADP - COLO2 Cell 3 | Not Started | 52 |
| CHI05-PH2-FIT-BL-D5,3,3,5,3,4,3 | CHI05-02-03-L3-1620 | Interior - L3 UPS - COLO2 Cell 3 | Not Started | 37 |
| CHI05-PH2-FIT-BL-D5,3,3,5,3,4,3 | CHI05-02-03-L3-1630 | Interior - L3 MSB - COLO2 Cell 3 | Not Started | 37 |
| CHI05-PH2-FIT-BL-D5,3,3,5,3,4,3 | CHI05-02-03-L3-1640 | Interior - L3 PDUs - COLO2 Cell 3 | Not Started | 37 |
| CHI05-PH2-FIT-BL-D5,3,3,5,3,4,3 | CHI05-02-03-L3-1650 | Interior - L3 AHUs - COLO2 Cell 3 | Not Started | 37 |
| CHI05-PH2-FIT-BL-D5,3,3,5,3,4,3 | CHI05-02-03-L3-1660 | Interior - L3 ATSs - COLO2 Cell 3 | Not Started | 37 |
| CHI05-PH2-FIT-BL-D5,3,3,5,3,4,3 | CHI05-02-03-L3-1670 | Interior - L3 Busway - COLO2 Cell 3 | Not Started | 37 |
| CHI05-PH2-FIT-BL-D5,3,3,5,3,4,3 | CHI05-02-03-L3-1730 | Interior - L3 ADP - COLO2 Cell 3 | Not Started | 37 |
| CHI05-PH2-FIT-BL-D5,3,3,5,2,2 | CHI05-02-04-MG-1330 | Install Dampers and actuators at Louvers - Upper level (RED) - COLO2 Cell 4 - MG | Not Started | 0 |
| CHI05-PH2-FIT-BL-D5,3,3,5,2,2 | CHI05-02-04-MG-1340 | Install Dampers and actuators at Louvers - Lower level (OA) - COLO2 Cell 4 - MG | Not Started | 0 |
| CHI05-PH2-FIT-BL-D5,3,3,5,2,2 | CHI05-02-04-MG-1350 | Overhead MEP Installation - COLO2 Cell 4 - MG | Not Started | 63 |
| CHI05-PH2-FIT-BL-D5,3,3,5,2,2 | CHI05-02-04-MG-1360 | Deliver AHU into Mech. Gallery - COLO2 Cell 4 - MG | Not Started | 63 |
| CHI05-PH2-FIT-BL-D5,3,3,5,2,2 | CHI05-02-04-MG-1370 | Install Walls and Primer Paint - COLO2 Cell 4 - MG | Not Started | 63 |
| CHI05-PH2-FIT-BL-D5,3,3,5,2,2 | CHI05-02-04-MG-1380 | Placing the AHU - COLO2 Cell 4 - MG | Not Started | 94 |
| CHI05-PH2-FIT-BL-D5,3,3,5,2,2 | CHI05-02-04-MG-1390 | Layout Ceiling and install Pencile Rod - COLO2 Cell 4 - MG | Not Started | 98 |
| CHI05-PH2-FIT-BL-D5,3,3,5,2,2 | CHI05-02-04-MG-1400 | Piping and Electrical Termination to AHUs - COLO2 Cell 4 - MG | Not Started | 94 |
| CHI05-PH2-FIT-BL-D5,3,3,5,2,2 | CHI05-02-04-MG-1410 | Pipe Testing - COLO2 Cell 4 - MG | Not Started | 94 |
| CHI05-PH2-FIT-BL-D5,3,3,5,2,2 | CHI05-02-04-MG-1420 | Install ceiling and Light Fittings - COLO2 Cell 4 - MG | Not Started | 94 |
| CHI05-PH2-FIT-BL-D5,3,3,5,2,2 | CHI05-02-04-MG-1430 | Trim out MEP - COLO2 Cell 4 - MG | Not Started | 94 |
| CHI05-PH2-FIT-BL-D5,3,3,5,2,2 | CHI05-02-04-MG-1375 | Post Wall Overhead MEP - COLO2 Cell 4 - MG | Not Started | 94 |
| CHI05-PH2-FIT-BL-D5,3,3,5,2,5 | CHI05-02-04-ER-1330 | Install Walls and Primer Paint - COLO2 Cell 4 - ER | Not Started | 46 |
| CHI05-PH2-FIT-BL-D5,3,3,5,2,5 | CHI05-02-04-ER-1340 | Sprinklers and Overhead MEP (Above Ceiling) - COLO2 Cell 4 - ER | Not Started | 46 |
| CHI05-PH2-FIT-BL-D5,3,3,5,2,5 | CHI05-02-04-ER-1350 | Install Upper Screens - COLO2 Cell 4 - ER | Not Started | 46 |
| CHI05-PH2-FIT-BL-D5,3,3,5,2,5 | CHI05-02-04-ER-1360 | Install Ceiling - COLO2 Cell 4 - ER | Not Started | 46 |
| CHI05-PH2-FIT-BL-D5,3,3,5,2,5 | CHI05-02-04-ER-1370 | Below Ceiling MEP Rough In - COLO2 Cell 4 - ER | Not Started | 40 |
| CHI05-PH2-FIT-BL-D5,3,3,5,2,5 | CHI05-02-04-ER-1380 | Installation of ADP & ATS - COLO2 Cell 4 - ER | Not Started | 89 |
| CHI05-PH2-FIT-BL-D5,3,3,5,2,5 | CHI05-02-04-ER-1390 | Installation of UPS Equipment - COLO2 Cell 4 - ER | Not Started | 40 |
| CHI05-PH2-FIT-BL-D5,3,3,5,2,5 | CHI05-02-04-ER-1400 | Connet to Cable tray and conduit equipment - COLO2 Cell 4 - ER | Not Started | 124 |
| CHI05-PH2-FIT-BL-D5,3,3,5,2,5 | CHI05-02-04-ER-1410 | Cable Pulling at Elec. Equipment - COLO2 Cell 4 - ER | Not Started | 98 |
| CHI05-PH2-FIT-BL-D5,3,3,5,2,5 | CHI05-02-04-ER-1420 | Door Frame Installation - COLO2 Cell 4 - ER | Not Started | 52 |
| CHI05-PH2-FIT-BL-D5,3,3,5,2,5 | CHI05-02-04-ER-1430 | Finishes and Signage - COLO2 Cell 4 - ER | Not Started | 98 |
| CHI05-PH2-FIT-BL-D5,3,3,5,2,5 | CHI05-02-04-ER-1385 | Installation of MSB - COLO2 Cell 4 - ER | Not Started | 84 |
| CHI05-PH2-FIT-BL-D5,3,3,5,2,1 | CHI05-02-04-DH-1320 | Termination at PDU & Busway - COLO2 Cell 4 - DH | Not Started | 42 |
| CHI05-PH2-FIT-BL-D5,3,3,5,2,1 | CHI05-02-04-DH-1330 | Overhead MEP and Hangers (Above Ceiling) - COLO2 Cell 4 - DH | Not Started | 77 |
| CHI05-PH2-FIT-BL-D5,3,3,5,2,1 | CHI05-02-04-DH-1340 | HAC install and Rise - COLO2 Cell 4 - DH | Not Started | 78 |
| CHI05-PH2-FIT-BL-D5,3,3,5,2,1 | CHI05-02-04-DH-1350 | Cable Pulling at PDU & Busway- COLO2 Cell 4 - DH | Not Started | 68 |

| activity_code | activity_id | activity_name | activity_status | total_float |
| --- | --- | --- | --- | --- |
| CHI05-PH2-FIT-BL-D5,3,3,5,2,1 | CHI05-02-04-DH-1360 | Security Screen Installation - COLO2 Cell 4 - DH | Not Started | 63 |
| CHI05-PH2-FIT-BL-D5,3,3,5,2,1 | CHI05-02-04-DH-1370 | Ceiling Grid and Tile - COLO2 Cell 4 - DH | Not Started | 63 |
| CHI05-PH2-FIT-BL-D5,3,3,5,2,1 | CHI05-02-04-DH-1380 | Install PDU's - COLO2 Cell 4 - DH | Not Started | 63 |
| CHI05-PH2-FIT-BL-D5,3,3,5,2,1 | CHI05-02-04-DH-1390 | Overhead MEP Installation (Below Ceiling) - COLO2 Cell 4 - DH | Not Started | 63 |
| CHI05-PH2-FIT-BL-D5,3,3,5,2,1 | CHI05-02-04-DH-1400 | Install Low Voltage Wiring and Fiber Optic - COLO2 Cell 4 - DH | Not Started | 78 |
| CHI05-PH2-FIT-BL-D5,3,3,5,2,1 | CHI05-02-04-DH-1410 | HAC Placing - COLO2 Cell 4 - DH | Not Started | 78 |
| CHI05-PH2-FIT-BL-D5,3,3,5,2,1 | CHI05-02-04-DH-1420 | Finishes and Signage - COLO2 Cell 4 - DH | Not Started | 88 |
| CHI05-PH2-FIT-BL-D5,3,3,5,2,4,1 | CHI05-02-04-L1-1500 | Interior - L1 UPS - COLO2 Cell 4 | Not Started | 71 |
| CHI05-PH2-FIT-BL-D5,3,3,5,2,4,1 | CHI05-02-04-L1-1510 | Interior - L1 MSB - COLO2 Cell 4 | Not Started | 75 |
| CHI05-PH2-FIT-BL-D5,3,3,5,2,4,1 | CHI05-02-04-L1-1520 | Interior - L1 PDUs - COLO2 Cell 4 | Not Started | 77 |
| CHI05-PH2-FIT-BL-D5,3,3,5,2,4,1 | CHI05-02-04-L1-1530 | Interior - L1 AHUs - COLO2 Cell 4 | Not Started | 85 |
| CHI05-PH2-FIT-BL-D5,3,3,5,2,4,1 | CHI05-02-04-L1-1540 | Interior - L1 ATSs - COLO2 Cell 4 | Not Started | 83 |
| CHI05-PH2-FIT-BL-D5,3,3,5,2,4,1 | CHI05-02-04-L1-1550 | Interior - L1 Busway - COLO2 Cell 4 | Not Started | 81 |
| CHI05-PH2-FIT-BL-D5,3,3,5,2,4,1 | CHI05-02-04-L1-1610 | Interior - L1 ADP - COLO2 Cell 4 | Not Started | 79 |
| CHI05-PH2-FIT-BL-D5,3,3,5,2,4,2 | CHI05-02-04-L2-1620 | Interior - L2 UPS - COLO2 Cell 4 | Not Started | 50 |
| CHI05-PH2-FIT-BL-D5,3,3,5,2,4,2 | CHI05-02-04-L2-1630 | Interior - L2 MSB - COLO2 Cell 4 | Not Started | 50 |
| CHI05-PH2-FIT-BL-D5,3,3,5,2,4,2 | CHI05-02-04-L2-1640 | Interior - L2 PDUs - COLO2 Cell 4 | Not Started | 42 |
| CHI05-PH2-FIT-BL-D5,3,3,5,2,4,2 | CHI05-02-04-L2-1650 | Interior - L2 AHUs - COLO2 Cell 4 | Not Started | 42 |
| CHI05-PH2-FIT-BL-D5,3,3,5,2,4,2 | CHI05-02-04-L2-1660 | Interior - L2 ATSs - COLO2 Cell 4 | Not Started | 50 |
| CHI05-PH2-FIT-BL-D5,3,3,5,2,4,2 | CHI05-02-04-L2-1670 | Interior - L2 Busway - COLO2 Cell 4 | Not Started | 42 |
| CHI05-PH2-FIT-BL-D5,3,3,5,2,4,2 | CHI05-02-04-L2-1730 | Interior - L2 ADP - COLO2 Cell 4 | Not Started | 50 |
| CHI05-PH2-FIT-BL-D5,3,3,5,2,4,3 | CHI05-02-04-L3-1740 | Interior - L3 UPS - COLO2 Cell 4 | Not Started | 35 |
| CHI05-PH2-FIT-BL-D5,3,3,5,2,4,3 | CHI05-02-04-L3-1750 | Interior - L3 MSB - COLO2 Cell 4 | Not Started | 35 |
| CHI05-PH2-FIT-BL-D5,3,3,5,2,4,3 | CHI05-02-04-L3-1760 | Interior - L3 PDUs - COLO2 Cell 4 | Not Started | 40 |
| CHI05-PH2-FIT-BL-D5,3,3,5,2,4,3 | CHI05-02-04-L3-1770 | Interior - L3 AHUs - COLO2 Cell 4 | Not Started | 35 |
| CHI05-PH2-FIT-BL-D5,3,3,5,2,4,3 | CHI05-02-04-L3-1780 | Interior - L3 ATSs - COLO2 Cell 4 | Not Started | 35 |
| CHI05-PH2-FIT-BL-D5,3,3,5,2,4,3 | CHI05-02-04-L3-1790 | Interior - L3 Busway - COLO2 Cell 4 | Not Started | 35 |
| CHI05-PH2-FIT-BL-D5,3,3,5,2,4,3 | CHI05-02-04-L3-1850 | Interior - L3 ADP - COLO2 Cell 4 | Not Started | 35 |
| CHI05-PH2-FIT-BL-D5,3,3,4,1 | CHI05-YARD-2000 | Set the Generator - Colo 2 - North | Not Started | 65 |
| CHI05-PH2-FIT-BL-D5,3,3,4,1 | CHI05-YARD-2040 | Install MEP raceway conduit and piping - Colo 2 - North | Not Started | 116 |
| CHI05-PH2-FIT-BL-D5,3,3,4,1 | CHI05-YARD-2140 | Wire pulling and termination for MSB - Colo 2 - North | Not Started | 98 |
| CHI05-PH2-FIT-BL-D5,3,3,4,1 | CHI05-YARD-2360 | Install screen wall - Colo 2 - North | Not Started | 140 |
| CHI05-PH2-FIT-BL-D5,3,3,4,1 | CHI05-YARD-2030 | Install Generator - Colo 2 - North | Not Started | 82 |
| CHI05-PH2-FIT-BL-D5,3,3,4,1 | CHI05-YARD-2210 | Installation of Mech. Piping and testing - Colo 2 - North | Not Started | 140 |
| CHI05-PH2-FIT-BL-D5,3,3,4,1 | CHI05-YARD-2560 | Set the MV Gear - Colo 2 - North | Not Started | 63 |
| CHI05-PH2-FIT-BL-D5,3,3,4,1 | CHI05-YARD-2570 | Install MV Gear - Colo 2 - North | Not Started | 90 |
| CHI05-PH2-FIT-BL-D5,3,3,4,2 | CHI05-YARD-2120 | Set the Generator - Colo 2 - South | Not Started | 65 |
| CHI05-PH2-FIT-BL-D5,3,3,4,2 | CHI05-YARD-2300 | Install MEP raceway conduit and piping - Colo 2 - South | Not Started | 131 |
| CHI05-PH2-FIT-BL-D5,3,3,4,2 | CHI05-YARD-2350 | Wire pulling and termination for MSB - Colo 2 - South | Not Started | 98 |
| CHI05-PH2-FIT-BL-D5,3,3,4,2 | CHI05-YARD-2450 | Install screen wall - Colo 2 - South | Not Started | 125 |
| CHI05-PH2-FIT-BL-D5,3,3,4,2 | CHI05-YARD-2130 | Install Generator - Colo 2 - South | Not Started | 82 |
| CHI05-PH2-FIT-BL-D5,3,3,4,2 | CHI05-YARD-2390 | Installation of Mech. Piping and testing - Colo 2 - South | Not Started | 125 |
| CHI05-PH2-FIT-BL-D5,3,3,4,2 | CHI05-YARD-2500 | Set the MV Gear - Colo 2 - South | Not Started | 63 |
| CHI05-PH2-FIT-BL-D5,3,3,4,2 | CHI05-YARD-2510 | Install MV Gear - Colo 2 - South | Not Started | 105 |
| CHI05-PH2-FIT-BL-D5,3,3,4,4 | CHI05-YARD-2010 | Set the MV Gear - Colo 5 - West | Not Started | 63 |
| CHI05-PH2-FIT-BL-D5,3,3,4,4 | CHI05-YARD-2050 | Install MEP raceway conduit and piping - Colo 5 - West | Not Started | 68 |
| CHI05-PH2-FIT-BL-D5,3,3,4,4 | CHI05-YARD-2150 | Wire pulling and termination for MSB - Colo 5 - West | Not Started | 51 |
| CHI05-PH2-FIT-BL-D5,3,3,4,4 | CHI05-YARD-2250 | Install screen wall - Colo 5 - West | Not Started | 126 |
| CHI05-PH2-FIT-BL-D5,3,3,4,4 | CHI05-YARD-2020 | Install MV Gear - Colo 5 - West | Not Started | 63 |
| CHI05-PH2-FIT-BL-D5,3,3,4,4 | CHI05-YARD-2200 | Installation of Mech. Piping and testing - Colo 5 - West | Not Started | 126 |
| CHI05-PH2-FIT-BL-D5,3,3,4,4 | CHI05-YARD-2620 | Set the Generator - Colo 5 - West | Not Started | 65 |
| CHI05-PH2-FIT-BL-D5,3,3,4,4 | CHI05-YARD-2630 | Install Generator - Colo 5 - West | Not Started | 51 |
| CHI05-PH2-FIT-BL-D5,3,3,4,5 | CHI05-YARD-2060 | Set the Generator - Colo 3 - North | Not Started | 65 |
| CHI05-PH2-FIT-BL-D5,3,3,4,5 | CHI05-YARD-2160 | Install MEP raceway conduit and piping - Colo 3 - North | Not Started | 111 |
| CHI05-PH2-FIT-BL-D5,3,3,4,5 | CHI05-YARD-2260 | Wire pulling and termination for MSB - Colo 3 - North | Not Started | 94 |
| CHI05-PH2-FIT-BL-D5,3,3,4,5 | CHI05-YARD-2400 | Install screen wall - Colo 3 - North | Not Started | 136 |
| CHI05-PH2-FIT-BL-D5,3,3,4,5 | CHI05-YARD-2090 | Install Generator - Colo 3 - North | Not Started | 71 |
| CHI05-PH2-FIT-BL-D5,3,3,4,5 | CHI05-YARD-2290 | Installation of Mech. Piping and testing - Colo 3 - North | Not Started | 136 |
| CHI05-PH2-FIT-BL-D5,3,3,4,5 | CHI05-YARD-2580 | Set the MV Gear - Colo 3 - North | Not Started | 63 |
| CHI05-PH2-FIT-BL-D5,3,3,4,5 | CHI05-YARD-2590 | Install MV Gear - Colo 3 - North | Not Started | 78 |
| CHI05-PH2-FIT-BL-D5,3,3,4,6 | CHI05-YARD-2100 | Set the MV Gear - Colo 4 - North | Not Started | 63 |
| CHI05-PH2-FIT-BL-D5,3,3,4,6 | CHI05-YARD-2240 | Install MEP raceway conduit and piping - Colo 4 - North | Not Started | 69 |
| CHI05-PH2-FIT-BL-D5,3,3,4,6 | CHI05-YARD-2310 | Wire pulling and termination for MSB - Colo 4 - North | Not Started | 47 |
| CHI05-PH2-FIT-BL-D5,3,3,4,6 | CHI05-YARD-2430 | Install screen wall - Colo 4 - North | Not Started | 126 |
| CHI05-PH2-FIT-BL-D5,3,3,4,6 | CHI05-YARD-2110 | Install MV Gear - Colo 4 - North | Not Started | 64 |
| CHI05-PH2-FIT-BL-D5,3,3,4,6 | CHI05-YARD-2330 | Installation of Mech. Piping and testing - Colo 4 - North | Not Started | 126 |
| CHI05-PH2-FIT-BL-D5,3,3,4,6 | CHI05-YARD-2600 | Set the Generator - Colo 4 - North | Not Started | 65 |
| CHI05-PH2-FIT-BL-D5,3,3,4,6 | CHI05-YARD-2610 | Install Generator - Colo 4 - North | Not Started | 47 |
| CHI05-PH2-FIT-BL-D5,3,3,4,7 | CHI05-YARD-2170 | Set the MV Gear - Colo 3 - South | Not Started | 63 |
| CHI05-PH2-FIT-BL-D5,3,3,4,7 | CHI05-YARD-2340 | Install MEP raceway conduit and piping - Colo 3 - South | Not Started | 126 |

| activity_code | activity_id | activity_name | activity_status | total_float |
| --- | --- | --- | --- | --- |
| CHI05-PH2-FIT-BL-D5,3,3,4,7 | CHI05-YARD-2380 | Wire pulling and termination for MSB - Colo 3 - South | Not Started | 94 |
| CHI05-PH2-FIT-BL-D5,3,3,4,7 | CHI05-YARD-2460 | Install screen wall - Colo 3 - South | Not Started | 136 |
| CHI05-PH2-FIT-BL-D5,3,3,4,7 | CHI05-YARD-2190 | Install MV Gear - Colo 3 - South | Not Started | 93 |
| CHI05-PH2-FIT-BL-D5,3,3,4,7 | CHI05-YARD-2410 | Installation of Mech. Piping and testing - Colo 3 - South | Not Started | 136 |
| CHI05-PH2-FIT-BL-D5,3,3,4,7 | CHI05-YARD-2520 | Set the Generator - Colo 3 - South | Not Started | 65 |
| CHI05-PH2-FIT-BL-D5,3,3,4,7 | CHI05-YARD-2530 | Install Generator - Colo 3 - South | Not Started | 71 |
| CHI05-PH2-FIT-BL-D5,3,3,4,8 | CHI05-YARD-2220 | Set the MV Gear - Colo 4 - South | Not Started | 63 |
| CHI05-PH2-FIT-BL-D5,3,3,4,8 | CHI05-YARD-2370 | Install MEP raceway conduit and piping - Colo 4 - South | Not Started | 84 |
| CHI05-PH2-FIT-BL-D5,3,3,4,8 | CHI05-YARD-2420 | Wire pulling and termination for MSB - Colo 4 - South | Not Started | 47 |
| CHI05-PH2-FIT-BL-D5,3,3,4,8 | CHI05-YARD-2470 | Install screen wall - Colo 4 - South | Not Started | 126 |
| CHI05-PH2-FIT-BL-D5,3,3,4,8 | CHI05-YARD-2230 | Install MV Gear - Colo 4 - South | Not Started | 79 |
| CHI05-PH2-FIT-BL-D5,3,3,4,8 | CHI05-YARD-2440 | Installation of Mech. Piping and testing - Colo 4 - South | Not Started | 126 |
| CHI05-PH2-FIT-BL-D5,3,3,4,8 | CHI05-YARD-2540 | Set the Generator - Colo 4 - South | Not Started | 65 |
| CHI05-PH2-FIT-BL-D5,3,3,4,8 | CHI05-YARD-2550 | Install Generator - Colo 4 - South | Not Started | 47 |
| CHI05-PH2-FIT-BL-D5,3,3,4,9 | CHI05-YARD-2070 | Set the MV Gear - Colo 5 - East | Not Started | 65 |
| CHI05-PH2-FIT-BL-D5,3,3,4,9 | CHI05-YARD-2180 | Install MEP raceway conduit and piping - Colo 5 - East | Not Started | 105 |
| CHI05-PH2-FIT-BL-D5,3,3,4,9 | CHI05-YARD-2270 | Wire pulling and termination for MSB - Colo 5 - East | Not Started | 51 |
| CHI05-PH2-FIT-BL-D5,3,3,4,9 | CHI05-YARD-2320 | Install screen wall - Colo 5 - East | Not Started | 126 |
| CHI05-PH2-FIT-BL-D5,3,3,4,9 | CHI05-YARD-2080 | Install MV Gear - Colo 5 - East | Not Started | 94 |
| CHI05-PH2-FIT-BL-D5,3,3,4,9 | CHI05-YARD-2280 | Installation of Mech. Piping and testing - Colo 5 - Eest | Not Started | 126 |
| CHI05-PH2-FIT-BL-D5,3,3,4,9 | CHI05-YARD-2480 | Set the Generator - Colo 5 - East | Not Started | 67 |
| CHI05-PH2-FIT-BL-D5,3,3,4,9 | CHI05-YARD-2490 | Install Generator - Colo 5 - East | Not Started | 51 |
| CHI05-PH2-FIT-BL-D5,3,3,1,6,2 | CHI05-03-01-MG-1110 | Install Dampers and actuators at Louvers - Upper level (RED) - COLO3 Cell 1 - MG | Not Started | 0 |
| CHI05-PH2-FIT-BL-D5,3,3,1,6,2 | CHI05-03-01-MG-1120 | Install Dampers and actuators at Louvers - Lower level (OA) - COLO3 Cell 1 - MG | Not Started | 17 |
| CHI05-PH2-FIT-BL-D5,3,3,1,6,2 | CHI05-03-01-MG-1130 | Overhead MEP Installation - COLO3 Cell 1 - MG | Not Started | 17 |
| CHI05-PH2-FIT-BL-D5,3,3,1,6,2 | CHI05-03-01-MG-1140 | Deliver AHU into Mech. Gallery - COLO3 Cell 1 - MG | Not Started | 17 |
| CHI05-PH2-FIT-BL-D5,3,3,1,6,2 | CHI05-03-01-MG-1150 | Install Walls and Primer Paint - COLO3 Cell 1 - MG | Not Started | 17 |
| CHI05-PH2-FIT-BL-D5,3,3,1,6,2 | CHI05-03-01-MG-1160 | Placing the AHU - COLO3 Cell 1 - MG | Not Started | 72 |
| CHI05-PH2-FIT-BL-D5,3,3,1,6,2 | CHI05-03-01-MG-1170 | Layout Ceiling and install Pencile Rod - COLO3 Cell 1 - MG | Not Started | 76 |
| CHI05-PH2-FIT-BL-D5,3,3,1,6,2 | CHI05-03-01-MG-1180 | Piping and Electrical Termination to AHUs - COLO3 Cell 1 - MG | Not Started | 72 |
| CHI05-PH2-FIT-BL-D5,3,3,1,6,2 | CHI05-03-01-MG-1190 | Pipe Testing - COLO3 Cell 1 - MG | Not Started | 78 |
| CHI05-PH2-FIT-BL-D5,3,3,1,6,2 | CHI05-03-01-MG-1200 | Install ceiling and Light Fittings - COLO3 Cell 1 - MG | Not Started | 78 |
| CHI05-PH2-FIT-BL-D5,3,3,1,6,2 | CHI05-03-01-MG-1210 | Trim out MEP - COLO3 Cell 1 - MG | Not Started | 87 |
| CHI05-PH2-FIT-BL-D5,3,3,1,6,2 | CHI05-03-01-MG-1155 | Post Wall Overhead MEP - COLO3 Cell 1 - MG | Not Started | 72 |
| CHI05-PH2-FIT-BL-D5,3,3,1,6,5 | CHI05-03-01-ER-1110 | Install Walls and Primer Paint - COLO3 Cell 1 - ER | Not Started | 0 |
| CHI05-PH2-FIT-BL-D5,3,3,1,6,5 | CHI05-03-01-ER-1120 | Sprinklers and Overhead MEP (Above Ceiling) - COLO3 Cell 1 - ER | Not Started | 29 |
| CHI05-PH2-FIT-BL-D5,3,3,1,6,5 | CHI05-03-01-ER-1130 | Install Upper Screens - COLO3 Cell 1 - ER | Not Started | 29 |
| CHI05-PH2-FIT-BL-D5,3,3,1,6,5 | CHI05-03-01-ER-1140 | Install Ceiling - COLO3 Cell 1 - ER | Not Started | 29 |
| CHI05-PH2-FIT-BL-D5,3,3,1,6,5 | CHI05-03-01-ER-1150 | Below Ceiling MEP Rough In - COLO3 Cell 1 - ER | Not Started | 27 |
| CHI05-PH2-FIT-BL-D5,3,3,1,6,5 | CHI05-03-01-ER-1160 | Installation of ADP & ATS - COLO3 Cell 1 - ER | Not Started | 78 |
| CHI05-PH2-FIT-BL-D5,3,3,1,6,5 | CHI05-03-01-ER-1170 | Installation of UPS Equipment - COLO3 Cell 1 - ER | Not Started | 40 |
| CHI05-PH2-FIT-BL-D5,3,3,1,6,5 | CHI05-03-01-ER-1180 | Connet to Cable tray and conduit equipment - COLO3 Cell 1 - ER | Not Started | 82 |
| CHI05-PH2-FIT-BL-D5,3,3,1,6,5 | CHI05-03-01-ER-1190 | Cable Pulling at Elec. Equipment - COLO3 Cell 1 - ER | Not Started | 82 |
| CHI05-PH2-FIT-BL-D5,3,3,1,6,5 | CHI05-03-01-ER-1200 | Door Frame Installation - COLO3 Cell 1 - ER | Not Started | 40 |
| CHI05-PH2-FIT-BL-D5,3,3,1,6,5 | CHI05-03-01-ER-1210 | Finishes and Signage - COLO3 Cell 1 - ER | Not Started | 105 |
| CHI05-PH2-FIT-BL-D5,3,3,1,6,5 | CHI05-03-01-ER-1155 | Installation of MSB - COLO3 Cell 1 - ER | Not Started | 77 |
| CHI05-PH2-FIT-BL-D5,3,3,1,6,1 | CHI05-03-01-DH-1100 | Cable Pulling at PDU & Busway - COLO3 Cell 1 - DH | Not Started | 17 |
| CHI05-PH2-FIT-BL-D5,3,3,1,6,1 | CHI05-03-01-DH-1110 | Overhead MEP and Hangers (Above Ceiling) - COLO3 Cell 1 - DH | Not Started | 37 |
| CHI05-PH2-FIT-BL-D5,3,3,1,6,1 | CHI05-03-01-DH-1120 | HAC install and Rise - COLO3 Cell 1 - DH | Not Started | 56 |
| CHI05-PH2-FIT-BL-D5,3,3,1,6,1 | CHI05-03-01-DH-1130 | Termination at PDU & Busway- COLO3 Cell 1 - DH | Not Started | 22 |
| CHI05-PH2-FIT-BL-D5,3,3,1,6,1 | CHI05-03-01-DH-1140 | Security Screen Installation - COLO3 Cell 1 - DH | Not Started | 17 |
| CHI05-PH2-FIT-BL-D5,3,3,1,6,1 | CHI05-03-01-DH-1150 | Ceiling Grid and Tile - COLO3 Cell 1 - DH | Not Started | 17 |
| CHI05-PH2-FIT-BL-D5,3,3,1,6,1 | CHI05-03-01-DH-1160 | Install PDU's - COLO3 Cell 1 - DH | Not Started | 17 |
| CHI05-PH2-FIT-BL-D5,3,3,1,6,1 | CHI05-03-01-DH-1170 | Overhead MEP Installation (Below Ceiling) - COLO3 Cell 1 - DH | Not Started | 17 |
| CHI05-PH2-FIT-BL-D5,3,3,1,6,1 | CHI05-03-01-DH-1180 | Install Low Voltage Wiring and Fiber Optic - COLO3 Cell 1 - DH | Not Started | 56 |
| CHI05-PH2-FIT-BL-D5,3,3,1,6,1 | CHI05-03-01-DH-1190 | HAC Placing - COLO3 Cell 1 - DH | Not Started | 56 |
| CHI05-PH2-FIT-BL-D5,3,3,1,6,1 | CHI05-03-01-DH-1200 | Finishes and Signage - COLO3 Cell 1 - DH | Not Started | 102 |
| CHI05-PH2-FIT-BL-D5,3,3,1,6,4,1 | CHI05-03-01-L1-1260 | Interior - L1 UPS - COLO3 Cell 1 | Not Started | 58 |
| CHI05-PH2-FIT-BL-D5,3,3,1,6,4,1 | CHI05-03-01-L1-1270 | Interior - L1 MSB - COLO3 Cell 1 | Not Started | 70 |
| CHI05-PH2-FIT-BL-D5,3,3,1,6,4,1 | CHI05-03-01-L1-1280 | Interior - L1 PDUs - COLO3 Cell 1 | Not Started | 74 |
| CHI05-PH2-FIT-BL-D5,3,3,1,6,4,1 | CHI05-03-01-L1-1290 | Interior - L1 AHUs - COLO3 Cell 1 | Not Started | 87 |
| CHI05-PH2-FIT-BL-D5,3,3,1,6,4,1 | CHI05-03-01-L1-1300 | Interior - L1 ATSs - COLO3 Cell 1 | Not Started | 83 |
| CHI05-PH2-FIT-BL-D5,3,3,1,6,4,1 | CHI05-03-01-L1-1310 | Interior - L1 Busway - COLO3 Cell 1 | Not Started | 83 |
| CHI05-PH2-FIT-BL-D5,3,3,1,6,4,1 | CHI05-03-01-L1-1370 | Interior - L1 ADP - COLO3 Cell 1 | Not Started | 79 |
| CHI05-PH2-FIT-BL-D5,3,3,1,6,4,2 | CHI05-03-01-L2-1380 | Interior - L2 UPS - COLO3 Cell 1 | Not Started | 50 |
| CHI05-PH2-FIT-BL-D5,3,3,1,6,4,2 | CHI05-03-01-L2-1390 | Interior - L2 MSB - COLO3 Cell 1 | Not Started | 50 |
| CHI05-PH2-FIT-BL-D5,3,3,1,6,4,2 | CHI05-03-01-L2-1400 | Interior - L2 PDUs - COLO3 Cell 1 | Not Started | 50 |
| CHI05-PH2-FIT-BL-D5,3,3,1,6,4,2 | CHI05-03-01-L2-1410 | Interior - L2 AHUs - COLO3 Cell 1 | Not Started | 55 |
| CHI05-PH2-FIT-BL-D5,3,3,1,6,4,2 | CHI05-03-01-L2-1420 | Interior - L2 ATSs - COLO3 Cell 1 | Not Started | 55 |
| CHI05-PH2-FIT-BL-D5,3,3,1,6,4,2 | CHI05-03-01-L2-1430 | Interior - L2 Busway - COLO3 Cell 1 | Not Started | 55 |

| activity_code | activity_id | activity_name | activity_status | total_float |
| --- | --- | --- | --- | --- |
| CHI05-PH2-FIT-BL-D5,3,3,1,6,4,2 | CHI05-03-01-L2-1490 | Interior - L2 ADP - COLO3 Cell 1 | Not Started | 55 |
| CHI05-PH2-FIT-BL-D5,3,3,1,6,4,3 | CHI05-03-01-L3-1500 | Interior - L3 UPS - COLO3 Cell 1 | Not Started | 34 |
| CHI05-PH2-FIT-BL-D5,3,3,1,6,4,3 | CHI05-03-01-L3-1510 | Interior - L3 MSB - COLO3 Cell 1 | Not Started | 34 |
| CHI05-PH2-FIT-BL-D5,3,3,1,6,4,3 | CHI05-03-01-L3-1520 | Interior - L3 PDUs - COLO3 Cell 1 | Not Started | 34 |
| CHI05-PH2-FIT-BL-D5,3,3,1,6,4,3 | CHI05-03-01-L3-1530 | Interior - L3 AHUs - COLO3 Cell 1 | Not Started | 34 |
| CHI05-PH2-FIT-BL-D5,3,3,1,6,4,3 | CHI05-03-01-L3-1540 | Interior - L3 ATSs - COLO3 Cell 1 | Not Started | 34 |
| CHI05-PH2-FIT-BL-D5,3,3,1,6,4,3 | CHI05-03-01-L3-1550 | Interior - L3 Busway - COLO3 Cell 1 | Not Started | 34 |
| CHI05-PH2-FIT-BL-D5,3,3,1,6,4,3 | CHI05-03-01-L3-1610 | Interior - L3 ADP - COLO3 Cell 1 | Not Started | 34 |
| CHI05-PH2-FIT-BL-D5,3,3,1,1,2 | CHI05-03-02-MG-1220 | Install Dampers and actuators at Louvers - Upper level (RED) - COLO3 Cell 2 - MG | Not Started | 4 |
| CHI05-PH2-FIT-BL-D5,3,3,1,1,2 | CHI05-03-02-MG-1230 | Install Dampers and actuators at Louvers - Lower level (OA) - COLO3 Cell 2 - MG | Not Started | 27 |
| CHI05-PH2-FIT-BL-D5,3,3,1,1,2 | CHI05-03-02-MG-1240 | Overhead MEP Installation - COLO3 Cell 2 - MG | Not Started | 22 |
| CHI05-PH2-FIT-BL-D5,3,3,1,1,2 | CHI05-03-02-MG-1250 | Deliver AHU into Mech. Gallery - COLO3 Cell 2 - MG | Not Started | 22 |
| CHI05-PH2-FIT-BL-D5,3,3,1,1,2 | CHI05-03-02-MG-1260 | Install Walls and Primer Paint - COLO3 Cell 2 - MG | Not Started | 22 |
| CHI05-PH2-FIT-BL-D5,3,3,1,1,2 | CHI05-03-02-MG-1270 | Placing the AHU - COLO3 Cell 2 - MG | Not Started | 72 |
| CHI05-PH2-FIT-BL-D5,3,3,1,1,2 | CHI05-03-02-MG-1280 | Layout Ceiling and install Pencile Rod - COLO3 Cell 2 - MG | Not Started | 76 |
| CHI05-PH2-FIT-BL-D5,3,3,1,1,2 | CHI05-03-02-MG-1290 | Piping and Electrical Termination to AHUs - COLO3 Cell 2 - MG | Not Started | 72 |
| CHI05-PH2-FIT-BL-D5,3,3,1,1,2 | CHI05-03-02-MG-1300 | Pipe Testing - COLO3 Cell 2 - MG | Not Started | 76 |
| CHI05-PH2-FIT-BL-D5,3,3,1,1,2 | CHI05-03-02-MG-1310 | Install ceiling and Light Fittings - COLO3 Cell 2 - MG | Not Started | 76 |
| CHI05-PH2-FIT-BL-D5,3,3,1,1,2 | CHI05-03-02-MG-1320 | Trim out MEP - COLO3 Cell 2 - MG | Not Started | 82 |
| CHI05-PH2-FIT-BL-D5,3,3,1,1,2 | CHI05-03-02-MG-1265 | Post Wall Overhead MEP - COLO3 Cell 2 - MG | Not Started | 72 |
| CHI05-PH2-FIT-BL-D5,3,3,1,1,5 | CHI05-03-02-ER-1220 | Install Walls and Primer Paint - COLO3 Cell 2 - ER | Not Started | 0 |
| CHI05-PH2-FIT-BL-D5,3,3,1,1,5 | CHI05-03-02-ER-1230 | Sprinklers and Overhead MEP (Above Ceiling) - COLO3 Cell 2 - ER | Not Started | 29 |
| CHI05-PH2-FIT-BL-D5,3,3,1,1,5 | CHI05-03-02-ER-1240 | Install Upper Screens - COLO3 Cell 2 - ER | Not Started | 29 |
| CHI05-PH2-FIT-BL-D5,3,3,1,1,5 | CHI05-03-02-ER-1250 | Install Ceiling - COLO3 Cell 2 - ER | Not Started | 29 |
| CHI05-PH2-FIT-BL-D5,3,3,1,1,5 | CHI05-03-02-ER-1260 | Below Ceiling MEP Rough In - COLO3 Cell 2 - ER | Not Started | 27 |
| CHI05-PH2-FIT-BL-D5,3,3,1,1,5 | CHI05-03-02-ER-1270 | Installation of ADP & ATS - COLO3 Cell 2 - ER | Not Started | 78 |
| CHI05-PH2-FIT-BL-D5,3,3,1,1,5 | CHI05-03-02-ER-1280 | Installation of UPS Equipment - COLO3 Cell 2 - ER | Not Started | 37 |
| CHI05-PH2-FIT-BL-D5,3,3,1,1,5 | CHI05-03-02-ER-1290 | Connet to Cable tray and conduit equipment - COLO3 Cell 2 - ER | Not Started | 92 |
| CHI05-PH2-FIT-BL-D5,3,3,1,1,5 | CHI05-03-02-ER-1300 | Cable Pulling at Elec. Equipment - COLO3 Cell 2 - ER | Not Started | 82 |
| CHI05-PH2-FIT-BL-D5,3,3,1,1,5 | CHI05-03-02-ER-1310 | Door Frame Installation - COLO3 Cell 2 - ER | Not Started | 47 |
| CHI05-PH2-FIT-BL-D5,3,3,1,1,5 | CHI05-03-02-ER-1320 | Finishes and Signage - COLO3 Cell 2 - ER | Not Started | 102 |
| CHI05-PH2-FIT-BL-D5,3,3,1,1,5 | CHI05-03-02-ER-1265 | Installation of MSB - COLO3 Cell 2 - ER | Not Started | 72 |
| CHI05-PH2-FIT-BL-D5,3,3,1,1,1 | CHI05-03-02-DH-1210 | Termination at PDU & Busway - COLO3 Cell 2 - DH | Not Started | 17 |
| CHI05-PH2-FIT-BL-D5,3,3,1,1,1 | CHI05-03-02-DH-1220 | Overhead MEP and Hangers (Above Ceiling) - COLO3 Cell 2 - DH | Not Started | 40 |
| CHI05-PH2-FIT-BL-D5,3,3,1,1,1 | CHI05-03-02-DH-1230 | HAC install and Rise - COLO3 Cell 2 - DH | Not Started | 56 |
| CHI05-PH2-FIT-BL-D5,3,3,1,1,1 | CHI05-03-02-DH-1240 | Cable Pulling at PDU & Busway- COLO3 Cell 2 - DH | Not Started | 27 |
| CHI05-PH2-FIT-BL-D5,3,3,1,1,1 | CHI05-03-02-DH-1250 | Security Screen Installation - COLO3 Cell 2 - DH | Not Started | 22 |
| CHI05-PH2-FIT-BL-D5,3,3,1,1,1 | CHI05-03-02-DH-1260 | Ceiling Grid and Tile - COLO3 Cell 2 - DH | Not Started | 22 |
| CHI05-PH2-FIT-BL-D5,3,3,1,1,1 | CHI05-03-02-DH-1270 | Install PDU's - COLO3 Cell 2 - DH | Not Started | 22 |
| CHI05-PH2-FIT-BL-D5,3,3,1,1,1 | CHI05-03-02-DH-1280 | Overhead MEP Installation (Below Ceiling) - COLO3 Cell 2 - DH | Not Started | 22 |
| CHI05-PH2-FIT-BL-D5,3,3,1,1,1 | CHI05-03-02-DH-1290 | Install Low Voltage Wiring and Fiber Optic - COLO3 Cell 2 - DH | Not Started | 56 |
| CHI05-PH2-FIT-BL-D5,3,3,1,1,1 | CHI05-03-02-DH-1300 | HAC Placing - COLO3 Cell 2 - DH | Not Started | 56 |
| CHI05-PH2-FIT-BL-D5,3,3,1,1,1 | CHI05-03-02-DH-1310 | Finishes and Signage - COLO3 Cell 2 - DH | Not Started | 97 |
| CHI05-PH2-FIT-BL-D5,3,3,1,1,4,1 | CHI05-03-02-L1-1380 | Interior - L1 UPS - COLO3 Cell 2 | Not Started | 58 |
| CHI05-PH2-FIT-BL-D5,3,3,1,1,4,1 | CHI05-03-02-L1-1390 | Interior - L1 MSB - COLO3 Cell 2 | Not Started | 69 |
| CHI05-PH2-FIT-BL-D5,3,3,1,1,4,1 | CHI05-03-02-L1-1400 | Interior - L1 PDUs - COLO3 Cell 2 | Not Started | 73 |
| CHI05-PH2-FIT-BL-D5,3,3,1,1,4,1 | CHI05-03-02-L1-1410 | Interior - L1 AHUs - COLO3 Cell 2 | Not Started | 86 |
| CHI05-PH2-FIT-BL-D5,3,3,1,1,4,1 | CHI05-03-02-L1-1420 | Interior - L1 ATSs - COLO3 Cell 2 | Not Started | 82 |
| CHI05-PH2-FIT-BL-D5,3,3,1,1,4,1 | CHI05-03-02-L1-1430 | Interior - L1 Busway - COLO3 Cell 2 | Not Started | 82 |
| CHI05-PH2-FIT-BL-D5,3,3,1,1,4,1 | CHI05-03-02-L1-1490 | Interior - L1 ADP - COLO3 Cell 2 | Not Started | 78 |
| CHI05-PH2-FIT-BL-D5,3,3,1,1,4,2 | CHI05-03-02-L2-1500 | Interior - L2 UPS - COLO3 Cell 2 | Not Started | 50 |
| CHI05-PH2-FIT-BL-D5,3,3,1,1,4,2 | CHI05-03-02-L2-1510 | Interior - L2 MSB - COLO3 Cell 2 | Not Started | 50 |
| CHI05-PH2-FIT-BL-D5,3,3,1,1,4,2 | CHI05-03-02-L2-1520 | Interior - L2 PDUs - COLO3 Cell 2 | Not Started | 50 |
| CHI05-PH2-FIT-BL-D5,3,3,1,1,4,2 | CHI05-03-02-L2-1530 | Interior - L2 AHUs - COLO3 Cell 2 | Not Started | 55 |
| CHI05-PH2-FIT-BL-D5,3,3,1,1,4,2 | CHI05-03-02-L2-1540 | Interior - L2 ATSs - COLO3 Cell 2 | Not Started | 55 |
| CHI05-PH2-FIT-BL-D5,3,3,1,1,4,2 | CHI05-03-02-L2-1550 | Interior - L2 Busway - COLO3 Cell 2 | Not Started | 55 |
| CHI05-PH2-FIT-BL-D5,3,3,1,1,4,2 | CHI05-03-02-L2-1610 | Interior - L2 ADP - COLO3 Cell 2 | Not Started | 55 |
| CHI05-PH2-FIT-BL-D5,3,3,1,1,4,3 | CHI05-03-02-L3-1620 | Interior - L3 UPS - COLO3 Cell 2 | Not Started | 34 |
| CHI05-PH2-FIT-BL-D5,3,3,1,1,4,3 | CHI05-03-02-L3-1630 | Interior - L3 MSB - COLO3 Cell 2 | Not Started | 34 |
| CHI05-PH2-FIT-BL-D5,3,3,1,1,4,3 | CHI05-03-02-L3-1640 | Interior - L3 PDUs - COLO3 Cell 2 | Not Started | 34 |
| CHI05-PH2-FIT-BL-D5,3,3,1,1,4,3 | CHI05-03-02-L3-1650 | Interior - L3 AHUs - COLO3 Cell 2 | Not Started | 34 |
| CHI05-PH2-FIT-BL-D5,3,3,1,1,4,3 | CHI05-03-02-L3-1660 | Interior - L3 ATSs - COLO3 Cell 2 | Not Started | 34 |
| CHI05-PH2-FIT-BL-D5,3,3,1,1,4,3 | CHI05-03-02-L3-1670 | Interior - L3 Busway - COLO3 Cell 2 | Not Started | 34 |
| CHI05-PH2-FIT-BL-D5,3,3,1,1,4,3 | CHI05-03-02-L3-1730 | Interior - L3 ADP - COLO3 Cell 2 | Not Started | 34 |
| CHI05-PH2-FIT-BL-D5,3,3,1,3,2 | CHI05-03-03-MG-1330 | Install Dampers and actuators at Louvers - Upper level (RED) - COLO3 Cell 3 - MG | Not Started | 4 |
| CHI05-PH2-FIT-BL-D5,3,3,1,3,2 | CHI05-03-03-MG-1340 | Install Dampers and actuators at Louvers - Lower level (OA) - COLO3 Cell 3 - MG | Not Started | 37 |
| CHI05-PH2-FIT-BL-D5,3,3,1,3,2 | CHI05-03-03-MG-1350 | Overhead MEP Installation - COLO3 Cell 3 - MG | Not Started | 27 |
| CHI05-PH2-FIT-BL-D5,3,3,1,3,2 | CHI05-03-03-MG-1360 | Deliver AHU into Mech. Gallery - COLO3 Cell 3 - MG | Not Started | 27 |
| CHI05-PH2-FIT-BL-D5,3,3,1,3,2 | CHI05-03-03-MG-1370 | Install Walls and Primer Paint - COLO3 Cell 3 - MG | Not Started | 27 |
| CHI05-PH2-FIT-BL-D5,3,3,1,3,2 | CHI05-03-03-MG-1380 | Placing the AHU - COLO3 Cell 3 - MG | Not Started | 72 |

| activity_code | activity_id | activity_name | activity_status | total_float |
| --- | --- | --- | --- | --- |
| CHI05-PH2-FIT-BL-D5,3,3,1,3,2 | CHI05-03-03-MG-1390 | Layout Ceiling and install Pencile Rod - COLO3 Cell 3 - MG | Not Started | 76 |
| CHI05-PH2-FIT-BL-D5,3,3,1,3,2 | CHI05-03-03-MG-1400 | Piping and Electrical Termination to AHUs - COLO3 Cell 3 - MG | Not Started | 72 |
| CHI05-PH2-FIT-BL-D5,3,3,1,3,2 | CHI05-03-03-MG-1410 | Pipe Testing - COLO3 Cell 3 - MG | Not Started | 74 |
| CHI05-PH2-FIT-BL-D5,3,3,1,3,2 | CHI05-03-03-MG-1420 | Install ceiling and Light Fittings - COLO3 Cell 3 - MG | Not Started | 74 |
| CHI05-PH2-FIT-BL-D5,3,3,1,3,2 | CHI05-03-03-MG-1430 | Trim out MEP - COLO3 Cell 3 - MG | Not Started | 77 |
| CHI05-PH2-FIT-BL-D5,3,3,1,3,2 | CHI05-03-03-MG-1375 | Post Wall Overhead MEP - COLO3 Cell 3 - MG | Not Started | 72 |
| CHI05-PH2-FIT-BL-D5,3,3,1,3,5 | CHI05-03-03-ER-1330 | Install Walls and Primer Paint - COLO3 Cell 3 - ER | Not Started | 0 |
| CHI05-PH2-FIT-BL-D5,3,3,1,3,5 | CHI05-03-03-ER-1340 | Sprinklers and Overhead MEP (Above Ceiling) - COLO3 Cell 3 - ER | Not Started | 29 |
| CHI05-PH2-FIT-BL-D5,3,3,1,3,5 | CHI05-03-03-ER-1350 | Install Upper Screens - COLO3 Cell 3 - ER | Not Started | 29 |
| CHI05-PH2-FIT-BL-D5,3,3,1,3,5 | CHI05-03-03-ER-1360 | Install Ceiling - COLO3 Cell 3 - ER | Not Started | 29 |
| CHI05-PH2-FIT-BL-D5,3,3,1,3,5 | CHI05-03-03-ER-1370 | Below Ceiling MEP Rough In - COLO3 Cell 3 - ER | Not Started | 27 |
| CHI05-PH2-FIT-BL-D5,3,3,1,3,5 | CHI05-03-03-ER-1380 | Installation of ADP & ATS - COLO3 Cell 3 - ER | Not Started | 77 |
| CHI05-PH2-FIT-BL-D5,3,3,1,3,5 | CHI05-03-03-ER-1390 | Installation of UPS Equipment - COLO3 Cell 3 - ER | Not Started | 32 |
| CHI05-PH2-FIT-BL-D5,3,3,1,3,5 | CHI05-03-03-ER-1400 | Connet to Cable tray and conduit equipment - COLO3 Cell 3 - ER | Not Started | 101 |
| CHI05-PH2-FIT-BL-D5,3,3,1,3,5 | CHI05-03-03-ER-1410 | Cable Pulling at Elec. Equipment - COLO3 Cell 3 - ER | Not Started | 82 |
| CHI05-PH2-FIT-BL-D5,3,3,1,3,5 | CHI05-03-03-ER-1420 | Door Frame Installation - COLO3 Cell 3 - ER | Not Started | 37 |
| CHI05-PH2-FIT-BL-D5,3,3,1,3,5 | CHI05-03-03-ER-1430 | Finishes and Signage - COLO3 Cell 3 - ER | Not Started | 92 |
| CHI05-PH2-FIT-BL-D5,3,3,1,3,5 | CHI05-03-03-ER-1385 | Installation of MSB - COLO3 Cell 3 - ER | Not Started | 67 |
| CHI05-PH2-FIT-BL-D5,3,3,1,3,1 | CHI05-03-03-DH-1320 | Termination at PDU & Busway - COLO3 Cell 3 - DH | Not Started | 17 |
| CHI05-PH2-FIT-BL-D5,3,3,1,3,1 | CHI05-03-03-DH-1330 | Overhead MEP and Hangers (Above Ceiling) - COLO3 Cell 3 - DH | Not Started | 43 |
| CHI05-PH2-FIT-BL-D5,3,3,1,3,1 | CHI05-03-03-DH-1340 | HAC install and Rise - COLO3 Cell 3 - DH | Not Started | 56 |
| CHI05-PH2-FIT-BL-D5,3,3,1,3,1 | CHI05-03-03-DH-1350 | Cable Pulling at PDU & Busway- COLO3 Cell 3 - DH | Not Started | 32 |
| CHI05-PH2-FIT-BL-D5,3,3,1,3,1 | CHI05-03-03-DH-1360 | Security Screen Installation - COLO3 Cell 3 - DH | Not Started | 27 |
| CHI05-PH2-FIT-BL-D5,3,3,1,3,1 | CHI05-03-03-DH-1370 | Ceiling Grid and Tile - COLO3 Cell 3 - DH | Not Started | 27 |
| CHI05-PH2-FIT-BL-D5,3,3,1,3,1 | CHI05-03-03-DH-1380 | Install PDU's - COLO3 Cell 3 - DH | Not Started | 27 |
| CHI05-PH2-FIT-BL-D5,3,3,1,3,1 | CHI05-03-03-DH-1390 | Overhead MEP Installation (Below Ceiling) - COLO3 Cell 3 - DH | Not Started | 27 |
| CHI05-PH2-FIT-BL-D5,3,3,1,3,1 | CHI05-03-03-DH-1400 | Install Low Voltage Wiring and Fiber Optic - COLO3 Cell 3 - DH | Not Started | 56 |
| CHI05-PH2-FIT-BL-D5,3,3,1,3,1 | CHI05-03-03-DH-1410 | HAC Placing - COLO3 Cell 3 - DH | Not Started | 56 |
| CHI05-PH2-FIT-BL-D5,3,3,1,3,1 | CHI05-03-03-DH-1420 | Finishes and Signage - COLO3 Cell 3 - DH | Not Started | 87 |
| CHI05-PH2-FIT-BL-D5,3,3,1,3,4,1 | CHI05-03-03-L1-1500 | Interior - L1 UPS - COLO3 Cell 3 | Not Started | 58 |
| CHI05-PH2-FIT-BL-D5,3,3,1,3,4,1 | CHI05-03-03-L1-1510 | Interior - L1 MSB - COLO3 Cell 3 | Not Started | 87 |
| CHI05-PH2-FIT-BL-D5,3,3,1,3,4,1 | CHI05-03-03-L1-1520 | Interior - L1 PDUs - COLO3 Cell 3 | Not Started | 78 |
| CHI05-PH2-FIT-BL-D5,3,3,1,3,4,1 | CHI05-03-03-L1-1530 | Interior - L1 AHUs - COLO3 Cell 3 | Not Started | 78 |
| CHI05-PH2-FIT-BL-D5,3,3,1,3,4,1 | CHI05-03-03-L1-1540 | Interior - L1 ATSs - COLO3 Cell 3 | Not Started | 87 |
| CHI05-PH2-FIT-BL-D5,3,3,1,3,4,1 | CHI05-03-03-L1-1550 | Interior - L1 Busway - COLO3 Cell 3 | Not Started | 78 |
| CHI05-PH2-FIT-BL-D5,3,3,1,3,4,1 | CHI05-03-03-L1-1610 | Interior - L1 ADP - COLO3 Cell 3 | Not Started | 87 |
| CHI05-PH2-FIT-BL-D5,3,3,1,3,4,2 | CHI05-03-03-L2-1620 | Interior - L2 UPS - COLO3 Cell 3 | Not Started | 52 |
| CHI05-PH2-FIT-BL-D5,3,3,1,3,4,2 | CHI05-03-03-L2-1630 | Interior - L2 MSB - COLO3 Cell 3 | Not Started | 52 |
| CHI05-PH2-FIT-BL-D5,3,3,1,3,4,2 | CHI05-03-03-L2-1640 | Interior - L2 PDUs - COLO3 Cell 3 | Not Started | 41 |
| CHI05-PH2-FIT-BL-D5,3,3,1,3,4,2 | CHI05-03-03-L2-1650 | Interior - L2 AHUs - COLO3 Cell 3 | Not Started | 41 |
| CHI05-PH2-FIT-BL-D5,3,3,1,3,4,2 | CHI05-03-03-L2-1660 | Interior - L2 ATSs - COLO3 Cell 3 | Not Started | 52 |
| CHI05-PH2-FIT-BL-D5,3,3,1,3,4,2 | CHI05-03-03-L2-1670 | Interior - L2 Busway - COLO3 Cell 3 | Not Started | 41 |
| CHI05-PH2-FIT-BL-D5,3,3,1,3,4,2 | CHI05-03-03-L2-1730 | Interior - L2 ADP - COLO3 Cell 3 | Not Started | 52 |
| CHI05-PH2-FIT-BL-D5,3,3,1,3,4,3 | CHI05-03-03-L3-1740 | Interior - L3 UPS - COLO3 Cell 3 | Not Started | 36 |
| CHI05-PH2-FIT-BL-D5,3,3,1,3,4,3 | CHI05-03-03-L3-1750 | Interior - L3 MSB - COLO3 Cell 3 | Not Started | 36 |
| CHI05-PH2-FIT-BL-D5,3,3,1,3,4,3 | CHI05-03-03-L3-1760 | Interior - L3 PDUs - COLO3 Cell 3 | Not Started | 36 |
| CHI05-PH2-FIT-BL-D5,3,3,1,3,4,3 | CHI05-03-03-L3-1770 | Interior - L3 AHUs - COLO3 Cell 3 | Not Started | 36 |
| CHI05-PH2-FIT-BL-D5,3,3,1,3,4,3 | CHI05-03-03-L3-1780 | Interior - L3 ATSs - COLO3 Cell 3 | Not Started | 36 |
| CHI05-PH2-FIT-BL-D5,3,3,1,3,4,3 | CHI05-03-03-L3-1790 | Interior - L3 Busway - COLO3 Cell 3 | Not Started | 36 |
| CHI05-PH2-FIT-BL-D5,3,3,1,3,4,3 | CHI05-03-03-L3-1850 | Interior - L3 ADP - COLO3 Cell 3 | Not Started | 36 |
| CHI05-PH2-FIT-BL-D5,3,3,1,2,2 | CHI05-03-04-MG-1440 | Install Dampers and actuators at Louvers - Upper level (RED) - COLO3 Cell 4 - MG | Not Started | 4 |
| CHI05-PH2-FIT-BL-D5,3,3,1,2,2 | CHI05-03-04-MG-1450 | Install Dampers and actuators at Louvers - Lower level (OA) - COLO3 Cell 4 - MG | Not Started | 47 |
| CHI05-PH2-FIT-BL-D5,3,3,1,2,2 | CHI05-03-04-MG-1460 | Overhead MEP Installation - COLO3 Cell 4 - MG | Not Started | 32 |
| CHI05-PH2-FIT-BL-D5,3,3,1,2,2 | CHI05-03-04-MG-1470 | Deliver AHU into Mech. Gallery - COLO3 Cell 4 - MG | Not Started | 32 |
| CHI05-PH2-FIT-BL-D5,3,3,1,2,2 | CHI05-03-04-MG-1480 | Install Walls and Primer Paint - COLO3 Cell 4 - MG | Not Started | 32 |
| CHI05-PH2-FIT-BL-D5,3,3,1,2,2 | CHI05-03-04-MG-1490 | Placing the AHU - COLO3 Cell 4 - MG | Not Started | 72 |
| CHI05-PH2-FIT-BL-D5,3,3,1,2,2 | CHI05-03-04-MG-1500 | Layout Ceiling and install Pencile Rod - COLO3 Cell 4 - MG | Not Started | 76 |
| CHI05-PH2-FIT-BL-D5,3,3,1,2,2 | CHI05-03-04-MG-1510 | Piping and Electrical Termination to AHUs - COLO3 Cell 4 - MG | Not Started | 72 |
| CHI05-PH2-FIT-BL-D5,3,3,1,2,2 | CHI05-03-04-MG-1520 | Pipe Testing - COLO3 Cell 4 - MG | Not Started | 72 |
| CHI05-PH2-FIT-BL-D5,3,3,1,2,2 | CHI05-03-04-MG-1530 | Install ceiling and Light Fittings - COLO3 Cell 4 - MG | Not Started | 72 |
| CHI05-PH2-FIT-BL-D5,3,3,1,2,2 | CHI05-03-04-MG-1540 | Trim out MEP - COLO3 Cell 4 - MG | Not Started | 72 |
| CHI05-PH2-FIT-BL-D5,3,3,1,2,2 | CHI05-03-04-MG-1485 | Post Wall Overhead MEP - COLO3 Cell 4 - MG | Not Started | 72 |
| CHI05-PH2-FIT-BL-D5,3,3,1,2,5 | CHI05-03-04-ER-1440 | Install Walls and Primer Paint - COLO3 Cell 4 - ER | Not Started | 0 |
| CHI05-PH2-FIT-BL-D5,3,3,1,2,5 | CHI05-03-04-ER-1450 | Sprinklers and Overhead MEP (Above Ceiling) - COLO3 Cell 4 - ER | Not Started | 29 |
| CHI05-PH2-FIT-BL-D5,3,3,1,2,5 | CHI05-03-04-ER-1460 | Install Upper Screens - COLO3 Cell 4 - ER | Not Started | 29 |
| CHI05-PH2-FIT-BL-D5,3,3,1,2,5 | CHI05-03-04-ER-1470 | Install Ceiling - COLO3 Cell 4 - ER | Not Started | 29 |
| CHI05-PH2-FIT-BL-D5,3,3,1,2,5 | CHI05-03-04-ER-1480 | Below Ceiling MEP Rough In - COLO3 Cell 4 - ER | Not Started | 27 |
| CHI05-PH2-FIT-BL-D5,3,3,1,2,5 | CHI05-03-04-ER-1490 | Installation of ADP & ATS - COLO3 Cell 4 - ER | Not Started | 69 |
| CHI05-PH2-FIT-BL-D5,3,3,1,2,5 | CHI05-03-04-ER-1500 | Installation of UPS Equipment - COLO3 Cell 4 - ER | Not Started | 27 |
| CHI05-PH2-FIT-BL-D5,3,3,1,2,5 | CHI05-03-04-ER-1510 | Connet to Cable tray and conduit equipment - COLO3 Cell 4 - ER | Not Started | 106 |

| activity_code | activity_id | activity_name | activity_status | total_float |
| --- | --- | --- | --- | --- |
| CHI05-PH2-FIT-BL-D5,3,3,1,2,5 | CHI05-03-04-ER-1520 | Cable Pulling at Elec. Equipment - COLO3 Cell 4 - ER | Not Started | 82 |
| CHI05-PH2-FIT-BL-D5,3,3,1,2,5 | CHI05-03-04-ER-1530 | Door Frame Installation - COLO3 Cell 4 - ER | Not Started | 27 |
| CHI05-PH2-FIT-BL-D5,3,3,1,2,5 | CHI05-03-04-ER-1540 | Finishes and Signage - COLO3 Cell 4 - ER | Not Started | 82 |
| CHI05-PH2-FIT-BL-D5,3,3,1,2,5 | CHI05-03-04-ER-1495 | Installation of MSB - COLO3 Cell 4 - ER | Not Started | 59 |
| CHI05-PH2-FIT-BL-D5,3,3,1,2,1 | CHI05-03-04-DH-1430 | Termination at PDU & Busway - COLO3 Cell 4 - DH | Not Started | 17 |
| CHI05-PH2-FIT-BL-D5,3,3,1,2,1 | CHI05-03-04-DH-1440 | Overhead MEP and Hangers (Above Ceiling) - COLO3 Cell 4 - DH | Not Started | 46 |
| CHI05-PH2-FIT-BL-D5,3,3,1,2,1 | CHI05-03-04-DH-1450 | HAC install and Rise - COLO3 Cell 4 - DH | Not Started | 56 |
| CHI05-PH2-FIT-BL-D5,3,3,1,2,1 | CHI05-03-04-DH-1460 | Cable Pulling at PDU & Busway- COLO3 Cell 4 - DH | Not Started | 37 |
| CHI05-PH2-FIT-BL-D5,3,3,1,2,1 | CHI05-03-04-DH-1470 | Security Screen Installation - COLO3 Cell 4 - DH | Not Started | 32 |
| CHI05-PH2-FIT-BL-D5,3,3,1,2,1 | CHI05-03-04-DH-1480 | Ceiling Grid and Tile - COLO3 Cell 4 - DH | Not Started | 32 |
| CHI05-PH2-FIT-BL-D5,3,3,1,2,1 | CHI05-03-04-DH-1490 | Install PDU's - COLO3 Cell 4 - DH | Not Started | 32 |
| CHI05-PH2-FIT-BL-D5,3,3,1,2,1 | CHI05-03-04-DH-1500 | Overhead MEP Installation (Below Ceiling) - COLO3 Cell 4 - DH | Not Started | 32 |
| CHI05-PH2-FIT-BL-D5,3,3,1,2,1 | CHI05-03-04-DH-1510 | Install Low Voltage Wiring and Fiber Optic - COLO3 Cell 4 - DH | Not Started | 56 |
| CHI05-PH2-FIT-BL-D5,3,3,1,2,1 | CHI05-03-04-DH-1520 | HAC Placing - COLO3 Cell 4 - DH | Not Started | 56 |
| CHI05-PH2-FIT-BL-D5,3,3,1,2,1 | CHI05-03-04-DH-1530 | Finishes and Signage - COLO3 Cell 4 - DH | Not Started | 77 |
| CHI05-PH2-FIT-BL-D5,3,3,1,2,4,1 | CHI05-03-04-L1-1620 | Interior - L1 UPS - COLO3 Cell 4 | Not Started | 52 |
| CHI05-PH2-FIT-BL-D5,3,3,1,2,4,1 | CHI05-03-04-L1-1630 | Interior - L1 MSB - COLO3 Cell 4 | Not Started | 55 |
| CHI05-PH2-FIT-BL-D5,3,3,1,2,4,1 | CHI05-03-04-L1-1640 | Interior - L1 PDUs - COLO3 Cell 4 | Not Started | 46 |
| CHI05-PH2-FIT-BL-D5,3,3,1,2,4,1 | CHI05-03-04-L1-1650 | Interior - L1 AHUs - COLO3 Cell 4 | Not Started | 63 |
| CHI05-PH2-FIT-BL-D5,3,3,1,2,4,1 | CHI05-03-04-L1-1660 | Interior - L1 ATSs - COLO3 Cell 4 | Not Started | 68 |
| CHI05-PH2-FIT-BL-D5,3,3,1,2,4,1 | CHI05-03-04-L1-1670 | Interior - L1 Busway - COLO3 Cell 4 | Not Started | 59 |
| CHI05-PH2-FIT-BL-D5,3,3,1,2,4,1 | CHI05-03-04-L1-1730 | Interior - L1 ADP - COLO3 Cell 4 | Not Started | 64 |
| CHI05-PH2-FIT-BL-D5,3,3,1,2,4,2 | CHI05-03-04-L2-1740 | Interior - L2 UPS - COLO3 Cell 4 | Not Started | 43 |
| CHI05-PH2-FIT-BL-D5,3,3,1,2,4,2 | CHI05-03-04-L2-1750 | Interior - L2 MSB - COLO3 Cell 4 | Not Started | 43 |
| CHI05-PH2-FIT-BL-D5,3,3,1,2,4,2 | CHI05-03-04-L2-1760 | Interior - L2 PDUs - COLO3 Cell 4 | Not Started | 17 |
| CHI05-PH2-FIT-BL-D5,3,3,1,2,4,2 | CHI05-03-04-L2-1770 | Interior - L2 AHUs - COLO3 Cell 4 | Not Started | 26 |
| CHI05-PH2-FIT-BL-D5,3,3,1,2,4,2 | CHI05-03-04-L2-1780 | Interior - L2 ATSs - COLO3 Cell 4 | Not Started | 48 |
| CHI05-PH2-FIT-BL-D5,3,3,1,2,4,2 | CHI05-03-04-L2-1790 | Interior - L2 Busway - COLO3 Cell 4 | Not Started | 26 |
| CHI05-PH2-FIT-BL-D5,3,3,1,2,4,2 | CHI05-03-04-L2-1850 | Interior - L2 ADP - COLO3 Cell 4 | Not Started | 48 |
| CHI05-PH2-FIT-BL-D5,3,3,1,2,4,3 | CHI05-03-04-L3-1860 | Interior - L3 UPS - COLO3 Cell 4 | Not Started | 27 |
| CHI05-PH2-FIT-BL-D5,3,3,1,2,4,3 | CHI05-03-04-L3-1870 | Interior - L3 MSB - COLO3 Cell 4 | Not Started | 27 |
| CHI05-PH2-FIT-BL-D5,3,3,1,2,4,3 | CHI05-03-04-L3-1880 | Interior - L3 PDUs - COLO3 Cell 4 | Not Started | 17 |
| CHI05-PH2-FIT-BL-D5,3,3,1,2,4,3 | CHI05-03-04-L3-1890 | Interior - L3 AHUs - COLO3 Cell 4 | Not Started | 17 |
| CHI05-PH2-FIT-BL-D5,3,3,1,2,4,3 | CHI05-03-04-L3-1900 | Interior - L3 ATSs - COLO3 Cell 4 | Not Started | 17 |
| CHI05-PH2-FIT-BL-D5,3,3,1,2,4,3 | CHI05-03-04-L3-1910 | Interior - L3 Busway - COLO3 Cell 4 | Not Started | 17 |
| CHI05-PH2-FIT-BL-D5,3,3,1,2,4,3 | CHI05-03-04-L3-1970 | Interior - L3 ADP - COLO3 Cell 4 | Not Started | 17 |
| CHI05-PH2-FIT-BL-D5,3,3,1,5,1 | CHI05-03-04-L4-1000 | Cx LEV4 - COLO3 | Not Started | 17 |
| CHI05-PH2-FIT-BL-D5,3,3,1,5,2 | CHI05-03-04-L5-1000 | Cx LEV5 / IST - COLO3 | Not Started | 17 |
| CHI05-PH2-FIT-BL-D5,3,3,2,6,2 | CHI05-04-01-MG-1220 | Install Dampers and actuators at Louvers - Upper level (RED) - COLO4 Cell 1 - MG | Not Started | 4 |
| CHI05-PH2-FIT-BL-D5,3,3,2,6,2 | CHI05-04-01-MG-1230 | Install Dampers and actuators at Louvers - Lower level (OA) - COLO4 Cell 1 - MG | Not Started | 4 |
| CHI05-PH2-FIT-BL-D5,3,3,2,6,2 | CHI05-04-01-MG-1240 | Overhead MEP Installation - COLO4 Cell 1 - MG | Not Started | 4 |
| CHI05-PH2-FIT-BL-D5,3,3,2,6,2 | CHI05-04-01-MG-1250 | Deliver AHU into Mech. Gallery - COLO4 Cell 1 - MG | Not Started | 4 |
| CHI05-PH2-FIT-BL-D5,3,3,2,6,2 | CHI05-04-01-MG-1260 | Install Walls and Primer Paint - COLO4 Cell 1 - MG | Not Started | 4 |
| CHI05-PH2-FIT-BL-D5,3,3,2,6,2 | CHI05-04-01-MG-1270 | Placing the AHU - COLO4 Cell 1 - MG | Not Started | 58 |
| CHI05-PH2-FIT-BL-D5,3,3,2,6,2 | CHI05-04-01-MG-1280 | Layout Ceiling and install Pencile Rod - COLO4 Cell 1 - MG | Not Started | 62 |
| CHI05-PH2-FIT-BL-D5,3,3,2,6,2 | CHI05-04-01-MG-1290 | Piping and Electrical Termination to AHUs - COLO4 Cell 1 - MG | Not Started | 58 |
| CHI05-PH2-FIT-BL-D5,3,3,2,6,2 | CHI05-04-01-MG-1300 | Pipe Testing - COLO4 Cell 1 - MG | Not Started | 64 |
| CHI05-PH2-FIT-BL-D5,3,3,2,6,2 | CHI05-04-01-MG-1310 | Install ceiling and Light Fittings - COLO4 Cell 1 - MG | Not Started | 64 |
| CHI05-PH2-FIT-BL-D5,3,3,2,6,2 | CHI05-04-01-MG-1320 | Trim out MEP - COLO4 Cell 1 - MG | Not Started | 73 |
| CHI05-PH2-FIT-BL-D5,3,3,2,6,2 | CHI05-04-01-MG-1265 | Post Wall Overhead MEP - COLO4 Cell 1 - MG | Not Started | 58 |
| CHI05-PH2-FIT-BL-D5,3,3,2,6,5 | CHI05-04-01-ER-1220 | Install Walls and Primer Paint - COLO4 Cell 1 - ER | Not Started | 0 |
| CHI05-PH2-FIT-BL-D5,3,3,2,6,5 | CHI05-04-01-ER-1230 | Sprinklers and Overhead MEP (Above Ceiling) - COLO4 Cell 1 - ER | Not Started | 2 |
| CHI05-PH2-FIT-BL-D5,3,3,2,6,5 | CHI05-04-01-ER-1240 | Install Upper Screens - COLO4 Cell 1 - ER | Not Started | 2 |
| CHI05-PH2-FIT-BL-D5,3,3,2,6,5 | CHI05-04-01-ER-1250 | Install Ceiling - COLO4 Cell 1 - ER | Not Started | 2 |
| CHI05-PH2-FIT-BL-D5,3,3,2,6,5 | CHI05-04-01-ER-1260 | Below Ceiling MEP Rough In - COLO4 Cell 1 - ER | Not Started | 2 |
| CHI05-PH2-FIT-BL-D5,3,3,2,6,5 | CHI05-04-01-ER-1270 | Installation of ADP & ATS - COLO4 Cell 1 - ER | Not Started | 36 |
| CHI05-PH2-FIT-BL-D5,3,3,2,6,5 | CHI05-04-01-ER-1280 | Installation of UPS Equipment - COLO4 Cell 1 - ER | Not Started | 17 |
| CHI05-PH2-FIT-BL-D5,3,3,2,6,5 | CHI05-04-01-ER-1290 | Connet to Cable tray and conduit equipment - COLO4 Cell 1 - ER | Not Started | 57 |
| CHI05-PH2-FIT-BL-D5,3,3,2,6,5 | CHI05-04-01-ER-1300 | Cable Pulling at Elec. Equipment - COLO4 Cell 1 - ER | Not Started | 57 |
| CHI05-PH2-FIT-BL-D5,3,3,2,6,5 | CHI05-04-01-ER-1310 | Door Frame Installation - COLO4 Cell 1 - ER | Not Started | 32 |
| CHI05-PH2-FIT-BL-D5,3,3,2,6,5 | CHI05-04-01-ER-1320 | Finishes and Signage - COLO4 Cell 1 - ER | Not Started | 85 |
| CHI05-PH2-FIT-BL-D5,3,3,2,6,5 | CHI05-04-01-ER-1285 | Installation of MSB - COLO4 Cell 1 - ER | Not Started | 36 |
| CHI05-PH2-FIT-BL-D5,3,3,2,6,1 | CHI05-04-01-DH-1210 | Cable Pulling at PDU & Busway - COLO4 Cell 1 - DH | Not Started | 2 |
| CHI05-PH2-FIT-BL-D5,3,3,2,6,1 | CHI05-04-01-DH-1220 | Overhead MEP and Hangers (Above Ceiling) - COLO4 Cell 1 - DH | Not Started | 3 |
| CHI05-PH2-FIT-BL-D5,3,3,2,6,1 | CHI05-04-01-DH-1230 | HAC install and Rise - COLO4 Cell 1 - DH | Not Started | 40 |
| CHI05-PH2-FIT-BL-D5,3,3,2,6,1 | CHI05-04-01-DH-1240 | Termination at PDU & Busway- COLO4 Cell 1 - DH | Not Started | 7 |
| CHI05-PH2-FIT-BL-D5,3,3,2,6,1 | CHI05-04-01-DH-1250 | Security Screen Installation - COLO4 Cell 1 - DH | Not Started | 2 |
| CHI05-PH2-FIT-BL-D5,3,3,2,6,1 | CHI05-04-01-DH-1260 | Ceiling Grid and Tile - COLO4 Cell 1 - DH | Not Started | 2 |
| CHI05-PH2-FIT-BL-D5,3,3,2,6,1 | CHI05-04-01-DH-1270 | Install PDU's - COLO4 Cell 1 - DH | Not Started | 2 |
| CHI05-PH2-FIT-BL-D5,3,3,2,6,1 | CHI05-04-01-DH-1280 | Overhead MEP Installation (Below Ceiling) - COLO4 Cell 1 - DH | Not Started | 2 |

| activity_code | activity_id | activity_name | activity_status | total_float |
| --- | --- | --- | --- | --- |
| CHI05-PH2-FIT-BL-D5,3,3,2,6,1 | CHI05-04-01-DH-1290 | Install Low Voltage Wiring and Fiber Optic - COLO4 Cell 1 - DH | Not Started | 40 |
| CHI05-PH2-FIT-BL-D5,3,3,2,6,1 | CHI05-04-01-DH-1300 | HAC Placing - COLO4 Cell 1 - DH | Not Started | 40 |
| CHI05-PH2-FIT-BL-D5,3,3,2,6,1 | CHI05-04-01-DH-1310 | Finishes and Signage - COLO4 Cell 1 - DH | Not Started | 81 |
| CHI05-PH2-FIT-BL-D5,3,3,2,6,4,1 | CHI05-04-01-L1-1380 | Interior - L1 UPS - COLO4 Cell 1 | Not Started | 46 |
| CHI05-PH2-FIT-BL-D5,3,3,2,6,4,1 | CHI05-04-01-L1-1390 | Interior - L1 MSB - COLO4 Cell 1 | Not Started | 63 |
| CHI05-PH2-FIT-BL-D5,3,3,2,6,4,1 | CHI05-04-01-L1-1400 | Interior - L1 PDUs - COLO4 Cell 1 | Not Started | 67 |
| CHI05-PH2-FIT-BL-D5,3,3,2,6,4,1 | CHI05-04-01-L1-1410 | Interior - L1 AHUs - COLO4 Cell 1 | Not Started | 75 |
| CHI05-PH2-FIT-BL-D5,3,3,2,6,4,1 | CHI05-04-01-L1-1420 | Interior - L1 ATSs - COLO4 Cell 1 | Not Started | 71 |
| CHI05-PH2-FIT-BL-D5,3,3,2,6,4,1 | CHI05-04-01-L1-1430 | Interior - L1 Busway - COLO4 Cell 1 | Not Started | 71 |
| CHI05-PH2-FIT-BL-D5,3,3,2,6,4,1 | CHI05-04-01-L1-1490 | Interior - L1 ADP - COLO4 Cell 1 | Not Started | 67 |
| CHI05-PH2-FIT-BL-D5,3,3,2,6,4,2 | CHI05-04-01-L2-1500 | Interior - L2 UPS - COLO4 Cell 1 | Not Started | 57 |
| CHI05-PH2-FIT-BL-D5,3,3,2,6,4,2 | CHI05-04-01-L2-1510 | Interior - L2 MSB - COLO4 Cell 1 | Not Started | 57 |
| CHI05-PH2-FIT-BL-D5,3,3,2,6,4,2 | CHI05-04-01-L2-1520 | Interior - L2 PDUs - COLO4 Cell 1 | Not Started | 55 |
| CHI05-PH2-FIT-BL-D5,3,3,2,6,4,2 | CHI05-04-01-L2-1530 | Interior - L2 AHUs - COLO4 Cell 1 | Not Started | 55 |
| CHI05-PH2-FIT-BL-D5,3,3,2,6,4,2 | CHI05-04-01-L2-1540 | Interior - L2 ATSs - COLO4 Cell 1 | Not Started | 57 |
| CHI05-PH2-FIT-BL-D5,3,3,2,6,4,2 | CHI05-04-01-L2-1550 | Interior - L2 Busway - COLO4 Cell 1 | Not Started | 55 |
| CHI05-PH2-FIT-BL-D5,3,3,2,6,4,2 | CHI05-04-01-L2-1610 | Interior - L2 ADP - COLO4 Cell 1 | Not Started | 57 |
| CHI05-PH2-FIT-BL-D5,3,3,2,6,4,3 | CHI05-04-01-L3-1620 | Interior - L3 UPS - COLO4 Cell 1 | Not Started | 8 |
| CHI05-PH2-FIT-BL-D5,3,3,2,6,4,3 | CHI05-04-01-L3-1630 | Interior - L3 MSB - COLO4 Cell 1 | Not Started | 8 |
| CHI05-PH2-FIT-BL-D5,3,3,2,6,4,3 | CHI05-04-01-L3-1640 | Interior - L3 PDUs - COLO4 Cell 1 | Not Started | 8 |
| CHI05-PH2-FIT-BL-D5,3,3,2,6,4,3 | CHI05-04-01-L3-1650 | Interior - L3 AHUs - COLO4 Cell 1 | Not Started | 8 |
| CHI05-PH2-FIT-BL-D5,3,3,2,6,4,3 | CHI05-04-01-L3-1660 | Interior - L3 ATSs - COLO4 Cell 1 | Not Started | 8 |
| CHI05-PH2-FIT-BL-D5,3,3,2,6,4,3 | CHI05-04-01-L3-1670 | Interior - L3 Busway - COLO4 Cell 1 | Not Started | 8 |
| CHI05-PH2-FIT-BL-D5,3,3,2,6,4,3 | CHI05-04-01-L3-1730 | Interior - L3 ADP - COLO4 Cell 1 | Not Started | 8 |
| CHI05-PH2-FIT-BL-D5,3,3,2,1,2 | CHI05-04-02-MG-1330 | Install Dampers and actuators at Louvers - Upper level (RED) - COLO4 Cell 2 - MG | Not Started | 13 |
| CHI05-PH2-FIT-BL-D5,3,3,2,1,2 | CHI05-04-02-MG-1340 | Install Dampers and actuators at Louvers - Lower level (OA) - COLO4 Cell 2 - MG | Not Started | 13 |
| CHI05-PH2-FIT-BL-D5,3,3,2,1,2 | CHI05-04-02-MG-1350 | Overhead MEP Installation - COLO4 Cell 2 - MG | Not Started | 9 |
| CHI05-PH2-FIT-BL-D5,3,3,2,1,2 | CHI05-04-02-MG-1360 | Deliver AHU into Mech. Gallery - COLO4 Cell 2 - MG | Not Started | 9 |
| CHI05-PH2-FIT-BL-D5,3,3,2,1,2 | CHI05-04-02-MG-1370 | Install Walls and Primer Paint - COLO4 Cell 2 - MG | Not Started | 9 |
| CHI05-PH2-FIT-BL-D5,3,3,2,1,2 | CHI05-04-02-MG-1380 | Placing the AHU - COLO4 Cell 2 - MG | Not Started | 56 |
| CHI05-PH2-FIT-BL-D5,3,3,2,1,2 | CHI05-04-02-MG-1390 | Layout Ceiling and install Pencile Rod - COLO4 Cell 2 - MG | Not Started | 60 |
| CHI05-PH2-FIT-BL-D5,3,3,2,1,2 | CHI05-04-02-MG-1400 | Piping and Electrical Termination to AHUs - COLO4 Cell 2 - MG | Not Started | 58 |
| CHI05-PH2-FIT-BL-D5,3,3,2,1,2 | CHI05-04-02-MG-1410 | Pipe Testing - COLO4 Cell 2 - MG | Not Started | 62 |
| CHI05-PH2-FIT-BL-D5,3,3,2,1,2 | CHI05-04-02-MG-1420 | Install ceiling and Light Fittings - COLO4 Cell 2 - MG | Not Started | 62 |
| CHI05-PH2-FIT-BL-D5,3,3,2,1,2 | CHI05-04-02-MG-1430 | Trim out MEP - COLO4 Cell 2 - MG | Not Started | 68 |
| CHI05-PH2-FIT-BL-D5,3,3,2,1,2 | CHI05-04-02-MG-1375 | Post Wall Overhead MEP - COLO4 Cell 2 - MG | Not Started | 56 |
| CHI05-PH2-FIT-BL-D5,3,3,2,1,5 | CHI05-04-02-ER-1330 | Install Walls and Primer Paint - COLO4 Cell 2 - ER | Not Started | 0 |
| CHI05-PH2-FIT-BL-D5,3,3,2,1,5 | CHI05-04-02-ER-1340 | Sprinklers and Overhead MEP (Above Ceiling) - COLO4 Cell 2 - ER | Not Started | 0 |
| CHI05-PH2-FIT-BL-D5,3,3,2,1,5 | CHI05-04-02-ER-1350 | Install Upper Screens - COLO4 Cell 2 - ER | Not Started | 0 |
| CHI05-PH2-FIT-BL-D5,3,3,2,1,5 | CHI05-04-02-ER-1360 | Install Ceiling - COLO4 Cell 2 - ER | Not Started | 0 |
| CHI05-PH2-FIT-BL-D5,3,3,2,1,5 | CHI05-04-02-ER-1370 | Below Ceiling MEP Rough In - COLO4 Cell 2 - ER | Not Started | 0 |
| CHI05-PH2-FIT-BL-D5,3,3,2,1,5 | CHI05-04-02-ER-1380 | Installation of ADP & ATS - COLO4 Cell 2 - ER | Not Started | 29 |
| CHI05-PH2-FIT-BL-D5,3,3,2,1,5 | CHI05-04-02-ER-1390 | Installation of UPS Equipment - COLO4 Cell 2 - ER | Not Started | 10 |
| CHI05-PH2-FIT-BL-D5,3,3,2,1,5 | CHI05-04-02-ER-1400 | Connet to Cable tray and conduit equipment - COLO4 Cell 2 - ER | Not Started | 60 |
| CHI05-PH2-FIT-BL-D5,3,3,2,1,5 | CHI05-04-02-ER-1410 | Cable Pulling at Elec. Equipment - COLO4 Cell 2 - ER | Not Started | 57 |
| CHI05-PH2-FIT-BL-D5,3,3,2,1,5 | CHI05-04-02-ER-1420 | Door Frame Installation - COLO4 Cell 2 - ER | Not Started | 48 |
| CHI05-PH2-FIT-BL-D5,3,3,2,1,5 | CHI05-04-02-ER-1430 | Finishes and Signage - COLO4 Cell 2 - ER | Not Started | 75 |
| CHI05-PH2-FIT-BL-D5,3,3,2,1,5 | CHI05-04-02-ER-1385 | Installation of MSB - COLO4 Cell 2 - ER | Not Started | 29 |
| CHI05-PH2-FIT-BL-D5,3,3,2,1,1 | CHI05-04-02-DH-1320 | Termination at PDU & Busway - COLO4 Cell 2 - DH | Not Started | 2 |
| CHI05-PH2-FIT-BL-D5,3,3,2,1,1 | CHI05-04-02-DH-1330 | Overhead MEP and Hangers (Above Ceiling) - COLO4 Cell 2 - DH | Not Started | 6 |
| CHI05-PH2-FIT-BL-D5,3,3,2,1,1 | CHI05-04-02-DH-1340 | HAC install and Rise - COLO4 Cell 2 - DH | Not Started | 38 |
| CHI05-PH2-FIT-BL-D5,3,3,2,1,1 | CHI05-04-02-DH-1350 | Cable Pulling at PDU & Busway- COLO4 Cell 2 - DH | Not Started | 10 |
| CHI05-PH2-FIT-BL-D5,3,3,2,1,1 | CHI05-04-02-DH-1360 | Security Screen Installation - COLO4 Cell 2 - DH | Not Started | 5 |
| CHI05-PH2-FIT-BL-D5,3,3,2,1,1 | CHI05-04-02-DH-1370 | Ceiling Grid and Tile - COLO4 Cell 2 - DH | Not Started | 5 |
| CHI05-PH2-FIT-BL-D5,3,3,2,1,1 | CHI05-04-02-DH-1380 | Install PDU's - COLO4 Cell 2 - DH | Not Started | 5 |
| CHI05-PH2-FIT-BL-D5,3,3,2,1,1 | CHI05-04-02-DH-1390 | Overhead MEP Installation (Below Ceiling) - COLO4 Cell 2 - DH | Not Started | 5 |
| CHI05-PH2-FIT-BL-D5,3,3,2,1,1 | CHI05-04-02-DH-1400 | Install Low Voltage Wiring and Fiber Optic - COLO4 Cell 2 - DH | Not Started | 38 |
| CHI05-PH2-FIT-BL-D5,3,3,2,1,1 | CHI05-04-02-DH-1410 | HAC Placing - COLO4 Cell 2 - DH | Not Started | 35 |
| CHI05-PH2-FIT-BL-D5,3,3,2,1,1 | CHI05-04-02-DH-1420 | Finishes and Signage - COLO4 Cell 2 - DH | Not Started | 74 |
| CHI05-PH2-FIT-BL-D5,3,3,2,1,4,1 | CHI05-04-02-L1-1500 | Interior - L1 UPS - COLO4 Cell 2 | Not Started | 35 |
| CHI05-PH2-FIT-BL-D5,3,3,2,1,4,1 | CHI05-04-02-L1-1510 | Interior - L1 MSB - COLO4 Cell 2 | Not Started | 45 |
| CHI05-PH2-FIT-BL-D5,3,3,2,1,4,1 | CHI05-04-02-L1-1520 | Interior - L1 PDUs - COLO4 Cell 2 | Not Started | 55 |
| CHI05-PH2-FIT-BL-D5,3,3,2,1,4,1 | CHI05-04-02-L1-1530 | Interior - L1 AHUs - COLO4 Cell 2 | Not Started | 63 |
| CHI05-PH2-FIT-BL-D5,3,3,2,1,4,1 | CHI05-04-02-L1-1540 | Interior - L1 ATSs - COLO4 Cell 2 | Not Started | 59 |
| CHI05-PH2-FIT-BL-D5,3,3,2,1,4,1 | CHI05-04-02-L1-1550 | Interior - L1 Busway - COLO4 Cell 2 | Not Started | 59 |
| CHI05-PH2-FIT-BL-D5,3,3,2,1,4,1 | CHI05-04-02-L1-1610 | Interior - L1 ADP - COLO4 Cell 2 | Not Started | 45 |
| CHI05-PH2-FIT-BL-D5,3,3,2,1,4,2 | CHI05-04-02-L2-1620 | Interior - L2 UPS - COLO4 Cell 2 | Not Started | 45 |
| CHI05-PH2-FIT-BL-D5,3,3,2,1,4,2 | CHI05-04-02-L2-1630 | Interior - L2 MSB - COLO4 Cell 2 | Not Started | 45 |
| CHI05-PH2-FIT-BL-D5,3,3,2,1,4,2 | CHI05-04-02-L2-1640 | Interior - L2 PDUs - COLO4 Cell 2 | Not Started | 40 |
| CHI05-PH2-FIT-BL-D5,3,3,2,1,4,2 | CHI05-04-02-L2-1650 | Interior - L2 AHUs - COLO4 Cell 2 | Not Started | 40 |

| activity_code | activity_id | activity_name | activity_status | total_float |
| --- | --- | --- | --- | --- |
| CHI05-PH2-FIT-BL-D5,3,3,2,1,4,2 | CHI05-04-02-L2-1660 | Interior - L2 ATSs - COLO4 Cell 2 | Not Started | 45 |
| CHI05-PH2-FIT-BL-D5,3,3,2,1,4,2 | CHI05-04-02-L2-1670 | Interior - L2 Busway - COLO4 Cell 2 | Not Started | 40 |
| CHI05-PH2-FIT-BL-D5,3,3,2,1,4,2 | CHI05-04-02-L2-1730 | Interior - L2 ADP - COLO4 Cell 2 | Not Started | 45 |
| CHI05-PH2-FIT-BL-D5,3,3,2,1,4,3 | CHI05-04-02-L3-1740 | Interior - L3 UPS - COLO4 Cell 2 | Not Started | 48 |
| CHI05-PH2-FIT-BL-D5,3,3,2,1,4,3 | CHI05-04-02-L3-1750 | Interior - L3 MSB - COLO4 Cell 2 | Not Started | 13 |
| CHI05-PH2-FIT-BL-D5,3,3,2,1,4,3 | CHI05-04-02-L3-1760 | Interior - L3 PDUs - COLO4 Cell 2 | Not Started | 18 |
| CHI05-PH2-FIT-BL-D5,3,3,2,1,4,3 | CHI05-04-02-L3-1770 | Interior - L3 AHUs - COLO4 Cell 2 | Not Started | 13 |
| CHI05-PH2-FIT-BL-D5,3,3,2,1,4,3 | CHI05-04-02-L3-1780 | Interior - L3 ATSs - COLO4 Cell 2 | Not Started | 13 |
| CHI05-PH2-FIT-BL-D5,3,3,2,1,4,3 | CHI05-04-02-L3-1790 | Interior - L3 Busway - COLO4 Cell 2 | Not Started | 13 |
| CHI05-PH2-FIT-BL-D5,3,3,2,1,4,3 | CHI05-04-02-L3-1850 | Interior - L3 ADP - COLO4 Cell 2 | Not Started | 13 |
| CHI05-PH2-FIT-BL-D5,3,3,2,3,2 | CHI05-04-03-MG-1440 | Install Dampers and actuators at Louvers - Upper level (RED) - COLO4 Cell 3 - MG | Not Started | 23 |
| CHI05-PH2-FIT-BL-D5,3,3,2,3,2 | CHI05-04-03-MG-1450 | Install Dampers and actuators at Louvers - Lower level (OA) - COLO4 Cell 3 - MG | Not Started | 23 |
| CHI05-PH2-FIT-BL-D5,3,3,2,3,2 | CHI05-04-03-MG-1460 | Overhead MEP Installation - COLO4 Cell 3 - MG | Not Started | 14 |
| CHI05-PH2-FIT-BL-D5,3,3,2,3,2 | CHI05-04-03-MG-1470 | Deliver AHU into Mech. Gallery - COLO4 Cell 3 - MG | Not Started | 14 |
| CHI05-PH2-FIT-BL-D5,3,3,2,3,2 | CHI05-04-03-MG-1480 | Install Walls and Primer Paint - COLO4 Cell 3 - MG | Not Started | 14 |
| CHI05-PH2-FIT-BL-D5,3,3,2,3,2 | CHI05-04-03-MG-1490 | Placing the AHU - COLO4 Cell 3 - MG | Not Started | 49 |
| CHI05-PH2-FIT-BL-D5,3,3,2,3,2 | CHI05-04-03-MG-1500 | Layout Ceiling and install Pencile Rod - COLO4 Cell 3 - MG | Not Started | 53 |
| CHI05-PH2-FIT-BL-D5,3,3,2,3,2 | CHI05-04-03-MG-1510 | Piping and Electrical Termination to AHUs - COLO4 Cell 3 - MG | Not Started | 58 |
| CHI05-PH2-FIT-BL-D5,3,3,2,3,2 | CHI05-04-03-MG-1520 | Pipe Testing - COLO4 Cell 3 - MG | Not Started | 60 |
| CHI05-PH2-FIT-BL-D5,3,3,2,3,2 | CHI05-04-03-MG-1530 | Install ceiling and Light Fittings - COLO4 Cell 3 - MG | Not Started | 60 |
| CHI05-PH2-FIT-BL-D5,3,3,2,3,2 | CHI05-04-03-MG-1540 | Trim out MEP - COLO4 Cell 3 - MG | Not Started | 63 |
| CHI05-PH2-FIT-BL-D5,3,3,2,3,2 | CHI05-04-03-MG-1485 | Post Wall Overhead MEP - COLO4 Cell 3 - MG | Not Started | 49 |
| CHI05-PH2-FIT-BL-D5,3,3,2,3,5 | CHI05-04-03-ER-1440 | Install Walls and Primer Paint - COLO4 Cell 3 - ER | Not Started | 0 |
| CHI05-PH2-FIT-BL-D5,3,3,2,3,5 | CHI05-04-03-ER-1450 | Sprinklers and Overhead MEP (Above Ceiling) - COLO4 Cell 3 - ER | Not Started | 0 |
| CHI05-PH2-FIT-BL-D5,3,3,2,3,5 | CHI05-04-03-ER-1460 | Install Upper Screens - COLO4 Cell 3 - ER | Not Started | 0 |
| CHI05-PH2-FIT-BL-D5,3,3,2,3,5 | CHI05-04-03-ER-1470 | Install Ceiling - COLO4 Cell 3 - ER | Not Started | 0 |
| CHI05-PH2-FIT-BL-D5,3,3,2,3,5 | CHI05-04-03-ER-1480 | Below Ceiling MEP Rough In - COLO4 Cell 3 - ER | Not Started | 0 |
| CHI05-PH2-FIT-BL-D5,3,3,2,3,5 | CHI05-04-03-ER-1490 | Installation of ADP & ATS - COLO4 Cell 3 - ER | Not Started | 24 |
| CHI05-PH2-FIT-BL-D5,3,3,2,3,5 | CHI05-04-03-ER-1500 | Installation of UPS Equipment - COLO4 Cell 3 - ER | Not Started | 5 |
| CHI05-PH2-FIT-BL-D5,3,3,2,3,5 | CHI05-04-03-ER-1510 | Connet to Cable tray and conduit equipment - COLO4 Cell 3 - ER | Not Started | 65 |
| CHI05-PH2-FIT-BL-D5,3,3,2,3,5 | CHI05-04-03-ER-1520 | Cable Pulling at Elec. Equipment - COLO4 Cell 3 - ER | Not Started | 57 |
| CHI05-PH2-FIT-BL-D5,3,3,2,3,5 | CHI05-04-03-ER-1530 | Door Frame Installation - COLO4 Cell 3 - ER | Not Started | 10 |
| CHI05-PH2-FIT-BL-D5,3,3,2,3,5 | CHI05-04-03-ER-1540 | Finishes and Signage - COLO4 Cell 3 - ER | Not Started | 65 |
| CHI05-PH2-FIT-BL-D5,3,3,2,3,5 | CHI05-04-03-ER-1495 | Installation of MSB - COLO4 Cell 3 - ER | Not Started | 24 |
| CHI05-PH2-FIT-BL-D5,3,3,2,3,1 | CHI05-04-03-DH-1430 | Termination at PDU & Busway - COLO4 Cell 3 - DH | Not Started | 2 |
| CHI05-PH2-FIT-BL-D5,3,3,2,3,1 | CHI05-04-03-DH-1440 | Overhead MEP and Hangers (Above Ceiling) - COLO4 Cell 3 - DH | Not Started | 9 |
| CHI05-PH2-FIT-BL-D5,3,3,2,3,1 | CHI05-04-03-DH-1450 | HAC install and Rise - COLO4 Cell 3 - DH | Not Started | 37 |
| CHI05-PH2-FIT-BL-D5,3,3,2,3,1 | CHI05-04-03-DH-1460 | Cable Pulling at PDU & Busway- COLO4 Cell 3 - DH | Not Started | 14 |
| CHI05-PH2-FIT-BL-D5,3,3,2,3,1 | CHI05-04-03-DH-1470 | Security Screen Installation - COLO4 Cell 3 - DH | Not Started | 10 |
| CHI05-PH2-FIT-BL-D5,3,3,2,3,1 | CHI05-04-03-DH-1480 | Ceiling Grid and Tile - COLO4 Cell 3 - DH | Not Started | 9 |
| CHI05-PH2-FIT-BL-D5,3,3,2,3,1 | CHI05-04-03-DH-1490 | Install PDU's - COLO4 Cell 3 - DH | Not Started | 9 |
| CHI05-PH2-FIT-BL-D5,3,3,2,3,1 | CHI05-04-03-DH-1500 | Overhead MEP Installation (Below Ceiling) - COLO4 Cell 3 - DH | Not Started | 9 |
| CHI05-PH2-FIT-BL-D5,3,3,2,3,1 | CHI05-04-03-DH-1510 | Install Low Voltage Wiring and Fiber Optic - COLO4 Cell 3 - DH | Not Started | 37 |
| CHI05-PH2-FIT-BL-D5,3,3,2,3,1 | CHI05-04-03-DH-1520 | HAC Placing - COLO4 Cell 3 - DH | Not Started | 29 |
| CHI05-PH2-FIT-BL-D5,3,3,2,3,1 | CHI05-04-03-DH-1530 | Finishes and Signage - COLO4 Cell 3 - DH | Not Started | 66 |
| CHI05-PH2-FIT-BL-D5,3,3,2,3,4,1 | CHI05-04-03-L1-1620 | Interior - L1 UPS - COLO4 Cell 3 | Not Started | 26 |
| CHI05-PH2-FIT-BL-D5,3,3,2,3,4,1 | CHI05-04-03-L1-1630 | Interior - L1 MSB - COLO4 Cell 3 | Not Started | 33 |
| CHI05-PH2-FIT-BL-D5,3,3,2,3,4,1 | CHI05-04-03-L1-1640 | Interior - L1 PDUs - COLO4 Cell 3 | Not Started | 33 |
| CHI05-PH2-FIT-BL-D5,3,3,2,3,4,1 | CHI05-04-03-L1-1650 | Interior - L1 AHUs - COLO4 Cell 3 | Not Started | 33 |
| CHI05-PH2-FIT-BL-D5,3,3,2,3,4,1 | CHI05-04-03-L1-1660 | Interior - L1 ATSs - COLO4 Cell 3 | Not Started | 33 |
| CHI05-PH2-FIT-BL-D5,3,3,2,3,4,1 | CHI05-04-03-L1-1670 | Interior - L1 Busway - COLO4 Cell 3 | Not Started | 33 |
| CHI05-PH2-FIT-BL-D5,3,3,2,3,4,1 | CHI05-04-03-L1-1730 | Interior - L1 ADP - COLO4 Cell 3 | Not Started | 33 |
| CHI05-PH2-FIT-BL-D5,3,3,2,3,4,2 | CHI05-04-03-L2-1740 | Interior - L2 UPS - COLO4 Cell 3 | Not Started | 33 |
| CHI05-PH2-FIT-BL-D5,3,3,2,3,4,2 | CHI05-04-03-L2-1750 | Interior - L2 MSB - COLO4 Cell 3 | Not Started | 33 |
| CHI05-PH2-FIT-BL-D5,3,3,2,3,4,2 | CHI05-04-03-L2-1760 | Interior - L2 PDUs - COLO4 Cell 3 | Not Started | 25 |
| CHI05-PH2-FIT-BL-D5,3,3,2,3,4,2 | CHI05-04-03-L2-1770 | Interior - L2 AHUs - COLO4 Cell 3 | Not Started | 25 |
| CHI05-PH2-FIT-BL-D5,3,3,2,3,4,2 | CHI05-04-03-L2-1780 | Interior - L2 ATSs - COLO4 Cell 3 | Not Started | 33 |
| CHI05-PH2-FIT-BL-D5,3,3,2,3,4,2 | CHI05-04-03-L2-1790 | Interior - L2 Busway - COLO4 Cell 3 | Not Started | 25 |
| CHI05-PH2-FIT-BL-D5,3,3,2,3,4,2 | CHI05-04-03-L2-1850 | Interior - L2 ADP - COLO4 Cell 3 | Not Started | 33 |
| CHI05-PH2-FIT-BL-D5,3,3,2,3,4,3 | CHI05-04-03-L3-1860 | Interior - L3 UPS - COLO4 Cell 3 | Not Started | 38 |
| CHI05-PH2-FIT-BL-D5,3,3,2,3,4,3 | CHI05-04-03-L3-1870 | Interior - L3 MSB - COLO4 Cell 3 | Not Started | 13 |
| CHI05-PH2-FIT-BL-D5,3,3,2,3,4,3 | CHI05-04-03-L3-1880 | Interior - L3 PDUs - COLO4 Cell 3 | Not Started | 18 |
| CHI05-PH2-FIT-BL-D5,3,3,2,3,4,3 | CHI05-04-03-L3-1890 | Interior - L3 AHUs - COLO4 Cell 3 | Not Started | 13 |
| CHI05-PH2-FIT-BL-D5,3,3,2,3,4,3 | CHI05-04-03-L3-1900 | Interior - L3 ATSs - COLO4 Cell 3 | Not Started | 13 |
| CHI05-PH2-FIT-BL-D5,3,3,2,3,4,3 | CHI05-04-03-L3-1910 | Interior - L3 Busway - COLO4 Cell 3 | Not Started | 13 |
| CHI05-PH2-FIT-BL-D5,3,3,2,3,4,3 | CHI05-04-03-L3-1970 | Interior - L3 ADP - COLO4 Cell 3 | Not Started | 13 |
| CHI05-PH2-FIT-BL-D5,3,3,2,2,2 | CHI05-04-04-MG-1550 | Install Dampers and actuators at Louvers - Upper level (RED) - COLO4 Cell 4 - MG | Not Started | 33 |
| CHI05-PH2-FIT-BL-D5,3,3,2,2,2 | CHI05-04-04-MG-1560 | Install Dampers and actuators at Louvers - Lower level (OA) - COLO4 Cell 4 - MG | Not Started | 33 |
| CHI05-PH2-FIT-BL-D5,3,3,2,2,2 | CHI05-04-04-MG-1570 | Overhead MEP Installation - COLO4 Cell 4 - MG | Not Started | 19 |
| CHI05-PH2-FIT-BL-D5,3,3,2,2,2 | CHI05-04-04-MG-1580 | Deliver AHU into Mech. Gallery - COLO4 Cell 4 - MG | Not Started | 19 |

| activity_code | activity_id | activity_name | activity_status | total_float |
| --- | --- | --- | --- | --- |
| CHI05-PH2-FIT-BL-D5,3,3,2,2,2 | CHI05-04-04-MG-1590 | Install Walls and Primer Paint - COLO4 Cell 4 - MG | Not Started | 19 |
| CHI05-PH2-FIT-BL-D5,3,3,2,2,2 | CHI05-04-04-MG-1600 | Placing the AHU - COLO4 Cell 4 - MG | Not Started | 41 |
| CHI05-PH2-FIT-BL-D5,3,3,2,2,2 | CHI05-04-04-MG-1610 | Layout Ceiling and install Pencile Rod - COLO4 Cell 4 - MG | Not Started | 45 |
| CHI05-PH2-FIT-BL-D5,3,3,2,2,2 | CHI05-04-04-MG-1620 | Piping and Electrical Termination to AHUs - COLO4 Cell 4 - MG | Not Started | 58 |
| CHI05-PH2-FIT-BL-D5,3,3,2,2,2 | CHI05-04-04-MG-1630 | Pipe Testing - COLO4 Cell 4 - MG | Not Started | 58 |
| CHI05-PH2-FIT-BL-D5,3,3,2,2,2 | CHI05-04-04-MG-1640 | Install ceiling and Light Fittings - COLO4 Cell 4 - MG | Not Started | 58 |
| CHI05-PH2-FIT-BL-D5,3,3,2,2,2 | CHI05-04-04-MG-1650 | Trim out MEP - COLO4 Cell 4 - MG | Not Started | 58 |
| CHI05-PH2-FIT-BL-D5,3,3,2,2,2 | CHI05-04-04-MG-1595 | Post Wall Overhead MEP - COLO4 Cell 4 - MG | Not Started | 41 |
| CHI05-PH2-FIT-BL-D5,3,3,2,2,5 | CHI05-04-04-ER-1550 | Install Walls and Primer Paint - COLO4 Cell 4 - ER | Not Started | 0 |
| CHI05-PH2-FIT-BL-D5,3,3,2,2,5 | CHI05-04-04-ER-1560 | Sprinklers and Overhead MEP (Above Ceiling) - COLO4 Cell 4 - ER | Not Started | 0 |
| CHI05-PH2-FIT-BL-D5,3,3,2,2,5 | CHI05-04-04-ER-1570 | Install Upper Screens - COLO4 Cell 4 - ER | Not Started | 0 |
| CHI05-PH2-FIT-BL-D5,3,3,2,2,5 | CHI05-04-04-ER-1580 | Install Ceiling - COLO4 Cell 4 - ER | Not Started | 0 |
| CHI05-PH2-FIT-BL-D5,3,3,2,2,5 | CHI05-04-04-ER-1590 | Below Ceiling MEP Rough In - COLO4 Cell 4 - ER | Not Started | 0 |
| CHI05-PH2-FIT-BL-D5,3,3,2,2,5 | CHI05-04-04-ER-1600 | Installation of ADP & ATS - COLO4 Cell 4 - ER | Not Started | 23 |
| CHI05-PH2-FIT-BL-D5,3,3,2,2,5 | CHI05-04-04-ER-1610 | Installation of UPS Equipment - COLO4 Cell 4 - ER | Not Started | 0 |
| CHI05-PH2-FIT-BL-D5,3,3,2,2,5 | CHI05-04-04-ER-1620 | Connet to Cable tray and conduit equipment - COLO4 Cell 4 - ER | Not Started | 74 |
| CHI05-PH2-FIT-BL-D5,3,3,2,2,5 | CHI05-04-04-ER-1630 | Cable Pulling at Elec. Equipment - COLO4 Cell 4 - ER | Not Started | 57 |
| CHI05-PH2-FIT-BL-D5,3,3,2,2,5 | CHI05-04-04-ER-1640 | Door Frame Installation - COLO4 Cell 4 - ER | Not Started | 0 |
| CHI05-PH2-FIT-BL-D5,3,3,2,2,5 | CHI05-04-04-ER-1650 | Finishes and Signage - COLO4 Cell 4 - ER | Not Started | 57 |
| CHI05-PH2-FIT-BL-D5,3,3,2,2,5 | CHI05-04-04-ER-1625 | Installation of MSB - COLO4 Cell 4 - ER | Not Started | 21 |
| CHI05-PH2-FIT-BL-D5,3,3,2,2,1 | CHI05-04-04-DH-1635 | Closing Construction Access Door - COLO4 Cell 4 - DH | Not Started | 40 |
| CHI05-PH2-FIT-BL-D5,3,3,2,2,1 | CHI05-04-04-DH-1540 | Termination at PDU & Busway - COLO4 Cell 4 - DH | Not Started | 2 |
| CHI05-PH2-FIT-BL-D5,3,3,2,2,1 | CHI05-04-04-DH-1550 | Overhead MEP and Hangers (Above Ceiling) - COLO4 Cell 4 - DH | Not Started | 12 |
| CHI05-PH2-FIT-BL-D5,3,3,2,2,1 | CHI05-04-04-DH-1560 | HAC install and Rise - COLO4 Cell 4 - DH | Not Started | 35 |
| CHI05-PH2-FIT-BL-D5,3,3,2,2,1 | CHI05-04-04-DH-1570 | Cable Pulling at PDU & Busway- COLO4 Cell 4 - DH | Not Started | 17 |
| CHI05-PH2-FIT-BL-D5,3,3,2,2,1 | CHI05-04-04-DH-1580 | Security Screen Installation - COLO4 Cell 4 - DH | Not Started | 15 |
| CHI05-PH2-FIT-BL-D5,3,3,2,2,1 | CHI05-04-04-DH-1590 | Ceiling Grid and Tile - COLO4 Cell 4 - DH | Not Started | 12 |
| CHI05-PH2-FIT-BL-D5,3,3,2,2,1 | CHI05-04-04-DH-1600 | Install PDU's - COLO4 Cell 4 - DH | Not Started | 12 |
| CHI05-PH2-FIT-BL-D5,3,3,2,2,1 | CHI05-04-04-DH-1610 | Overhead MEP Installation (Below Ceiling) - COLO4 Cell 4 - DH | Not Started | 12 |
| CHI05-PH2-FIT-BL-D5,3,3,2,2,1 | CHI05-04-04-DH-1620 | Install Low Voltage Wiring and Fiber Optic - COLO4 Cell 4 - DH | Not Started | 35 |
| CHI05-PH2-FIT-BL-D5,3,3,2,2,1 | CHI05-04-04-DH-1630 | HAC Placing - COLO4 Cell 4 - DH | Not Started | 22 |
| CHI05-PH2-FIT-BL-D5,3,3,2,2,1 | CHI05-04-04-DH-1640 | Finishes and Signage - COLO4 Cell 4 - DH | Not Started | 56 |
| CHI05-PH2-FIT-BL-D5,3,3,2,2,4,1 | CHI05-04-04-L1-1740 | Interior - L1 UPS - COLO4 Cell 4 | Not Started | 16 |
| CHI05-PH2-FIT-BL-D5,3,3,2,2,4,1 | CHI05-04-04-L1-1750 | Interior - L1 MSB - COLO4 Cell 4 | Not Started | 16 |
| CHI05-PH2-FIT-BL-D5,3,3,2,2,4,1 | CHI05-04-04-L1-1760 | Interior - L1 PDUs - COLO4 Cell 4 | Not Started | 14 |
| CHI05-PH2-FIT-BL-D5,3,3,2,2,4,1 | CHI05-04-04-L1-1770 | Interior - L1 AHUs - COLO4 Cell 4 | Not Started | 14 |
| CHI05-PH2-FIT-BL-D5,3,3,2,2,4,1 | CHI05-04-04-L1-1780 | Interior - L1 ATSs - COLO4 Cell 4 | Not Started | 17 |
| CHI05-PH2-FIT-BL-D5,3,3,2,2,4,1 | CHI05-04-04-L1-1790 | Interior - L1 Busway - COLO4 Cell 4 | Not Started | 14 |
| CHI05-PH2-FIT-BL-D5,3,3,2,2,4,1 | CHI05-04-04-L1-1850 | Interior - L1 ADP - COLO4 Cell 4 | Not Started | 17 |
| CHI05-PH2-FIT-BL-D5,3,3,2,2,4,2 | CHI05-04-04-L2-1860 | Interior - L2 UPS - COLO4 Cell 4 | Not Started | 14 |
| CHI05-PH2-FIT-BL-D5,3,3,2,2,4,2 | CHI05-04-04-L2-1870 | Interior - L2 MSB - COLO4 Cell 4 | Not Started | 14 |
| CHI05-PH2-FIT-BL-D5,3,3,2,2,4,2 | CHI05-04-04-L2-1880 | Interior - L2 PDUs - COLO4 Cell 4 | Not Started | 2 |
| CHI05-PH2-FIT-BL-D5,3,3,2,2,4,2 | CHI05-04-04-L2-1890 | Interior - L2 AHUs - COLO4 Cell 4 | Not Started | 10 |
| CHI05-PH2-FIT-BL-D5,3,3,2,2,4,2 | CHI05-04-04-L2-1900 | Interior - L2 ATSs - COLO4 Cell 4 | Not Started | 19 |
| CHI05-PH2-FIT-BL-D5,3,3,2,2,4,2 | CHI05-04-04-L2-1910 | Interior - L2 Busway - COLO4 Cell 4 | Not Started | 10 |
| CHI05-PH2-FIT-BL-D5,3,3,2,2,4,2 | CHI05-04-04-L2-1970 | Interior - L2 ADP - COLO4 Cell 4 | Not Started | 19 |
| CHI05-PH2-FIT-BL-D5,3,3,2,2,4,3 | CHI05-04-04-L3-1980 | Interior - L3 UPS - COLO4 Cell 4 | Not Started | 0 |
| CHI05-PH2-FIT-BL-D5,3,3,2,2,4,3 | CHI05-04-04-L3-1990 | Interior - L3 MSB - COLO4 Cell 4 | Not Started | 0 |
| CHI05-PH2-FIT-BL-D5,3,3,2,2,4,3 | CHI05-04-04-L3-2000 | Interior - L3 PDUs - COLO4 Cell 4 | Not Started | 0 |
| CHI05-PH2-FIT-BL-D5,3,3,2,2,4,3 | CHI05-04-04-L3-2010 | Interior - L3 AHUs - COLO4 Cell 4 | Not Started | 0 |
| CHI05-PH2-FIT-BL-D5,3,3,2,2,4,3 | CHI05-04-04-L3-2020 | Interior - L3 ATSs - COLO4 Cell 4 | Not Started | 0 |
| CHI05-PH2-FIT-BL-D5,3,3,2,2,4,3 | CHI05-04-04-L3-2030 | Interior - L3 Busway - COLO4 Cell 4 | Not Started | 0 |
| CHI05-PH2-FIT-BL-D5,3,3,2,2,4,3 | CHI05-04-04-L3-2090 | Interior - L3 ADP - COLO4 Cell 4 | Not Started | 0 |
| CHI05-PH2-FIT-BL-D5,3,3,2,5,1 | CHI05-04-04-L4-1000 | Cx LEV4 - COLO4 | Not Started | 0 |
| CHI05-PH2-FIT-BL-D5,3,3,2,5,2 | CHI05-04-04-L5-1000 | Cx LEV5 / IST - COLO4 | Not Started | 0 |
| CHI05-PH2-FIT-BL-D5,3,3,3,6,2 | CHI05-05-01-MG-1330 | Install Dampers and actuators at Louvers - Upper level (RED) - COLO5 Cell 1 - MG | Not Started | 0 |
| CHI05-PH2-FIT-BL-D5,3,3,3,6,2 | CHI05-05-01-MG-1340 | Install Dampers and actuators at Louvers - Lower level (OA) - COLO5 Cell 1 - MG | Not Started | 53 |
| CHI05-PH2-FIT-BL-D5,3,3,3,6,2 | CHI05-05-01-MG-1350 | Overhead MEP Installation - COLO5 Cell 1 - MG | Not Started | 53 |
| CHI05-PH2-FIT-BL-D5,3,3,3,6,2 | CHI05-05-01-MG-1360 | Deliver AHU into Mech. Gallery - COLO5 Cell 1 - MG | Not Started | 39 |
| CHI05-PH2-FIT-BL-D5,3,3,3,6,2 | CHI05-05-01-MG-1370 | Install Walls and Primer Paint - COLO5 Cell 1 - MG | Not Started | 39 |
| CHI05-PH2-FIT-BL-D5,3,3,3,6,2 | CHI05-05-01-MG-1380 | Placing the AHU - COLO5 Cell 1 - MG | Not Started | 77 |
| CHI05-PH2-FIT-BL-D5,3,3,3,6,2 | CHI05-05-01-MG-1390 | Layout Ceiling and install Pencile Rod - COLO5 Cell 1 - MG | Not Started | 81 |
| CHI05-PH2-FIT-BL-D5,3,3,3,6,2 | CHI05-05-01-MG-1400 | Piping and Electrical Termination to AHUs - COLO5 Cell 1 - MG | Not Started | 77 |
| CHI05-PH2-FIT-BL-D5,3,3,3,6,2 | CHI05-05-01-MG-1410 | Pipe Testing - COLO5 Cell 1 - MG | Not Started | 83 |
| CHI05-PH2-FIT-BL-D5,3,3,3,6,2 | CHI05-05-01-MG-1420 | Install ceiling and Light Fittings - COLO5 Cell 1 - MG | Not Started | 83 |
| CHI05-PH2-FIT-BL-D5,3,3,3,6,2 | CHI05-05-01-MG-1430 | Trim out MEP - COLO5 Cell 1 - MG | Not Started | 87 |
| CHI05-PH2-FIT-BL-D5,3,3,3,6,2 | CHI05-05-01-MG-1375 | Post Wall Overhead MEP - COLO5 Cell 1 - MG | Not Started | 77 |
| CHI05-PH2-FIT-BL-D5,3,3,3,6,2 | CHI05-05-01-MG-1425 | Install Damper in Ceiling (RAD) - COLO 5 Cell 1 - MG | Not Started | 87 |
| CHI05-PH2-FIT-BL-D5,3,3,3,6,5 | CHI05-05-01-ER-1330 | Install Walls and Primer Paint - COLO5 Cell 1 - ER | Not Started | 58 |
| CHI05-PH2-FIT-BL-D5,3,3,3,6,5 | CHI05-05-01-ER-1340 | Sprinklers and Overhead MEP (Above Ceiling) - COLO5 Cell 1 - ER | Not Started | 58 |

| activity_code | activity_id | activity_name | activity_status | total_float |
| --- | --- | --- | --- | --- |
| CHI05-PH2-FIT-BL-D5,3,3,3,6,5 | CHI05-05-01-ER-1350 | Install Upper Screens - COLO5 Cell 1 - ER | Not Started | 58 |
| CHI05-PH2-FIT-BL-D5,3,3,3,6,5 | CHI05-05-01-ER-1360 | Install Ceiling - COLO5 Cell 1 - ER | Not Started | 58 |
| CHI05-PH2-FIT-BL-D5,3,3,3,6,5 | CHI05-05-01-ER-1370 | Below Ceiling MEP Rough In - COLO5 Cell 1 - ER | Not Started | 58 |
| CHI05-PH2-FIT-BL-D5,3,3,3,6,5 | CHI05-05-01-ER-1380 | Installation of ADP & ATS - COLO5 Cell 1 - ER | Not Started | 87 |
| CHI05-PH2-FIT-BL-D5,3,3,3,6,5 | CHI05-05-01-ER-1390 | Installation of UPS Equipment - COLO5 Cell 1 - ER | Not Started | 73 |
| CHI05-PH2-FIT-BL-D5,3,3,3,6,5 | CHI05-05-01-ER-1400 | Connet to Cable tray and conduit equipment - COLO5 Cell 1 - ER | Not Started | 94 |
| CHI05-PH2-FIT-BL-D5,3,3,3,6,5 | CHI05-05-01-ER-1410 | Cable Pulling at Elec. Equipment - COLO5 Cell 1 - ER | Not Started | 94 |
| CHI05-PH2-FIT-BL-D5,3,3,3,6,5 | CHI05-05-01-ER-1420 | Door Frame Installation - COLO5 Cell 1 - ER | Not Started | 88 |
| CHI05-PH2-FIT-BL-D5,3,3,3,6,5 | CHI05-05-01-ER-1430 | Finishes and Signage - COLO5 Cell 1 - ER | Not Started | 109 |
| CHI05-PH2-FIT-BL-D5,3,3,3,6,5 | CHI05-05-01-ER-1385 | Installation of MSB - COLO5 Cell 1 - ER | Not Started | 81 |
| CHI05-PH2-FIT-BL-D5,3,3,3,6,1 | CHI05-05-01-DH-1320 | Cable Pulling at PDU & Busway - COLO5 Cell 1 - DH | Not Started | 44 |
| CHI05-PH2-FIT-BL-D5,3,3,3,6,1 | CHI05-05-01-DH-1330 | Overhead MEP and Hangers (Above Ceiling) - COLO5 Cell 1 - DH | Not Started | 63 |
| CHI05-PH2-FIT-BL-D5,3,3,3,6,1 | CHI05-05-01-DH-1340 | HAC install and Rise - COLO5 Cell 1 - DH | Not Started | 74 |
| CHI05-PH2-FIT-BL-D5,3,3,3,6,1 | CHI05-05-01-DH-1350 | Termination at PDU & Busway- COLO5 Cell 1 - DH | Not Started | 49 |
| CHI05-PH2-FIT-BL-D5,3,3,3,6,1 | CHI05-05-01-DH-1360 | Security Screen Installation - COLO5 Cell 1 - DH | Not Started | 44 |
| CHI05-PH2-FIT-BL-D5,3,3,3,6,1 | CHI05-05-01-DH-1370 | Ceiling Grid and Tile - COLO5 Cell 1 - DH | Not Started | 44 |
| CHI05-PH2-FIT-BL-D5,3,3,3,6,1 | CHI05-05-01-DH-1380 | Install PDU's - COLO5 Cell 1 - DH | Not Started | 44 |
| CHI05-PH2-FIT-BL-D5,3,3,3,6,1 | CHI05-05-01-DH-1390 | Overhead MEP Installation (Below Ceiling) - COLO5 Cell 1 - DH | Not Started | 44 |
| CHI05-PH2-FIT-BL-D5,3,3,3,6,1 | CHI05-05-01-DH-1400 | Install Low Voltage Wiring and Fiber Optic - COLO5 Cell 1 - DH | Not Started | 74 |
| CHI05-PH2-FIT-BL-D5,3,3,3,6,1 | CHI05-05-01-DH-1410 | HAC Placing - COLO5 Cell 1 - DH | Not Started | 74 |
| CHI05-PH2-FIT-BL-D5,3,3,3,6,1 | CHI05-05-01-DH-1420 | Finishes and Signage - COLO5 Cell 1 - DH | Not Started | 105 |
| CHI05-PH2-FIT-BL-D5,3,3,3,6,4,1 | CHI05-05-01-L1-1500 | Interior - L1 UPS - COLO5 Cell 1 | Not Started | 103 |
| CHI05-PH2-FIT-BL-D5,3,3,3,6,4,1 | CHI05-05-01-L1-1510 | Interior - L1 MSB - COLO5 Cell 1 | Not Started | 106 |
| CHI05-PH2-FIT-BL-D5,3,3,3,6,4,1 | CHI05-05-01-L1-1520 | Interior - L1 PDUs - COLO5 Cell 1 | Not Started | 103 |
| CHI05-PH2-FIT-BL-D5,3,3,3,6,4,1 | CHI05-05-01-L1-1530 | Interior - L1 AHUs - COLO5 Cell 1 | Not Started | 108 |
| CHI05-PH2-FIT-BL-D5,3,3,3,6,4,1 | CHI05-05-01-L1-1540 | Interior - L1 ATSs - COLO5 Cell 1 | Not Started | 114 |
| CHI05-PH2-FIT-BL-D5,3,3,3,6,4,1 | CHI05-05-01-L1-1550 | Interior - L1 Busway - COLO5 Cell 1 | Not Started | 107 |
| CHI05-PH2-FIT-BL-D5,3,3,3,6,4,1 | CHI05-05-01-L1-1610 | Interior - L1 ADP - COLO5 Cell 1 | Not Started | 110 |
| CHI05-PH2-FIT-BL-D5,3,3,3,6,4,2 | CHI05-05-01-L2-1620 | Interior - L2 UPS - COLO5 Cell 1 | Not Started | 52 |
| CHI05-PH2-FIT-BL-D5,3,3,3,6,4,2 | CHI05-05-01-L2-1630 | Interior - L2 MSB - COLO5 Cell 1 | Not Started | 52 |
| CHI05-PH2-FIT-BL-D5,3,3,3,6,4,2 | CHI05-05-01-L2-1640 | Interior - L2 PDUs - COLO5 Cell 1 | Not Started | 52 |
| CHI05-PH2-FIT-BL-D5,3,3,3,6,4,2 | CHI05-05-01-L2-1650 | Interior - L2 AHUs - COLO5 Cell 1 | Not Started | 52 |
| CHI05-PH2-FIT-BL-D5,3,3,3,6,4,2 | CHI05-05-01-L2-1660 | Interior - L2 ATSs - COLO5 Cell 1 | Not Started | 52 |
| CHI05-PH2-FIT-BL-D5,3,3,3,6,4,2 | CHI05-05-01-L2-1670 | Interior - L2 Busway - COLO5 Cell 1 | Not Started | 52 |
| CHI05-PH2-FIT-BL-D5,3,3,3,6,4,2 | CHI05-05-01-L2-1730 | Interior - L2 ADP - COLO5 Cell 1 | Not Started | 52 |
| CHI05-PH2-FIT-BL-D5,3,3,3,6,4,3 | CHI05-05-01-L3-1740 | Interior - L3 UPS - COLO5 Cell 1 | Not Started | 37 |
| CHI05-PH2-FIT-BL-D5,3,3,3,6,4,3 | CHI05-05-01-L3-1750 | Interior - L3 MSB - COLO5 Cell 1 | Not Started | 37 |
| CHI05-PH2-FIT-BL-D5,3,3,3,6,4,3 | CHI05-05-01-L3-1760 | Interior - L3 PDUs - COLO5 Cell 1 | Not Started | 37 |
| CHI05-PH2-FIT-BL-D5,3,3,3,6,4,3 | CHI05-05-01-L3-1770 | Interior - L3 AHUs - COLO5 Cell 1 | Not Started | 37 |
| CHI05-PH2-FIT-BL-D5,3,3,3,6,4,3 | CHI05-05-01-L3-1780 | Interior - L3 ATSs - COLO5 Cell 1 | Not Started | 37 |
| CHI05-PH2-FIT-BL-D5,3,3,3,6,4,3 | CHI05-05-01-L3-1790 | Interior - L3 Busway - COLO5 Cell 1 | Not Started | 37 |
| CHI05-PH2-FIT-BL-D5,3,3,3,6,4,3 | CHI05-05-01-L3-1850 | Interior - L3 ADP - COLO5 Cell 1 | Not Started | 37 |
| CHI05-PH2-FIT-BL-D5,3,3,3,1,2 | CHI05-05-02-MG-1440 | Install Dampers and actuators at Louvers - Upper level (RED) - COLO5 Cell 2 - MG | Not Started | 58 |
| CHI05-PH2-FIT-BL-D5,3,3,3,1,2 | CHI05-05-02-MG-1450 | Install Dampers and actuators at Louvers - Lower level (OA) - COLO5 Cell 2 - MG | Not Started | 58 |
| CHI05-PH2-FIT-BL-D5,3,3,3,1,2 | CHI05-05-02-MG-1460 | Overhead MEP Installation - COLO5 Cell 2 - MG | Not Started | 53 |
| CHI05-PH2-FIT-BL-D5,3,3,3,1,2 | CHI05-05-02-MG-1470 | Deliver AHU into Mech. Gallery - COLO5 Cell 2 - MG | Not Started | 47 |
| CHI05-PH2-FIT-BL-D5,3,3,3,1,2 | CHI05-05-02-MG-1480 | Install Walls and Primer Paint - COLO5 Cell 2 - MG | Not Started | 39 |
| CHI05-PH2-FIT-BL-D5,3,3,3,1,2 | CHI02-05-02-MG-1490 | Placing the AHU - COLO5 Cell 2 - MG | Not Started | 80 |
| CHI05-PH2-FIT-BL-D5,3,3,3,1,2 | CHI02-05-02-MG-1500 | Layout Ceiling and install Pencile Rod - COLO5 Cell 2 - MG | Not Started | 84 |
| CHI05-PH2-FIT-BL-D5,3,3,3,1,2 | CHI02-05-02-MG-1510 | Piping and Electrical Termination to AHUs - COLO5 Cell 2 - MG | Not Started | 77 |
| CHI05-PH2-FIT-BL-D5,3,3,3,1,2 | CHI05-05-02-MG-1520 | Pipe Testing - COLO5 Cell 2 - MG | Not Started | 81 |
| CHI05-PH2-FIT-BL-D5,3,3,3,1,2 | CHI05-05-02-MG-1530 | Install ceiling and Light Fittings - COLO5 Cell 2 - MG | Not Started | 81 |
| CHI05-PH2-FIT-BL-D5,3,3,3,1,2 | CHI05-05-02-MG-1540 | Trim out MEP - COLO5 Cell 2 - MG | Not Started | 87 |
| CHI05-PH2-FIT-BL-D5,3,3,3,1,2 | CHI05-05-02-MG-1485 | Post Wall Overhead MEP - COLO5 Cell 2 - MG | Not Started | 80 |
| CHI05-PH2-FIT-BL-D5,3,3,3,1,5 | CHI05-05-02-ER-1440 | Install Walls and Primer Paint - COLO5 Cell 2 - ER | Not Started | 61 |
| CHI05-PH2-FIT-BL-D5,3,3,3,1,5 | CHI05-05-02-ER-1450 | Sprinklers and Overhead MEP (Above Ceiling) - COLO5 Cell 2 - ER | Not Started | 58 |
| CHI05-PH2-FIT-BL-D5,3,3,3,1,5 | CHI02-05-02-ER-1460 | Install Upper Screens - COLO5 Cell 2 - ER | Not Started | 61 |
| CHI05-PH2-FIT-BL-D5,3,3,3,1,5 | CHI05-05-02-ER-1470 | Install Ceiling - COLO5 Cell 2 - ER | Not Started | 58 |
| CHI05-PH2-FIT-BL-D5,3,3,3,1,5 | CHI05-05-02-ER-1480 | Below Ceiling MEP Rough In - COLO5 Cell 2 - ER | Not Started | 58 |
| CHI05-PH2-FIT-BL-D5,3,3,3,1,5 | CHI05-05-02-ER-1490 | Installation of ADP & ATS - COLO5 Cell 2 - ER | Not Started | 87 |
| CHI05-PH2-FIT-BL-D5,3,3,3,1,5 | CHI05-05-02-ER-1500 | Installation of UPS Equipment - COLO5 Cell 2 - ER | Not Started | 68 |
| CHI05-PH2-FIT-BL-D5,3,3,3,1,5 | CHI05-05-02-ER-1510 | Connet to Cable tray and conduit equipment - COLO5 Cell 2 - ER | Not Started | 104 |
| CHI05-PH2-FIT-BL-D5,3,3,3,1,5 | CHI05-05-02-ER-1520 | Cable Pulling at Elec. Equipment - COLO5 Cell 2 - ER | Not Started | 94 |
| CHI05-PH2-FIT-BL-D5,3,3,3,1,5 | CHI05-05-02-ER-1530 | Door Frame Installation - COLO5 Cell 2 - ER | Not Started | 67 |
| CHI05-PH2-FIT-BL-D5,3,3,3,1,5 | CHI05-05-02-ER-1540 | Finishes and Signage - COLO5 Cell 2 - ER | Not Started | 104 |
| CHI05-PH2-FIT-BL-D5,3,3,3,1,5 | CHI05-05-02-ER-1495 | Installation of MSB - COLO5 Cell 2 - ER | Not Started | 81 |
| CHI05-PH2-FIT-BL-D5,3,3,3,1,1 | CHI05-05-02-DH-1430 | Cable Pulling at PDU & Busway - COLO5 Cell 2 - DH | Not Started | 39 |
| CHI05-PH2-FIT-BL-D5,3,3,3,1,1 | CHI05-05-02-DH-1440 | Overhead MEP and Hangers (Above Ceiling) - COLO5 Cell 2 - DH | Not Started | 66 |
| CHI05-PH2-FIT-BL-D5,3,3,3,1,1 | CHI05-05-02-DH-1450 | HAC install and Rise - COLO5 Cell 2 - DH | Not Started | 64 |
| CHI05-PH2-FIT-BL-D5,3,3,3,1,1 | CHI05-05-02-DH-1460 | Termination at PDU & Busway- COLO5 Cell 2 - DH | Not Started | 85 |

| activity_code | activity_id | activity_name | activity_status | total_float |
| --- | --- | --- | --- | --- |
| CHI05-PH2-FIT-BL-D5,3,3,3,1,1 | CHI05-05-02-DH-1470 | Security Screen Installation - COLO5 Cell 2 - DH | Not Started | 39 |
| CHI05-PH2-FIT-BL-D5,3,3,3,1,1 | CHI05-05-02-DH-1480 | Ceiling Grid and Tile - COLO5 Cell 2 - DH | Not Started | 39 |
| CHI05-PH2-FIT-BL-D5,3,3,3,1,1 | CHI05-05-02-DH-1490 | Install PDU's - COLO5 Cell 2 - DH | Not Started | 39 |
| CHI05-PH2-FIT-BL-D5,3,3,3,1,1 | CHI05-05-02-DH-1500 | Overhead MEP Installation (Below Ceiling) - COLO5 Cell 2 - DH | Not Started | 39 |
| CHI05-PH2-FIT-BL-D5,3,3,3,1,1 | CHI05-05-02-DH-1510 | Install Low Voltage Wiring and Fiber Optic - COLO5 Cell 2 - DH | Not Started | 64 |
| CHI05-PH2-FIT-BL-D5,3,3,3,1,1 | CHI05-05-02-DH-1520 | HAC Placing - COLO5 Cell 2 - DH | Not Started | 64 |
| CHI05-PH2-FIT-BL-D5,3,3,3,1,1 | CHI05-05-02-DH-1530 | Finishes and Signage - COLO5 Cell 2 - DH | Not Started | 85 |
| CHI05-PH2-FIT-BL-D5,3,3,3,1,4,1 | CHI05-05-02-L1-1620 | Interior - L1 UPS - COLO5 Cell 2 | Not Started | 93 |
| CHI05-PH2-FIT-BL-D5,3,3,3,1,4,1 | CHI05-05-02-L1-1630 | Interior - L1 MSB - COLO5 Cell 2 | Not Started | 101 |
| CHI05-PH2-FIT-BL-D5,3,3,3,1,4,1 | CHI05-05-02-L1-1640 | Interior - L1 PDUs - COLO5 Cell 2 | Not Started | 83 |
| CHI05-PH2-FIT-BL-D5,3,3,3,1,4,1 | CHI05-05-02-L1-1650 | Interior - L1 AHUs - COLO5 Cell 2 | Not Started | 91 |
| CHI05-PH2-FIT-BL-D5,3,3,3,1,4,1 | CHI05-05-02-L1-1660 | Interior - L1 ATSs - COLO5 Cell 2 | Not Started | 109 |
| CHI05-PH2-FIT-BL-D5,3,3,3,1,4,1 | CHI05-05-02-L1-1670 | Interior - L1 Busway - COLO5 Cell 2 | Not Started | 87 |
| CHI05-PH2-FIT-BL-D5,3,3,3,1,4,1 | CHI05-05-02-L1-1730 | Interior - L1 ADP - COLO5 Cell 2 | Not Started | 105 |
| CHI05-PH2-FIT-BL-D5,3,3,3,1,4,2 | CHI05-05-02-L2-1740 | Interior - L2 UPS - COLO5 Cell 2 | Not Started | 52 |
| CHI05-PH2-FIT-BL-D5,3,3,3,1,4,2 | CHI05-05-02-L2-1750 | Interior - L2 MSB - COLO5 Cell 2 | Not Started | 52 |
| CHI05-PH2-FIT-BL-D5,3,3,3,1,4,2 | CHI05-05-02-L2-1760 | Interior - L2 PDUs - COLO5 Cell 2 | Not Started | 52 |
| CHI05-PH2-FIT-BL-D5,3,3,3,1,4,2 | CHI05-05-02-L2-1770 | Interior - L2 AHUs - COLO5 Cell 2 | Not Started | 52 |
| CHI05-PH2-FIT-BL-D5,3,3,3,1,4,2 | CHI05-05-02-L2-1780 | Interior - L2 ATSs - COLO5 Cell 2 | Not Started | 52 |
| CHI05-PH2-FIT-BL-D5,3,3,3,1,4,2 | CHI05-05-02-L2-1790 | Interior - L2 Busway - COLO5 Cell 2 | Not Started | 52 |
| CHI05-PH2-FIT-BL-D5,3,3,3,1,4,2 | CHI05-05-02-L2-1850 | Interior - L2 ADP - COLO5 Cell 2 | Not Started | 52 |
| CHI05-PH2-FIT-BL-D5,3,3,3,1,4,3 | CHI05-05-02-L3-1860 | Interior - L3 UPS - COLO5 Cell 2 | Not Started | 37 |
| CHI05-PH2-FIT-BL-D5,3,3,3,1,4,3 | CHI05-05-02-L3-1870 | Interior - L3 MSB - COLO5 Cell 2 | Not Started | 37 |
| CHI05-PH2-FIT-BL-D5,3,3,3,1,4,3 | CHI05-05-02-L3-1880 | Interior - L3 PDUs - COLO5 Cell 2 | Not Started | 37 |
| CHI05-PH2-FIT-BL-D5,3,3,3,1,4,3 | CHI05-05-02-L3-1890 | Interior - L3 AHUs - COLO5 Cell 2 | Not Started | 37 |
| CHI05-PH2-FIT-BL-D5,3,3,3,1,4,3 | CHI05-05-02-L3-1900 | Interior - L3 ATSs - COLO5 Cell 2 | Not Started | 37 |
| CHI05-PH2-FIT-BL-D5,3,3,3,1,4,3 | CHI05-05-02-L3-1910 | Interior - L3 Busway - COLO5 Cell 2 | Not Started | 37 |
| CHI05-PH2-FIT-BL-D5,3,3,3,1,4,3 | CHI05-05-02-L3-1970 | Interior - L3 ADP - COLO5 Cell 2 | Not Started | 37 |
| CHI05-PH2-FIT-BL-D5,3,3,3,3,2 | CHI05-05-03-MG-1550 | Install Dampers and actuators at Louvers - Upper level (RED) - COLO5 Cell 3 - MG | Not Started | 68 |
| CHI05-PH2-FIT-BL-D5,3,3,3,3,2 | CHI05-05-03-MG-1560 | Install Dampers and actuators at Louvers - Lower level (OA) - COLO5 Cell 3 - MG | Not Started | 68 |
| CHI05-PH2-FIT-BL-D5,3,3,3,3,2 | CHI05-05-03-MG-1570 | Overhead MEP Installation - COLO5 Cell 3 - MG | Not Started | 58 |
| CHI05-PH2-FIT-BL-D5,3,3,3,3,2 | CHI05-05-03-MG-1580 | Deliver AHU into Mech. Gallery - COLO5 Cell 3 - MG | Not Started | 58 |
| CHI05-PH2-FIT-BL-D5,3,3,3,3,2 | CHI05-05-03-MG-1590 | Install Walls and Primer Paint - COLO5 Cell 3 - MG | Not Started | 44 |
| CHI05-PH2-FIT-BL-D5,3,3,3,3,2 | CHI05-05-03-MG-1600 | Placing the AHU - COLO5 Cell 3 - MG | Not Started | 77 |
| CHI05-PH2-FIT-BL-D5,3,3,3,3,2 | CHI05-05-03-MG-1610 | Layout Ceiling and install Pencile Rod - COLO5 Cell 3 - MG | Not Started | 81 |
| CHI05-PH2-FIT-BL-D5,3,3,3,3,2 | CHI05-05-03-MG-1620 | Piping and Electrical Termination to AHUs - COLO5 Cell 3 - MG | Not Started | 77 |
| CHI05-PH2-FIT-BL-D5,3,3,3,3,2 | CHI05-05-03-MG-1630 | Pipe Testing - COLO5 Cell 3 - MG | Not Started | 79 |
| CHI05-PH2-FIT-BL-D5,3,3,3,3,2 | CHI05-05-03-MG-1640 | Install ceiling and Light Fittings - COLO5 Cell 3 - MG | Not Started | 79 |
| CHI05-PH2-FIT-BL-D5,3,3,3,3,2 | CHI05-05-03-MG-1650 | Trim out MEP - COLO5 Cell 3 - MG | Not Started | 82 |
| CHI05-PH2-FIT-BL-D5,3,3,3,3,2 | CHI05-05-03-MG-1595 | Post Wall Overhead MEP - COLO5 Cell 3 - MG | Not Started | 77 |
| CHI05-PH2-FIT-BL-D5,3,3,3,3,5 | CHI05-05-03-ER-1550 | Install Walls and Primer Paint - COLO5 Cell 3 - ER | Not Started | 61 |
| CHI05-PH2-FIT-BL-D5,3,3,3,3,5 | CHI05-05-03-ER-1560 | Sprinklers and Overhead MEP (Above Ceiling) - COLO5 Cell 3 - ER | Not Started | 58 |
| CHI05-PH2-FIT-BL-D5,3,3,3,3,5 | CHI05-05-03-ER-1570 | Install Upper Screens - COLO5 Cell 3 - ER | Not Started | 61 |
| CHI05-PH2-FIT-BL-D5,3,3,3,3,5 | CHI05-05-03-ER-1580 | Install Ceiling - COLO5 Cell 3 - ER | Not Started | 58 |
| CHI05-PH2-FIT-BL-D5,3,3,3,3,5 | CHI05-05-03-ER-1590 | Below Ceiling MEP Rough In - COLO5 Cell 3 - ER | Not Started | 58 |
| CHI05-PH2-FIT-BL-D5,3,3,3,3,5 | CHI05-05-03-ER-1600 | Installation of ADP & ATS - COLO5 Cell 3 - ER | Not Started | 87 |
| CHI05-PH2-FIT-BL-D5,3,3,3,3,5 | CHI05-05-03-ER-1610 | Installation of UPS Equipment - COLO5 Cell 3 - ER | Not Started | 63 |
| CHI05-PH2-FIT-BL-D5,3,3,3,3,5 | CHI05-05-03-ER-1620 | Connet to Cable tray and conduit equipment - COLO5 Cell 3 - ER | Not Started | 114 |
| CHI05-PH2-FIT-BL-D5,3,3,3,3,5 | CHI05-05-03-ER-1630 | Cable Pulling at Elec. Equipment - COLO5 Cell 3 - ER | Not Started | 94 |
| CHI05-PH2-FIT-BL-D5,3,3,3,3,5 | CHI05-05-03-ER-1640 | Door Frame Installation - COLO5 Cell 3 - ER | Not Started | 67 |
| CHI05-PH2-FIT-BL-D5,3,3,3,3,5 | CHI05-05-03-ER-1650 | Finishes and Signage - COLO5 Cell 3 - ER | Not Started | 85 |
| CHI05-PH2-FIT-BL-D5,3,3,3,3,5 | CHI05-05-03-ER-1605 | Installation of MSB - COLO5 Cell 3 - ER | Not Started | 81 |
| CHI05-PH2-FIT-BL-D5,3,3,3,3,1 | CHI05-05-03-DH-1540 | Termination at PDU & Busway - COLO5 Cell 3 - DH | Not Started | 39 |
| CHI05-PH2-FIT-BL-D5,3,3,3,3,1 | CHI05-05-03-DH-1550 | Overhead MEP and Hangers (Above Ceiling) - COLO5 Cell 3 - DH | Not Started | 69 |
| CHI05-PH2-FIT-BL-D5,3,3,3,3,1 | CHI05-05-03-DH-1560 | HAC install and Rise - COLO5 Cell 3 - DH | Not Started | 64 |
| CHI05-PH2-FIT-BL-D5,3,3,3,3,1 | CHI05-05-03-DH-1570 | Cable Pulling at PDU & Busway- COLO5 Cell 3 - DH | Not Started | 49 |
| CHI05-PH2-FIT-BL-D5,3,3,3,3,1 | CHI05-05-03-DH-1580 | Security Screen Installation - COLO5 Cell 3 - DH | Not Started | 44 |
| CHI05-PH2-FIT-BL-D5,3,3,3,3,1 | CHI05-05-03-DH-1590 | Ceiling Grid and Tile - COLO5 Cell 3 - DH | Not Started | 44 |
| CHI05-PH2-FIT-BL-D5,3,3,3,3,1 | CHI05-05-03-DH-1600 | Install PDU's - COLO5 Cell 3 - DH | Not Started | 44 |
| CHI05-PH2-FIT-BL-D5,3,3,3,3,1 | CHI05-05-03-DH-1610 | Overhead MEP Installation (Below Ceiling) - COLO5 Cell 3 - DH | Not Started | 44 |
| CHI05-PH2-FIT-BL-D5,3,3,3,3,1 | CHI05-05-03-DH-1620 | Install Low Voltage Wiring and Fiber Optic - COLO5 Cell 3 - DH | Not Started | 64 |
| CHI05-PH2-FIT-BL-D5,3,3,3,3,1 | CHI05-05-03-DH-1630 | HAC Placing - COLO5 Cell 3 - DH | Not Started | 64 |
| CHI05-PH2-FIT-BL-D5,3,3,3,3,1 | CHI05-05-03-DH-1640 | Finishes and Signage - COLO5 Cell 3 - DH | Not Started | 85 |
| CHI05-PH2-FIT-BL-D5,3,3,3,3,4,1 | CHI05-05-03-L1-1740 | Interior - L1 UPS - COLO5 Cell 3 | Not Started | 83 |
| CHI05-PH2-FIT-BL-D5,3,3,3,3,4,1 | CHI05-05-03-L1-1750 | Interior - L1 MSB - COLO5 Cell 3 | Not Started | 93 |
| CHI05-PH2-FIT-BL-D5,3,3,3,3,4,1 | CHI05-05-03-L1-1760 | Interior - L1 PDUs - COLO5 Cell 3 | Not Started | 73 |
| CHI05-PH2-FIT-BL-D5,3,3,3,3,4,1 | CHI05-05-03-L1-1770 | Interior - L1 AHUs - COLO5 Cell 3 | Not Started | 81 |
| CHI05-PH2-FIT-BL-D5,3,3,3,3,4,1 | CHI05-05-03-L1-1780 | Interior - L1 ATSs - COLO5 Cell 3 | Not Started | 101 |
| CHI05-PH2-FIT-BL-D5,3,3,3,3,4,1 | CHI05-05-03-L1-1790 | Interior - L1 Busway - COLO5 Cell 3 | Not Started | 77 |
| CHI05-PH2-FIT-BL-D5,3,3,3,3,4,1 | CHI05-05-03-L1-1850 | Interior - L1 ADP - COLO5 Cell 3 | Not Started | 97 |

| activity_code | activity_id | activity_name | activity_status | total_float |
| --- | --- | --- | --- | --- |
| CHI05-PH2-FIT-BL-D5,3,3,3,3,4,2 | CHI05-05-03-L2-1860 | Interior - L2 UPS - COLO5 Cell 3 | Not Started | 52 |
| CHI05-PH2-FIT-BL-D5,3,3,3,3,4,2 | CHI05-05-03-L2-1870 | Interior - L2 MSB - COLO5 Cell 3 | Not Started | 52 |
| CHI05-PH2-FIT-BL-D5,3,3,3,3,4,2 | CHI05-05-03-L2-1880 | Interior - L2 PDUs - COLO5 Cell 3 | Not Started | 52 |
| CHI05-PH2-FIT-BL-D5,3,3,3,3,4,2 | CHI05-05-03-L2-1890 | Interior - L2 AHUs - COLO5 Cell 3 | Not Started | 52 |
| CHI05-PH2-FIT-BL-D5,3,3,3,3,4,2 | CHI05-05-03-L2-1900 | Interior - L2 ATSs - COLO5 Cell 3 | Not Started | 52 |
| CHI05-PH2-FIT-BL-D5,3,3,3,3,4,2 | CHI05-05-03-L2-1910 | Interior - L2 Busway - COLO5 Cell 3 | Not Started | 52 |
| CHI05-PH2-FIT-BL-D5,3,3,3,3,4,2 | CHI05-05-03-L2-1970 | Interior - L2 ADP - COLO5 Cell 3 | Not Started | 52 |
| CHI05-PH2-FIT-BL-D5,3,3,3,3,4,3 | CHI05-05-03-L3-1980 | Interior - L3 UPS - COLO5 Cell 3 | Not Started | 37 |
| CHI05-PH2-FIT-BL-D5,3,3,3,3,4,3 | CHI05-05-03-L3-1990 | Interior - L3 MSB - COLO5 Cell 3 | Not Started | 37 |
| CHI05-PH2-FIT-BL-D5,3,3,3,3,4,3 | CHI05-05-03-L3-2000 | Interior - L3 PDUs - COLO5 Cell 3 | Not Started | 37 |
| CHI05-PH2-FIT-BL-D5,3,3,3,3,4,3 | CHI05-05-03-L3-2010 | Interior - L3 AHUs - COLO5 Cell 3 | Not Started | 37 |
| CHI05-PH2-FIT-BL-D5,3,3,3,3,4,3 | CHI05-05-03-L3-2020 | Interior - L3 ATSs - COLO5 Cell 3 | Not Started | 37 |
| CHI05-PH2-FIT-BL-D5,3,3,3,3,4,3 | CHI05-05-03-L3-2030 | Interior - L3 Busway - COLO5 Cell 3 | Not Started | 37 |
| CHI05-PH2-FIT-BL-D5,3,3,3,3,4,3 | CHI05-05-03-L3-2090 | Interior - L3 ADP - COLO5 Cell 3 | Not Started | 37 |
| CHI05-PH2-FIT-BL-D5,3,3,3,2,2 | CHI05-05-04-MG-1660 | Install Dampers and actuators at Louvers - Upper level (RED) - COLO5 Cell 4 - MG | Not Started | 73 |
| CHI05-PH2-FIT-BL-D5,3,3,3,2,2 | CHI05-05-04-MG-1670 | Install Dampers and actuators at Louvers - Lower level (OA) - COLO5 Cell 4 - MG | Not Started | 78 |
| CHI05-PH2-FIT-BL-D5,3,3,3,2,2 | CHI05-05-04-MG-1680 | Overhead MEP Installation - COLO5 Cell 4 - MG | Not Started | 63 |
| CHI05-PH2-FIT-BL-D5,3,3,3,2,2 | CHI05-05-04-MG-1690 | Deliver AHU into Mech. Gallery - COLO5 Cell 4 - MG | Not Started | 63 |
| CHI05-PH2-FIT-BL-D5,3,3,3,2,2 | CHI05-05-04-MG-1700 | Install Walls and Primer Paint - COLO5 Cell 4 - MG | Not Started | 49 |
| CHI05-PH2-FIT-BL-D5,3,3,3,2,2 | CHI05-05-04-MG-1710 | Placing the AHU - COLO5 Cell 4 - MG | Not Started | 69 |
| CHI05-PH2-FIT-BL-D5,3,3,3,2,2 | CHI05-05-04-MG-1720 | Layout Ceiling and install Pencile Rod - COLO5 Cell 4 - MG | Not Started | 73 |
| CHI05-PH2-FIT-BL-D5,3,3,3,2,2 | CHI05-05-04-MG-1730 | Piping and Electrical Termination to AHUs - COLO5 Cell 4 - MG | Not Started | 77 |
| CHI05-PH2-FIT-BL-D5,3,3,3,2,2 | CHI05-05-04-MG-1740 | Pipe Testing - COLO5 Cell 4 - MG | Not Started | 77 |
| CHI05-PH2-FIT-BL-D5,3,3,3,2,2 | CHI05-05-04-MG-1750 | Install ceiling and Light Fittings - COLO5 Cell 4 - MG | Not Started | 77 |
| CHI05-PH2-FIT-BL-D5,3,3,3,2,2 | CHI05-05-04-MG-1760 | Trim out MEP - COLO5 Cell 4 - MG | Not Started | 77 |
| CHI05-PH2-FIT-BL-D5,3,3,3,2,2 | CHI05-05-04-MG-1705 | Post Wall Overhead MEP - COLO5 Cell 4 - MG | Not Started | 69 |
| CHI05-PH2-FIT-BL-D5,3,3,3,2,5 | CHI05-05-04-ER-1660 | Install Walls and Primer Paint - COLO5 Cell 4 - ER | Not Started | 61 |
| CHI05-PH2-FIT-BL-D5,3,3,3,2,5 | CHI05-05-04-ER-1670 | Sprinklers and Overhead MEP (Above Ceiling) - COLO5 Cell 4 - ER | Not Started | 58 |
| CHI05-PH2-FIT-BL-D5,3,3,3,2,5 | CHI05-05-04-ER-1680 | Install Upper Screens - COLO5 Cell 4 - ER | Not Started | 61 |
| CHI05-PH2-FIT-BL-D5,3,3,3,2,5 | CHI05-05-04-ER-1690 | Install Ceiling - COLO5 Cell 4 - ER | Not Started | 58 |
| CHI05-PH2-FIT-BL-D5,3,3,3,2,5 | CHI05-05-04-ER-1700 | Below Ceiling MEP Rough In - COLO5 Cell 4 - ER | Not Started | 58 |
| CHI05-PH2-FIT-BL-D5,3,3,3,2,5 | CHI05-05-04-ER-1710 | Installation of ADP & ATS - COLO5 Cell 4 - ER | Not Started | 83 |
| CHI05-PH2-FIT-BL-D5,3,3,3,2,5 | CHI05-05-04-ER-1720 | Installation of UPS Equipment - COLO5 Cell 4 - ER | Not Started | 58 |
| CHI05-PH2-FIT-BL-D5,3,3,3,2,5 | CHI05-05-04-ER-1730 | Connet to Cable tray and conduit equipment - COLO5 Cell 4 - ER | Not Started | 124 |
| CHI05-PH2-FIT-BL-D5,3,3,3,2,5 | CHI05-05-04-ER-1740 | Cable Pulling at Elec. Equipment - COLO5 Cell 4 - ER | Not Started | 94 |
| CHI05-PH2-FIT-BL-D5,3,3,3,2,5 | CHI05-05-04-ER-1750 | Door Frame Installation - COLO5 Cell 4 - ER | Not Started | 58 |
| CHI05-PH2-FIT-BL-D5,3,3,3,2,5 | CHI05-05-04-ER-1760 | Finishes and Signage - COLO5 Cell 4 - ER | Not Started | 85 |
| CHI05-PH2-FIT-BL-D5,3,3,3,2,5 | CHI05-05-04-ER-1715 | Installation of MSB - COLO5 Cell 4 - ER | Not Started | 81 |
| CHI05-PH2-FIT-BL-D5,3,3,3,2,1 | CHI05-05-04-DH-1745 | Closing Construction Access Door - COLO5 Cell 4 - DH | Not Started | 69 |
| CHI05-PH2-FIT-BL-D5,3,3,3,2,1 | CHI05-05-04-DH-1650 | Termination at PDU & Busway - COLO5 Cell 4 - DH | Not Started | 39 |
| CHI05-PH2-FIT-BL-D5,3,3,3,2,1 | CHI05-05-04-DH-1660 | Overhead MEP and Hangers (Above Ceiling) - COLO5 Cell 4 - DH | Not Started | 72 |
| CHI05-PH2-FIT-BL-D5,3,3,3,2,1 | CHI05-05-04-DH-1670 | HAC install and Rise - COLO5 Cell 4 - DH | Not Started | 64 |
| CHI05-PH2-FIT-BL-D5,3,3,3,2,1 | CHI05-05-04-DH-1680 | Cable Pulling at PDU & Busway- COLO5 Cell 4 - DH | Not Started | 54 |
| CHI05-PH2-FIT-BL-D5,3,3,3,2,1 | CHI05-05-04-DH-1690 | Security Screen Installation - COLO5 Cell 4 - DH | Not Started | 49 |
| CHI05-PH2-FIT-BL-D5,3,3,3,2,1 | CHI05-05-04-DH-1700 | Ceiling Grid and Tile - COLO5 Cell 4 - DH | Not Started | 49 |
| CHI05-PH2-FIT-BL-D5,3,3,3,2,1 | CHI05-05-04-DH-1710 | Install PDU's - COLO5 Cell 4 - DH | Not Started | 49 |
| CHI05-PH2-FIT-BL-D5,3,3,3,2,1 | CHI05-05-04-DH-1720 | Overhead MEP Installation (Below Ceiling) - COLO5 Cell 4 - DH | Not Started | 49 |
| CHI05-PH2-FIT-BL-D5,3,3,3,2,1 | CHI05-05-04-DH-1730 | Install Low Voltage Wiring and Fiber Optic - COLO5 Cell 4 - DH | Not Started | 64 |
| CHI05-PH2-FIT-BL-D5,3,3,3,2,1 | CHI05-05-04-DH-1740 | HAC Placing - COLO5 Cell 4 - DH | Not Started | 64 |
| CHI05-PH2-FIT-BL-D5,3,3,3,2,1 | CHI05-05-04-DH-1750 | Finishes and Signage - COLO5 Cell 4 - DH | Not Started | 85 |
| CHI05-PH2-FIT-BL-D5,3,3,3,2,4,1 | CHI05-05-04-L1-1860 | Interior - L1 UPS - COLO5 Cell 4 | Not Started | 83 |
| CHI05-PH2-FIT-BL-D5,3,3,3,2,4,1 | CHI05-05-04-L1-1870 | Interior - L1 MSB - COLO5 Cell 4 | Not Started | 81 |
| CHI05-PH2-FIT-BL-D5,3,3,3,2,4,1 | CHI05-05-04-L1-1880 | Interior - L1 PDUs - COLO5 Cell 4 | Not Started | 49 |
| CHI05-PH2-FIT-BL-D5,3,3,3,2,4,1 | CHI05-05-04-L1-1890 | Interior - L1 AHUs - COLO5 Cell 4 | Not Started | 49 |
| CHI05-PH2-FIT-BL-D5,3,3,3,2,4,1 | CHI05-05-04-L1-1900 | Interior - L1 ATSs - COLO5 Cell 4 | Not Started | 81 |
| CHI05-PH2-FIT-BL-D5,3,3,3,2,4,1 | CHI05-05-04-L1-1910 | Interior - L1 Busway - COLO5 Cell 4 | Not Started | 49 |
| CHI05-PH2-FIT-BL-D5,3,3,3,2,4,1 | CHI05-05-04-L1-1970 | Interior - L1 ADP - COLO5 Cell 4 | Not Started | 81 |
| CHI05-PH2-FIT-BL-D5,3,3,3,2,4,2 | CHI05-05-04-L2-1980 | Interior - L2 UPS - COLO5 Cell 4 | Not Started | 49 |
| CHI05-PH2-FIT-BL-D5,3,3,3,2,4,2 | CHI05-05-04-L2-1990 | Interior - L2 MSB - COLO5 Cell 4 | Not Started | 49 |
| CHI05-PH2-FIT-BL-D5,3,3,3,2,4,2 | CHI05-05-04-L2-2000 | Interior - L2 PDUs - COLO5 Cell 4 | Not Started | 39 |
| CHI05-PH2-FIT-BL-D5,3,3,3,2,4,2 | CHI05-05-04-L2-2010 | Interior - L2 AHUs - COLO5 Cell 4 | Not Started | 39 |
| CHI05-PH2-FIT-BL-D5,3,3,3,2,4,2 | CHI05-05-04-L2-2020 | Interior - L2 ATSs - COLO5 Cell 4 | Not Started | 49 |
| CHI05-PH2-FIT-BL-D5,3,3,3,2,4,2 | CHI05-05-04-L2-2030 | Interior - L2 Busway - COLO5 Cell 4 | Not Started | 39 |
| CHI05-PH2-FIT-BL-D5,3,3,3,2,4,2 | CHI05-05-04-L2-2090 | Interior - L2 ADP - COLO5 Cell 4 | Not Started | 49 |
| CHI05-PH2-FIT-BL-D5,3,3,3,2,4,3 | CHI05-05-04-L3-2100 | Interior - L3 UPS - COLO5 Cell 4 | Not Started | 35 |
| CHI05-PH2-FIT-BL-D5,3,3,3,2,4,3 | CHI05-05-04-L3-2110 | Interior - L3 MSB - COLO5 Cell 4 | Not Started | 35 |
| CHI05-PH2-FIT-BL-D5,3,3,3,2,4,3 | CHI05-05-04-L3-2120 | Interior - L3 PDUs - COLO5 Cell 4 | Not Started | 40 |
| CHI05-PH2-FIT-BL-D5,3,3,3,2,4,3 | CHI05-05-04-L3-2130 | Interior - L3 AHUs - COLO5 Cell 4 | Not Started | 35 |
| CHI05-PH2-FIT-BL-D5,3,3,3,2,4,3 | CHI05-05-04-L3-2140 | Interior - L3 ATSs - COLO5 Cell 4 | Not Started | 35 |
| CHI05-PH2-FIT-BL-D5,3,3,3,2,4,3 | CHI05-05-04-L3-2150 | Interior - L3 Busway - COLO5 Cell 4 | Not Started | 35 |

| activity_code | activity_id | activity_name | activity_status | total_float |
| --- | --- | --- | --- | --- |
| CHI05-PH2-FIT-BL-D5,3,3,3,2,4,3 | CHI05-05-04-L3-2210 | Interior - L3 ADP - COLO5 Cell 4 | Not Started | 35 |
| CHI05-PH2-FIT-BL-D5,3,3,3,5,1 | CHI05-05-04-L4-1000 | COLO5 Cx LEV4 - COLO5 | Not Started | 35 |
| CHI05-PH2-FIT-BL-D5,3,3,3,5,2 | CHI05-05-04-L5-1000 | COLO5 Cx LEV5 / IST - COLO5 | Not Started | 35 |
| CHI05-PH2-FIT-BL-D5,3,3,6,1 | CHI05-02-01-L1-1220 | L1 UPM - COLO2 | Not Started | 75 |
| CHI05-PH2-FIT-BL-D5,3,3,6,1 | CHI05-02-01-L1-1230 | L1 XFMR - MV- COLO2 | Not Started | 96 |
| CHI05-PH2-FIT-BL-D5,3,3,6,1 | CHI05-02-01-L1-1240 | L1 GEN - COLO2 | Not Started | 83 |
| CHI05-PH2-FIT-BL-D5,3,3,6,1 | CHI05-03-01-L1-1340 | L1 UPM - COLO3 | Not Started | 68 |
| CHI05-PH2-FIT-BL-D5,3,3,6,1 | CHI05-03-01-L1-1350 | L1 XFMR - MV- COLO3 | Not Started | 84 |
| CHI05-PH2-FIT-BL-D5,3,3,6,1 | CHI05-03-01-L1-1360 | L1 GEN - COLO3 | Not Started | 86 |
| CHI05-PH2-FIT-BL-D5,3,3,6,1 | CHI05-04-01-L1-1460 | L1 UPM - COLO4 | Not Started | 74 |
| CHI05-PH2-FIT-BL-D5,3,3,6,1 | CHI05-04-01-L1-1470 | L1 XFMR - MV- COLO4 | Not Started | 85 |
| CHI05-PH2-FIT-BL-D5,3,3,6,1 | CHI05-04-01-L1-1480 | L1 GEN - COLO4 | Not Started | 87 |
| CHI05-PH2-FIT-BL-D5,3,3,6,1 | CHI05-05-01-L1-1580 | L1 UPM - COLO5 | Not Started | 75 |
| CHI05-PH2-FIT-BL-D5,3,3,6,1 | CHI05-05-01-L1-1590 | L1 XFMR - MV- COLO5 | Not Started | 81 |
| CHI05-PH2-FIT-BL-D5,3,3,6,1 | CHI05-05-01-L1-1600 | L1 GEN - COLO5 | Not Started | 83 |
| CHI05-PH2-FIT-BL-D5,3,3,6,1 | CHI05-02-01-L1-1200 | L1 UTS / UTSR - Site | Not Started | 42 |
| CHI05-PH2-FIT-BL-D5,3,3,6,1 | CHI05-02-01-L1-1210 | L1 UMS 04 - COLO 3 | Not Started | 73 |
| CHI05-PH2-FIT-BL-D5,3,3,6,1 | CHI05-02-02-L1-1330 | L1 UMS 03 - COLO 3 | Not Started | 73 |
| CHI05-PH2-FIT-BL-D5,3,3,6,1 | CHI05-02-03-L1-1450 | L1 UMS 01 - COLO 5 | Not Started | 68 |
| CHI05-PH2-FIT-BL-D5,3,3,6,1 | CHI05-02-04-L1-1570 | L1 URS 01 - COLO 5 | Not Started | 68 |
| CHI05-PH2-FIT-BL-D5,3,3,6,2 | CHI05-02-01-L2-1340 | L2 UPM - COLO2 | Not Started | 35 |
| CHI05-PH2-FIT-BL-D5,3,3,6,2 | CHI05-02-01-L2-1350 | L2 XFMR - COLO2 | Not Started | 40 |
| CHI05-PH2-FIT-BL-D5,3,3,6,2 | CHI05-02-01-L2-1360 | L2 GEN - COLO2 | Not Started | 40 |
| CHI05-PH2-FIT-BL-D5,3,3,6,2 | CHI05-03-01-L2-1460 | L2 UPM - COLO3 | Not Started | 28 |
| CHI05-PH2-FIT-BL-D5,3,3,6,2 | CHI05-03-01-L2-1470 | L2 XFMR - COLO3 | Not Started | 33 |
| CHI05-PH2-FIT-BL-D5,3,3,6,2 | CHI05-03-01-L2-1480 | L2 GEN - COLO3 | Not Started | 33 |
| CHI05-PH2-FIT-BL-D5,3,3,6,2 | CHI05-04-01-L2-1580 | L2 UPM - COLO4 | Not Started | 34 |
| CHI05-PH2-FIT-BL-D5,3,3,6,2 | CHI05-04-01-L2-1590 | L2 XFMR - COLO4 | Not Started | 39 |
| CHI05-PH2-FIT-BL-D5,3,3,6,2 | CHI05-04-01-L2-1600 | L2 GEN - COLO4 | Not Started | 39 |
| CHI05-PH2-FIT-BL-D5,3,3,6,2 | CHI05-05-01-L2-1700 | L2 UPM - COLO5 | Not Started | 35 |
| CHI05-PH2-FIT-BL-D5,3,3,6,2 | CHI05-05-01-L2-1710 | L2 XFMR - COLO5 | Not Started | 40 |
| CHI05-PH2-FIT-BL-D5,3,3,6,2 | CHI05-05-01-L2-1720 | L2 GEN - COLO5 | Not Started | 40 |
| CHI05-PH2-FIT-BL-D5,3,3,6,2 | CHI05-02-01-L2-1330 | L2 URS 01 - COLO 5 | Not Started | 33 |
| CHI05-PH2-FIT-BL-D5,3,3,6,2 | CHI05-02-02-L2-1450 | L2 UMS 03 - COLO 3 | Not Started | 28 |
| CHI05-PH2-FIT-BL-D5,3,3,6,2 | CHI05-02-03-L2-1570 | L2 UMS 04 - COLO 3 | Not Started | 28 |
| CHI05-PH2-FIT-BL-D5,3,3,6,2 | CHI05-02-04-L2-1690 | L2 UMS 01 - COLO 5 | Not Started | 28 |
| CHI05-PH2-FIT-BL-D5,3,3,6,2 | CHI05-05-01-L2-1680 | L2 UTS / UTSR - Site | Not Started | 28 |
| CHI05-PH2-FIT-BL-D5,3,3,6,3 | CHI05-02-01-L3-1460 | L3 UPM - COLO2 | Not Started | 35 |
| CHI05-PH2-FIT-BL-D5,3,3,6,3 | CHI05-02-01-L3-1470 | L3 XFMR - COLO2 | Not Started | 40 |
| CHI05-PH2-FIT-BL-D5,3,3,6,3 | CHI05-02-01-L3-1480 | L3 GEN - COLO2 | Not Started | 40 |
| CHI05-PH2-FIT-BL-D5,3,3,6,3 | CHI05-03-01-L3-1580 | L3 UPM - COLO3 | Not Started | 27 |
| CHI05-PH2-FIT-BL-D5,3,3,6,3 | CHI05-03-01-L3-1590 | L3 XFMR - COLO3 | Not Started | 32 |
| CHI05-PH2-FIT-BL-D5,3,3,6,3 | CHI05-03-01-L3-1600 | L3 GEN - COLO3 | Not Started | 32 |
| CHI05-PH2-FIT-BL-D5,3,3,6,3 | CHI05-04-01-L3-1700 | L3 UPM - COLO4 | Not Started | 0 |
| CHI05-PH2-FIT-BL-D5,3,3,6,3 | CHI05-04-01-L3-1710 | L3 XFMR - COLO4 | Not Started | 5 |
| CHI05-PH2-FIT-BL-D5,3,3,6,3 | CHI05-04-01-L3-1720 | L3 GEN - COLO4 | Not Started | 5 |
| CHI05-PH2-FIT-BL-D5,3,3,6,3 | CHI05-05-01-L3-1820 | L3 UPM - COLO5 | Not Started | 35 |
| CHI05-PH2-FIT-BL-D5,3,3,6,3 | CHI05-05-01-L3-1830 | L3 XFMR - COLO5 | Not Started | 40 |
| CHI05-PH2-FIT-BL-D5,3,3,6,3 | CHI05-05-01-L3-1840 | L3 GEN - COLO5 | Not Started | 40 |
| CHI05-PH2-FIT-BL-D5,3,3,6,3 | CHI05-02-01-L3-1440 | L3 UTS / UTSR - Site | Not Started | 29 |
| CHI05-PH2-FIT-BL-D5,3,3,6,3 | CHI05-02-01-L3-1450 | L3 UMS 04 - COLO 3 | Not Started | 29 |
| CHI05-PH2-FIT-BL-D5,3,3,6,3 | CHI05-02-02-L3-1570 | L3 UMS 03 - COLO 3 | Not Started | 29 |
| CHI05-PH2-FIT-BL-D5,3,3,6,3 | CHI05-02-03-L3-1690 | L3 URS 01 - COLO 5 | Not Started | 29 |
| CHI05-PH2-FIT-BL-D5,3,3,6,3 | CHI05-02-04-L3-1810 | L3 UMS 01 - COLO 5 | Not Started | 29 |
| CHI05-PH2-FIT-BL-D5,3,2 | CHI05-CON-1020 | (3) UTS - Install and Terminate (1 wk/ea) | Not Started | 28 |
| CHI05-PH2-FIT-BL-D5,3,2 | CHI05-CON-1050 | Permanent Power Live | Not Started | 0 |
| CHI05-PH2-FIT-BL-D5,3,2 | CHI05-CON-1030 | Installation and Termiation of MV Cable | Not Started | 28 |
| CHI05-PH2-FIT-BL-D5,4,2,1 | CHI05-CFCI-1020 | HAC's - Submittal Preparation | Completed |  |
| CHI05-PH2-FIT-BL-D5,4,2,1 | CHI05-CFCI-1080 | HAC's - Submittal Review | Completed |  |
| CHI05-PH2-FIT-BL-D5,4,2,1 | CHI05-CFCI-1090 | HAC's - Lead Time | In Progress | 140 |
| CHI05-PH2-FIT-BL-D5,4,2,9 | CHI05-CFCI-1140 | Doors/Frames/Hardware - Submittal Preparation | In Progress | 60 |
| CHI05-PH2-FIT-BL-D5,4,2,9 | CHI05-CFCI-1160 | Doors/Frames/Hardware - Submittal Review | In Progress | 60 |
| CHI05-PH2-FIT-BL-D5,4,2,9 | CHI05-CFCI-1220 | Doors/Frames/Hardware - Lead Time | Not Started | 60 |
| CHI05-PH2-FIT-BL-D5,4,2,4 | CHI05-CFCI-1000 | DX Split Units - Submittal Preparation | Completed |  |
| CHI05-PH2-FIT-BL-D5,4,2,4 | CHI05-CFCI-1120 | DX Split Units - Submittal Review | Completed |  |
| CHI05-PH2-FIT-BL-D5,4,2,4 | CHI05-CFCI-1170 | DX Split Units - Lead Time | In Progress | 57 |
| CHI05-PH2-FIT-BL-D5,4,2,6 | CHI05-CFCI-1030 | AHU (Admin) - Submittal Preparation | Completed |  |
| CHI05-PH2-FIT-BL-D5,4,2,6 | CHI05-CFCI-1150 | AHU (Admin) - Submittal Review | Completed |  |
| CHI05-PH2-FIT-BL-D5,4,2,6 | CHI05-CFCI-1200 | AHU (Admin) - Lead Time | In Progress | 39 |
| CHI05-PH2-FIT-BL-D5,4,2,8 | CHI05-CFCI-1050 | Overhead Cable Bus - Submittal Preparation | Completed |  |

| activity_code | activity_id | activity_name | activity_status | total_float |
| --- | --- | --- | --- | --- |
| CHI05-PH2-FIT-BL-D5,4,2,8 | CHI05-CFCI-1070 | Overhead Cable Bus - Submittal Review | Completed |  |
| CHI05-PH2-FIT-BL-D5,4,2,8 | CHI05-CFCI-1100 | Overhead Cable Bus - Lead Time | In Progress | 40 |
| CHI05-PH2-FIT-BL-D5,4,2,3 | CHI05-CFCI-1180 | Medium Voltage Cabling - Submittal Preparation | Completed |  |
| CHI05-PH2-FIT-BL-D5,4,2,3 | CHI05-CFCI-1190 | Medium Voltage Cabling - Submittal Review | In Progress | 33 |
| CHI05-PH2-FIT-BL-D5,4,2,3 | CHI05-CFCI-1210 | Medium Voltage Cabling - Lead Time | In Progress | 33 |
| CHI05-PH2-FIT-BL-D5,4,2,5 | CHI05-CFCI-1040 | Elec. Distribution System - Submittal Preparation | Completed |  |
| CHI05-PH2-FIT-BL-D5,4,2,5 | CHI05-CFCI-1110 | Elec. Distribution System - Submittal Review | Completed |  |
| CHI05-PH2-FIT-BL-D5,4,2,5 | CHI05-CFCI-1130 | Elec. Distribution System - Lead Time | In Progress | 186 |
| CHI05-PH2-FIT-BL-D5,4,2,7 | CHI05-CFCI-1010 | Light Fixture - Submittal Preparation | In Progress | 130 |
| CHI05-PH2-FIT-BL-D5,4,2,7 | CHI05-CFCI-1060 | Light Fixture - Submittal Review | In Progress | 130 |
| CHI05-PH2-FIT-BL-D5,4,2,7 | CHI05-CFCI-1230 | Light Fixture - Lead Time | Not Started | 130 |
| CHI05-PH2-FIT-BL-D5,4,2,2 | CHI05-CFCI-1240 | Damper Assembly and Delivery | Not Started | 0 |
| CHI05-PH2-FIT-BL-D5,4,1,1,1 | CHI05-OFCI-1000 | AHU - COLO 2 - In Storage | Not Started | 49 |
| CHI05-PH2-FIT-BL-D5,4,1,1,2 | CHI05-OFCI-1450 | AHU - COLO 3 - In Storage | Not Started | 49 |
| CHI05-PH2-FIT-BL-D5,4,1,1,3 | CHI05-OFCI-1460 | AHU - COLO 4 - Start ROJ | Not Started | 55 |
| CHI05-PH2-FIT-BL-D5,4,1,1,3 | CHI05-OFCI-1470 | AHU - COLO 4 - ROJ | Not Started | 55 |
| CHI05-PH2-FIT-BL-D5,4,1,1,3 | CHI05-OFCI-1480 | AHU - COLO 4 - Finish ROJ | Not Started | 55 |
| CHI05-PH2-FIT-BL-D5,4,1,1,5 | CHI05-OFCI-1010 | AHU - COLO 5 - Start ROJ | Not Started | 63 |
| CHI05-PH2-FIT-BL-D5,4,1,1,5 | CHI05-OFCI-1020 | AHU - COLO 5 - ROJ | Not Started | 63 |
| CHI05-PH2-FIT-BL-D5,4,1,1,5 | CHI05-OFCI-1490 | AHU - COLO 5 - Finish ROJ | Not Started | 63 |
| CHI05-PH2-FIT-BL-D5,4,1,2,1 | CHI05-OFCI-1860 | ATS - COLO 2 - Start ROJ | Not Started | 0 |
| CHI05-PH2-FIT-BL-D5,4,1,2,1 | CHI05-OFCI-1870 | ATS - COLO 2 - ROJ | Not Started | 94 |
| CHI05-PH2-FIT-BL-D5,4,1,2,1 | CHI05-OFCI-1970 | ATS - COLO 2 - Finish ROJ | Not Started | 94 |
| CHI05-PH2-FIT-BL-D5,4,1,2,2 | CHI05-OFCI-2140 | ATS - COLO 3 - Start ROJ | Not Started | 78 |
| CHI05-PH2-FIT-BL-D5,4,1,2,2 | CHI05-OFCI-2150 | ATS - COLO 3 - ROJ | Not Started | 78 |
| CHI05-PH2-FIT-BL-D5,4,1,2,2 | CHI05-OFCI-2270 | ATS - COLO 3 - Finish ROJ | Not Started | 78 |
| CHI05-PH2-FIT-BL-D5,4,1,2,3 | CHI05-OFCI-1590 | ATS - COLO 4 - Start ROJ | Not Started | 64 |
| CHI05-PH2-FIT-BL-D5,4,1,2,3 | CHI05-OFCI-1600 | ATS - COLO 4 - ROJ | Not Started | 64 |
| CHI05-PH2-FIT-BL-D5,4,1,2,3 | CHI05-OFCI-1980 | ATS - COLO 4 - Finish ROJ | Not Started | 64 |
| CHI05-PH2-FIT-BL-D5,4,1,2,5 | CHI05-OFCI-1030 | ATS - COLO 5 - Start ROJ | Not Started | 118 |
| CHI05-PH2-FIT-BL-D5,4,1,2,5 | CHI05-OFCI-1040 | ATS - COLO 5 - ROJ | Not Started | 118 |
| CHI05-PH2-FIT-BL-D5,4,1,2,5 | CHI05-OFCI-1500 | ATS - COLO 5 - Finish ROJ | Not Started | 118 |
| CHI05-PH2-FIT-BL-D5,4,1,6,1 | CHI05-OFCI-1050 | BAS - COLO 2 - Start ROJ | Not Started | 27 |
| CHI05-PH2-FIT-BL-D5,4,1,6,1 | CHI05-OFCI-1060 | BAS - COLO 2 - ROJ | Not Started | 27 |
| CHI05-PH2-FIT-BL-D5,4,1,6,1 | CHI05-OFCI-1650 | BAS - COLO 2 - Finish ROJ | Not Started | 27 |
| CHI05-PH2-FIT-BL-D5,4,1,6,2 | CHI05-OFCI-1680 | BAS - COLO 3 - Start ROJ | Not Started | 27 |
| CHI05-PH2-FIT-BL-D5,4,1,6,2 | CHI05-OFCI-1690 | BAS - COLO 3 - ROJ | Not Started | 27 |
| CHI05-PH2-FIT-BL-D5,4,1,6,2 | CHI05-OFCI-2230 | BAS - COLO 3 - Finish ROJ | Not Started | 27 |
| CHI05-PH2-FIT-BL-D5,4,1,6,3 | CHI05-OFCI-1700 | BAS - COLO 4 - Start ROJ | Not Started | 38 |
| CHI05-PH2-FIT-BL-D5,4,1,6,3 | CHI05-OFCI-1710 | BAS - COLO 4 - ROJ | Not Started | 38 |
| CHI05-PH2-FIT-BL-D5,4,1,6,3 | CHI05-OFCI-2240 | BAS - COLO 4 - Finish ROJ | Not Started | 38 |
| CHI05-PH2-FIT-BL-D5,4,1,6,5 | CHI05-OFCI-1070 | BAS - COLO 5 - Start ROJ | Not Started | 76 |
| CHI05-PH2-FIT-BL-D5,4,1,6,5 | CHI05-OFCI-1080 | BAS - COLO 5 - ROJ | Not Started | 76 |
| CHI05-PH2-FIT-BL-D5,4,1,6,5 | CHI05-OFCI-1660 | BAS - COLO 5 - Finish ROJ | Not Started | 76 |
| CHI05-PH2-FIT-BL-D5,4,1,3,1 | CHI05-OFCI-1090 | Busway/Bus Plugs - COLO 2 - In Storage | Not Started | 31 |
| CHI05-PH2-FIT-BL-D5,4,1,3,2 | CHI05-OFCI-2020 | Busway/Bus Plugs - COLO 3 - Start ROJ | Not Started | 0 |
| CHI05-PH2-FIT-BL-D5,4,1,3,2 | CHI05-OFCI-2030 | Busway/Bus Plugs - COLO 3 - ROJ | Not Started | 85 |
| CHI05-PH2-FIT-BL-D5,4,1,3,2 | CHI05-OFCI-2250 | Busway/Bus Plugs - COLO 3 - Finish ROJ | Not Started | 85 |
| CHI05-PH2-FIT-BL-D5,4,1,3,3 | CHI05-OFCI-2040 | Busway/Bus Plugs - COLO 4 - Start ROJ | Not Started | 87 |
| CHI05-PH2-FIT-BL-D5,4,1,3,3 | CHI05-OFCI-2050 | Busway/Bus Plugs - COLO 4 - ROJ | Not Started | 87 |
| CHI05-PH2-FIT-BL-D5,4,1,3,3 | CHI05-OFCI-2260 | Busway/Bus Plugs - COLO 4 - Finish ROJ | Not Started | 87 |
| CHI05-PH2-FIT-BL-D5,4,1,3,5 | CHI05-OFCI-1100 | Busway/Bus Plugs - COLO 5 - Start ROJ | Not Started | 122 |
| CHI05-PH2-FIT-BL-D5,4,1,3,5 | CHI05-OFCI-1110 | Busway/Bus Plugs - COLO 5 - ROJ | Not Started | 122 |
| CHI05-PH2-FIT-BL-D5,4,1,3,5 | CHI05-OFCI-1670 | Busway/Bus Plugs - COLO 5 - Finish ROJ | Not Started | 122 |
| CHI05-PH2-FIT-BL-D5,4,1,4,1 | CHI05-OFCI-1120 | EPMS - COLO 2 | Not Started | 103 |
| CHI05-PH2-FIT-BL-D5,4,1,4,2 | CHI05-OFCI-1440 | EPMS - COLO 3 | Not Started | 103 |
| CHI05-PH2-FIT-BL-D5,4,1,4,3 | CHI05-OFCI-1570 | EPMS - COLO 4 | Not Started | 103 |
| CHI05-PH2-FIT-BL-D5,4,1,4,5 | CHI05-OFCI-1730 | EPMS - COLO 5 | Not Started | 103 |
| CHI05-PH2-FIT-BL-D5,4,1,5,1 | CHI05-OFCI-1130 | GENS - COLO 2 - In Storage | Not Started | 0 |
| CHI05-PH2-FIT-BL-D5,4,1,5,2 | CHI05-OFCI-1140 | GENS - COLO 3 - In Storage | Not Started | 67 |
| CHI05-PH2-FIT-BL-D5,4,1,5,3 | CHI05-OFCI-1150 | GENS - COLO 4 - In Storage | Not Started | 67 |
| CHI05-PH2-FIT-BL-D5,4,1,5,5 | CHI05-OFCI-1160 | GENS - COLO 5 - In Storage | Not Started | 67 |
| CHI05-PH2-FIT-BL-D5,4,1,7,1 | CHI05-OFCI-1840 | LVS - COLO 2 - Start ROJ | Not Started | 0 |
| CHI05-PH2-FIT-BL-D5,4,1,7,1 | CHI05-OFCI-1850 | LVS - COLO 2 - ROJ | Not Started | 0 |
| CHI05-PH2-FIT-BL-D5,4,1,7,1 | CHI05-OFCI-1990 | LVS - COLO 2 - Finish ROJ | Not Started | 94 |
| CHI05-PH2-FIT-BL-D5,4,1,7,2 | CHI05-OFCI-1930 | LVS - COLO 3 - Start ROJ | Not Started | 87 |
| CHI05-PH2-FIT-BL-D5,4,1,7,2 | CHI05-OFCI-1940 | LVS - COLO 3 - ROJ | Not Started | 95 |
| CHI05-PH2-FIT-BL-D5,4,1,7,2 | CHI05-OFCI-2100 | LVS - COLO 3 - Finish ROJ | Not Started | 95 |
| CHI05-PH2-FIT-BL-D5,4,1,7,3 | CHI05-OFCI-2180 | LVS - COLO 4 - Start ROJ | Not Started | 0 |
| CHI05-PH2-FIT-BL-D5,4,1,7,3 | CHI05-OFCI-2190 | LVS - COLO 4 - ROJ | Not Started | 60 |

| activity_code | activity_id | activity_name | activity_status | total_float |
| --- | --- | --- | --- | --- |
| CHI05-PH2-FIT-BL-D5,4,1,7,3 | CHI05-OFCI-2280 | LVS - COLO 4 - Finish ROJ | Not Started | 60 |
| CHI05-PH2-FIT-BL-D5,4,1,7,5 | CHI05-OFCI-1950 | LVS - COLO 5 - Start ROJ | Not Started | 87 |
| CHI05-PH2-FIT-BL-D5,4,1,7,5 | CHI05-OFCI-1960 | LVS - COLO 5 - ROJ | Not Started | 87 |
| CHI05-PH2-FIT-BL-D5,4,1,7,5 | CHI05-OFCI-2110 | LVS - COLO 5 - Finish ROJ | Not Started | 87 |
| CHI05-PH2-FIT-BL-D5,4,1,8,1 | CHI05-OFCI-1170 | MVS (UPM) - COLO 2 - Start ROJ | Not Started | 173 |
| CHI05-PH2-FIT-BL-D5,4,1,8,1 | CHI05-OFCI-1180 | MVS (UPM) - COLO 2 - ROJ | Not Started | 173 |
| CHI05-PH2-FIT-BL-D5,4,1,8,1 | CHI05-OFCI-1530 | MVS (UPM) - COLO 2 - Finish ROJ | Not Started | 173 |
| CHI05-PH2-FIT-BL-D5,4,1,8,2 | CHI05-OFCI-1190 | MVS (UPM) - COLO 3 - Start ROJ | Not Started | 173 |
| CHI05-PH2-FIT-BL-D5,4,1,8,2 | CHI05-OFCI-1200 | MVS (UPM) - COLO 3 - ROJ | Not Started | 173 |
| CHI05-PH2-FIT-BL-D5,4,1,8,2 | CHI05-OFCI-1510 | MVS (UPM) - COLO 3 - Finish ROJ | Not Started | 173 |
| CHI05-PH2-FIT-BL-D5,4,1,8,3 | CHI05-OFCI-1210 | MVS (UPM) - COLO 4 - Start ROJ | Not Started | 178 |
| CHI05-PH2-FIT-BL-D5,4,1,8,3 | CHI05-OFCI-1220 | MVS (UPM) - COLO 4 - ROJ | Not Started | 178 |
| CHI05-PH2-FIT-BL-D5,4,1,8,3 | CHI05-OFCI-1520 | MVS (UPM) - COLO 4 - Finish ROJ | Not Started | 178 |
| CHI05-PH2-FIT-BL-D5,4,1,8,5 | CHI05-OFCI-1230 | MVS (UPM) - COLO 5 - Start ROJ | Not Started | 89 |
| CHI05-PH2-FIT-BL-D5,4,1,8,5 | CHI05-OFCI-1240 | MVS (UPM) - COLO 5 - ROJ | Not Started | 89 |
| CHI05-PH2-FIT-BL-D5,4,1,8,5 | CHI05-OFCI-1540 | MVS (UPM) - COLO 5 - Finish ROJ | Not Started | 89 |
| CHI05-PH2-FIT-BL-D5,4,1,9,1 | CHI05-OFCI-1250 | MVS (XFMR) - COLO 2 - In storage | Not Started | 63 |
| CHI05-PH2-FIT-BL-D5,4,1,9,2 | CHI05-OFCI-1260 | MVS (XFMR) - COLO 3 - In storage | Not Started | 68 |
| CHI05-PH2-FIT-BL-D5,4,1,9,3 | CHI05-OFCI-1270 | MVS (XFMR) - COLO 4 - In storage | Not Started | 73 |
| CHI05-PH2-FIT-BL-D5,4,1,9,5 | CHI05-OFCI-1280 | MVS (XFMR) - COLO 5 - Start ROJ | Not Started | 0 |
| CHI05-PH2-FIT-BL-D5,4,1,9,5 | CHI05-OFCI-1290 | MVS (XFMR) - COLO 5 - ROJ | Not Started | 65 |
| CHI05-PH2-FIT-BL-D5,4,1,9,5 | CHI05-OFCI-1550 | MVS (XFMR) - COLO 5 - Finish ROJ | Not Started | 65 |
| CHI05-PH2-FIT-BL-D5,4,1,10,1 | CHI05-OFCI-1300 | UMS & URS - COLO 2 - In storage, needs modifications | Not Started | 63 |
| CHI05-PH2-FIT-BL-D5,4,1,10,2 | CHI05-OFCI-1580 | UMS & URS - COLO 3 - In storage, needs modifications | Not Started | 68 |
| CHI05-PH2-FIT-BL-D5,4,1,10,3 | CHI05-OFCI-1720 | UMS & URS - COLO 4 - In storage, needs modifications | Not Started | 73 |
| CHI05-PH2-FIT-BL-D5,4,1,10,5 | CHI05-OFCI-1880 | UMS & URS - COLO 5 - In storage, needs modifications | Not Started | 0 |
| CHI05-PH2-FIT-BL-D5,4,1,11,1 | CHI05-OFCI-1610 | PDU - COLO 2 - Start ROJ | Not Started | 0 |
| CHI05-PH2-FIT-BL-D5,4,1,11,1 | CHI05-OFCI-1620 | PDU - COLO 2 - ROJ | Not Started | 13 |
| CHI05-PH2-FIT-BL-D5,4,1,11,1 | CHI05-OFCI-1820 | PDU - COLO 2 - Finish ROJ | Not Started | 13 |
| CHI05-PH2-FIT-BL-D5,4,1,11,2 | CHI05-OFCI-2060 | PDU - COLO 3 - Start ROJ | Not Started | 0 |
| CHI05-PH2-FIT-BL-D5,4,1,11,2 | CHI05-OFCI-2070 | PDU - COLO 3 - ROJ | Not Started | 36 |
| CHI05-PH2-FIT-BL-D5,4,1,11,2 | CHI05-OFCI-2160 | PDU - COLO 3 - Finish ROJ | Not Started | 36 |
| CHI05-PH2-FIT-BL-D5,4,1,11,3 | CHI05-OFCI-2080 | PDU - COLO 4 - Start ROJ | Not Started | 42 |
| CHI05-PH2-FIT-BL-D5,4,1,11,3 | CHI05-OFCI-2090 | PDU - COLO 4 - ROJ | Not Started | 42 |
| CHI05-PH2-FIT-BL-D5,4,1,11,3 | CHI05-OFCI-2170 | PDU - COLO 4 - Finish ROJ | Not Started | 42 |
| CHI05-PH2-FIT-BL-D5,4,1,11,5 | CHI05-OFCI-1630 | PDU - COLO 5 - Start ROJ | Not Started | 69 |
| CHI05-PH2-FIT-BL-D5,4,1,11,5 | CHI05-OFCI-1640 | PDU - COLO 5 - ROJ | Not Started | 69 |
| CHI05-PH2-FIT-BL-D5,4,1,11,5 | CHI05-OFCI-1830 | PDU - COLO 5 - Finish ROJ | Not Started | 69 |
| CHI05-PH2-FIT-BL-D5,4,1,12,1 | CHI05-OFCI-1310 | UPS - COLO 2 - In storage | Not Started | 89 |
| CHI05-PH2-FIT-BL-D5,4,1,12,2 | CHI05-OFCI-1320 | UPS - COLO 3 - In storage | Not Started | 99 |
| CHI05-PH2-FIT-BL-D5,4,1,12,3 | CHI05-OFCI-1330 | UPS - COLO 4 - In storage | Not Started | 100 |
| CHI05-PH2-FIT-BL-D5,4,1,12,5 | CHI05-OFCI-1340 | UPS - COLO 5 - Start ROJ | Not Started | 101 |
| CHI05-PH2-FIT-BL-D5,4,1,12,5 | CHI05-OFCI-1350 | UPS - COLO 5 - ROJ | Not Started | 101 |
| CHI05-PH2-FIT-BL-D5,4,1,12,5 | CHI05-OFCI-1560 | UPS - COLO 5 - Finish ROJ | Not Started | 101 |
| CHI05-PH2-FIT-BL-D5,4,1,13,1 | CHI05-OFCI-2000 | UTS - Site - Start ROJ | Not Started | 0 |
| CHI05-PH2-FIT-BL-D5,4,1,13,1 | CHI05-OFCI-2010 | UTS - Site - ROJ | Not Started | 28 |
| CHI05-PH2-FIT-BL-D5,4,1,13,1 | CHI05-OFCI-2130 | UTS - Site - Finish ROJ | Not Started | 28 |
| CHI05-PH2-FIT-BL-D5,4,1,14,1 | CHI05-OFCI-1360 | MVS (UPM) Terminators/Lighting Arrestors - COLO 2 - Start ROJ | Not Started | 130 |
| CHI05-PH2-FIT-BL-D5,4,1,14,1 | CHI05-OFCI-1370 | MVS (UPM) Terminators/Lighting Arrestors - COLO 2 - ROJ | Not Started | 130 |
| CHI05-PH2-FIT-BL-D5,4,1,14,1 | CHI05-OFCI-2120 | MVS (UPM) Terminators/Lighting Arrestors - COLO 2 - Finish ROJ | Not Started | 130 |
| CHI05-PH2-FIT-BL-D5,4,1,14,2 | CHI05-OFCI-1380 | MVS (UPM) Terminators/Lighting Arrestors - COLO 3 - Start ROJ | Not Started | 130 |
| CHI05-PH2-FIT-BL-D5,4,1,14,2 | CHI05-OFCI-1390 | MVS (UPM) Terminators/Lighting Arrestors - COLO 3 - ROJ | Not Started | 130 |
| CHI05-PH2-FIT-BL-D5,4,1,14,2 | CHI05-OFCI-2200 | MVS (UPM) Terminators/Lighting Arrestors - COLO 3 - Finish ROJ | Not Started | 130 |
| CHI05-PH2-FIT-BL-D5,4,1,14,3 | CHI05-OFCI-1400 | MVS (UPM) Terminators/Lighting Arrestors - COLO 4 - Start ROJ | Not Started | 135 |
| CHI05-PH2-FIT-BL-D5,4,1,14,3 | CHI05-OFCI-1410 | MVS (UPM) Terminators/Lighting Arrestors - COLO 4 - ROJ | Not Started | 135 |
| CHI05-PH2-FIT-BL-D5,4,1,14,3 | CHI05-OFCI-2210 | MVS (UPM) Terminators/Lighting Arrestors - COLO 4 - Finish ROJ | Not Started | 135 |
| CHI05-PH2-FIT-BL-D5,4,1,14,5 | CHI05-OFCI-1420 | MVS (UPM) Terminators/Lighting Arrestors - COLO 5 - Start ROJ | Not Started | 130 |
| CHI05-PH2-FIT-BL-D5,4,1,14,5 | CHI05-OFCI-1430 | MVS (UPM) Terminators/Lighting Arrestors - COLO 5 - ROJ | Not Started | 130 |
| CHI05-PH2-FIT-BL-D5,4,1,14,5 | CHI05-OFCI-2220 | MVS (UPM) Terminators/Lighting Arrestors - COLO 5 - Finish ROJ | Not Started | 130 |
| CHI05-PH2-FIT-BL-D5,4,1,15,1 | CHI05-OFCI-1740 | Mufflers - COLO 2 - Start ROJ | Not Started | 47 |
| CHI05-PH2-FIT-BL-D5,4,1,15,1 | CHI05-OFCI-1750 | Mufflers - COLO 2 - ROJ | Not Started | 82 |
| CHI05-PH2-FIT-BL-D5,4,1,15,1 | CHI05-OFCI-1890 | Mufflers - COLO 2 - Finish ROJ | Not Started | 82 |
| CHI05-PH2-FIT-BL-D5,4,1,15,2 | CHI05-OFCI-1760 | Mufflers - COLO 3 - Start ROJ | Not Started | 47 |
| CHI05-PH2-FIT-BL-D5,4,1,15,2 | CHI05-OFCI-1770 | Mufflers - COLO 3 - ROJ | Not Started | 47 |
| CHI05-PH2-FIT-BL-D5,4,1,15,2 | CHI05-OFCI-1900 | Mufflers - COLO 3 - Finish ROJ | Not Started | 47 |
| CHI05-PH2-FIT-BL-D5,4,1,15,3 | CHI05-OFCI-1780 | Mufflers - COLO 4 - Start ROJ | Not Started | 47 |
| CHI05-PH2-FIT-BL-D5,4,1,15,3 | CHI05-OFCI-1790 | Mufflers - COLO 4 - ROJ | Not Started | 47 |
| CHI05-PH2-FIT-BL-D5,4,1,15,3 | CHI05-OFCI-1910 | Mufflers - COLO 4 - Finish ROJ | Not Started | 47 |
| CHI05-PH2-FIT-BL-D5,4,1,15,5 | CHI05-OFCI-1800 | Mufflers - COLO 5 - Start ROJ | Not Started | 51 |
| CHI05-PH2-FIT-BL-D5,4,1,15,5 | CHI05-OFCI-1810 | Mufflers - COLO 5 - ROJ | Not Started | 51 |

| activity_code | activity_id | activity_name | activity_status | total_float |
| --- | --- | --- | --- | --- |
| CHI05-PH2-FIT-BL-D5,4,1,15,5 | CHI05-OFCI-1920 | Mufflers - COLO 5 - Finish ROJ | Not Started | 51 |
| CHI05-PH2-FIT-BL-D5,4,1,16,1 | A1000 | MSB - COLO 2 - ROJ | Not Started | 60 |
| CHI05-PH2-FIT-BL-D5,4,1,16,2 | A1010 | MSB - COLO 3 - ROJ | Not Started | 60 |
| CHI05-PH2-FIT-BL-D5,4,1,16,3 | A1020 | MSB - COLO 4 - ROJ | Not Started | 60 |
| CHI05-PH2-FIT-BL-D5,4,1,16,5 | A1040 | MSB - COLO 5 - ROJ | Not Started | 81 |
